# 07.09.26

Schedule from MS Project, 2023-03-10 to 2027-03-10, A marks actual dates.
DEXP

## Calendars

- Стандартный: Mon-Fri 09:00-13:00, 14:00-18:00; Sat-Sun off. Exceptions (off unless hours are given): 2026-09-05 09:00-13:00, 14:00-18:00, 2026-09-12 to 2026-09-13 09:00-13:00, 14:00-18:00, 2026-09-19 to 2026-09-20 09:00-13:00, 14:00-18:00, 2026-09-26 to 2026-09-27 09:00-13:00, 14:00-18:00, 2026-10-04 09:00-13:00, 14:00-18:00, 2026-10-17 09:00-13:00, 14:00-18:00, 2026-11-07 to 2026-11-08 09:00-13:00, 14:00-18:00, 2026-11-14 to 2026-11-15 09:00-13:00, 14:00-18:00.

## Resources

| Resource |
| --- |
| Макаревич А |
| Дедов В |
| Бобренок В |
| Тимофеев В |
| Зорькин В |
| Бундин В |
| Труфанов А |
| Некрасов А |
| Шуранов Ю |
| Домоводов К |
| Амрулин Р |
| Карабанов |
| Олег |
| оплот |
| Коленкоров |
| Мультан |
| Малинина М |
| Лобанов И |
| Дворник |
| Подрядчик |
| Олег лукас |
| Черепанов И |
| оперторы2 |
| оператор2 |
| Тракресурс |
| Сапелин С |
| Технолог |
| Фрезер ЧПУ |
| Пинчук А |
| КИнжекул |
| ТО_2 |
| ТО_1 |
| ТО_М |
| ТО |
| Кладовщики |
| Логист |
| Автобест |
| Николаев |
| Уборщица |

## Schedule

| ID | WBS | Task | Type | Duration | Start | Finish | Predecessors | Complete | Remaining | Total slack | Free slack | Constraint | Resources | Work | Actual work |
| --- | --- | --- | --- | --- | --- | --- | --- | --- | --- | --- | --- | --- | --- | --- | --- |
| 1 | 1 | **1 цех** |  | 431.5d? | 2023-03-10 09:00 A | 2024-11-02 13:00 |  | 98% | 7.62d? |  |  |  |  | 23232.7h | 22958.1h |
| 2 | 1.1 | Покраска металла на пандусе | manual | 2h | 2026-11-28 09:00 | 2026-11-28 11:00 |  |  |  |  |  | start no earlier than 2026-11-28 09:00 | Тимофеев В | 2h |  |
| 3 | 1.2 | Замена прокладки на стиральной машинке, шланг подачи воды. Прокладки пришли на склад |  | 30min | 2026-11-26 09:00 A | 2026-11-26 09:30 A |  | 100% |  |  |  | start no earlier than 2026-11-26 08:00 | Дедов В | 0.5h | 0.5h |
| 4 | 1.3 | Заказать кнопки для рольставен на пандусе в сторону завоза навесок |  | 20min | 2026-11-26 09:00 A | 2026-11-26 09:20 A |  | 100% |  |  |  | start no earlier than 2026-11-26 08:00 | Зорькин В | 0.33h | 0.33h |
| 5 | 1.4 | Монтаж кнопок для рольставен с двух сторон на пандусе в сторону завоза навесок |  | 2h | 2026-12-03 09:00 | 2026-12-03 11:00 |  |  |  | 69.34d |  | start no earlier than 2026-12-03 09:00 | Бундин В | 2h |  |
| 6 | 1.5 | Перенести звонок за ворота пандуса (спросить Зорькина) | manual | 2h | 2026-11-28 09:00 | 2026-11-28 11:00 |  |  |  |  |  | start no earlier than 2026-11-28 09:00 | Бундин В | 2h |  |
| 7 | 1.6 | Покрасить швелер грунтовкой по низким температурам |  | 2d | 2026-11-25 09:00 A | 2026-11-26 18:00 A |  | 100% |  |  |  | start no earlier than 2026-11-25 08:00 | Николаев | 16h | 16h |
| 8 | 1.7 | Замена пускателя получить информацию по смене от Николаева |  | 1h | 2026-11-23 09:00 A | 2026-11-23 10:00 A |  | 100% |  |  |  | start no earlier than 2026-11-23 08:00 | Бундин В | 1h | 1h |
| 9 | 1.8 | Усиление рамы прайсчекера, чтоб не падала так легко, подумать как укрепить, утяжелить | manual | 2h | 2026-11-27 09:00 | 2026-11-27 11:00 |  |  |  |  |  | start no earlier than 2026-11-27 09:00 | Бундин В | 2h |  |
| 10 | 1.9 | Установка дополнительного освещения на охладителях |  | 2h | 2026-11-30 09:00 | 2026-11-30 11:00 |  |  |  | 72.34d |  | start no earlier than 2026-11-30 09:00 | Труфанов А; Некрасов А | 4h |  |
| 11 | 1.10 | Посмотреть отопление в 1 цехе холодно |  | 1h | 2026-11-19 09:00 A | 2026-11-19 10:00 A |  | 100% |  |  |  | start no earlier than 2026-11-19 09:00 | Труфанов А; Некрасов А | 2h | 2h |
| 12 | 1.11 | Замена редуктора на сухом гидролизате на s40-60-23 |  | 2h | 2026-11-18 09:00 A | 2026-11-18 11:00 A |  | 100% |  |  |  | start no earlier than 2026-11-18 09:00 | Труфанов А; Некрасов А | 4h | 4h |
| 13 | 1.12 | **изготовить лоток м/д GRLW и экструдером с переключателем на сброс и крышкой очиски/быстросъемный** |  | 2d? | 2026-11-10 09:00 | 2026-11-11 18:00 |  |  |  | 86.59d |  |  |  | 24h |  |
| 14 | 1.12.1 | составить чертежи |  | 1d? | 2026-11-10 09:00 | 2026-11-10 18:00 |  |  |  | 86.59d | 0d | start no earlier than 2026-11-10 09:00 | Зорькин В; Домоводов К | 16h |  |
| 15 | 1.12.2 | раскрой металл / сборка |  | 1d? | 2026-11-11 09:00 | 2026-11-11 18:00 | 14 |  |  | 86.59d |  | start no earlier than 2026-11-09 08:00 | Макаревич А | 8h |  |
| 16 | 1.13 | калибровка пид регулятор печи 2 |  | 1h | 2026-11-16 09:00 A | 2026-11-16 10:00 A |  | 100% |  |  |  | start no earlier than 2026-11-16 09:00 | Дедов В | 1h | 1h |
| 17 | 1.14 | ремонт силиконовой резинки выход из печи 1 |  | 1h | 2026-11-18 09:00 A | 2026-11-18 10:00 A |  | 100% |  |  |  | start no earlier than 2026-11-18 09:00 | Труфанов А; Некрасов А | 2h | 2h |
| 18 | 1.15 | 2 линия ремонт сквозной ржавчины прекондиционера возле горла |  | 2h | 2026-11-30 09:00 | 2026-11-30 11:00 |  |  |  | 72.34d |  | start no earlier than 2026-11-30 09:00 | Бундин В; Труфанов А | 4h |  |
| 19 | 1.16 | диагностика кондиционера |  | 2h | 2026-11-10 09:00 | 2026-11-10 11:00 |  |  |  | 88.34d |  | start no earlier than 2026-11-10 09:00 | Труфанов А; Некрасов А | 4h |  |
| 20 | 1.17 | ПУН поломоечная машинка |  | 2h | 2026-11-09 09:00 A | 2026-11-09 11:00 A |  | 100% |  |  |  | start no earlier than 2026-11-09 08:00 | Макаревич А; Николаев | 4h | 4h |
| 21 | 1.18 | Засыпать пескобетон в сваи |  | 2h | 2026-11-16 09:00 A | 2026-11-16 11:00 A |  | 100% |  |  |  | start no earlier than 2026-11-16 09:00 | Некрасов А; Труфанов А | 4h | 4h |
| 22 | 1.19 | Вывезти землю трактором возле септика |  | 1d? | 2026-11-05 09:00 | 2026-11-05 18:00 |  |  |  | 92.59d |  | start no earlier than 2026-11-05 09:00 |  |  |  |
| 23 | 1.20 | Приделать уголок к верхнему краю битумной ленты, к стене, алюминиевым уголком. Крепеж дюбель гвоздь или предложить другой вариант крепления |  | 4h | 2026-11-04 09:00 A | 2026-11-04 13:00 A |  | 100% |  |  |  | start no earlier than 2026-11-04 09:00 | Бобренок В | 4h | 4h |
| 24 | 1.21 | Расширить отверстие по видео |  | 30min | 2026-11-03 09:00 A | 2026-11-03 09:30 A |  | 100% |  |  |  | start no earlier than 2026-11-03 08:00 | Дедов В | 0.5h | 0.5h |
| 25 | 1.22 | Изготовление трубок (удочек, для подачи жира) 1 и 2 лини, на каждую линию по 2. |  | 4h | 2026-11-03 09:00 | 2026-11-03 13:00 |  |  |  | 95.09d |  | start no earlier than 2026-11-03 09:00 | Тимофеев В | 4h |  |
| 26 | 1.23 | Разметить место бурения под раму за 1 цехом, чертеж у Константина |  | 1h | 2026-11-03 09:00 A | 2026-11-03 10:00 A |  | 100% |  |  |  | start no earlier than 2026-11-03 09:00 | Труфанов А; Некрасов А | 2h | 2h |
| 27 | 1.24 | установить датчики температуры для прекондиционера (механический, со стрелкой) |  | 1h | 2026-11-03 09:00 A | 2026-11-03 10:00 A |  | 100% |  |  |  | start no earlier than 2026-11-03 09:00 | Дедов В | 1h | 1h |
| 28 | 1.25 | Приклеить удлинетель к носику для гидролизата, которую обломили, приклепать на пластины. Все тестить и собирать можно в 3 цехе по месту, что бы она в итоге была готова в любой момент быть поставлена | manual | 2h | 2026-10-31 09:00 A | 2026-10-31 11:00 A |  | 100% |  |  |  | start no earlier than 2026-10-31 09:00 | Макаревич А | 2h | 2h |
| 29 | 1.26 | Поставить выключатель на рампе |  | 30min | 2026-10-30 09:00 A | 2026-10-30 09:30 A |  | 100% |  |  |  | start no earlier than 2026-10-30 08:00 | Бобренок В | 0.5h | 0.5h |
| 30 | 1.27 | Убрать лист над печкой |  | 30min | 2026-10-30 09:00 A | 2026-10-30 09:30 A |  | 100% |  |  |  | start no earlier than 2026-10-30 08:00 | Бобренок В | 0.5h | 0.5h |
| 31 | 1.28 | Посмотреть/заменить термопару на 1 линии на бачке с жиром, определить, какой перегревает |  | 1h | 2026-10-30 09:00 A | 2026-10-30 10:00 A |  | 100% |  |  |  | start no earlier than 2026-10-30 08:00 | Бобренок В | 1h | 1h |
| 32 | 1.29 | замена ножек на полибоксах под которые не заезжает рохля |  | 3h | 2026-10-29 09:00 A | 2026-10-29 12:00 A |  | 100% |  |  |  | start no earlier than 2026-10-29 08:00 | Бобренок В | 3h | 3h |
| 33 | 1.30 | Перенос конструкции с фильтрами на раму барабанов (каждую мойку их двигают, мучаются со вторым краном, что не открывается) |  | 2h | 2026-10-29 09:00 A | 2026-10-29 11:00 A |  | 100% |  |  |  | start no earlier than 2026-10-29 08:00 | Тимофеев В | 2h | 2h |
| 34 | 1.31 | Поставить насос 12В через расходомер линия 2 |  | 1h | 2026-11-18 09:00 | 2026-11-18 10:00 |  |  |  | 80.47d |  | start no earlier than 2026-11-18 09:00 | Тимофеев В | 1h |  |
| 35 | 1.32 | Сделать врезки по водоподготовке в основную магистраль, курьер привез необходимое |  | 2h | 2026-10-28 09:00 A | 2026-10-28 11:00 A |  | 100% |  |  |  | start no earlier than 2026-10-28 08:00 | Труфанов А; Некрасов А | 4h | 4h |

| ID | WBS | Task | Duration | Start | Finish | Complete | Remaining | Total slack | Constraint | Resources | Work | Actual work |
| --- | --- | --- | --- | --- | --- | --- | --- | --- | --- | --- | --- | --- |
| 36 | 1.33 | **Собрать канистру для подачи воды в экструдер, по аналогу 3 цех. Промежуточный бак 2 шт** | 17.25d | 2026-10-29 09:00 A | 2026-11-17 11:00 A | 100% |  |  |  |  | 3.42h | 3.42h |
| 37 | 1.33.1 | Заказать поплавковый клапан с боковой подачей | 15min | 2026-10-29 09:00 A | 2026-10-29 09:15 A | 100% |  |  | start no earlier than 2026-10-29 08:00 | Зорькин В | 0.25h | 0.25h |
| 38 | 1.33.2 | Контроль | 10min | 2026-11-05 09:00 A | 2026-11-05 09:10 A | 100% |  |  | start no earlier than 2026-11-05 09:00 | Зорькин В | 0.17h | 0.17h |
| 39 | 1.33.3 | монтаж | 1h | 2026-11-17 09:00 A | 2026-11-17 10:00 A | 100% |  |  | start no earlier than 2026-11-17 09:00 | Дедов В | 1h | 1h |
| 40 | 1.33.4 | Монтаж насоса, взять в кабинете оги | 2h | 2026-11-17 09:00 A | 2026-11-17 11:00 A | 100% |  |  | start no earlier than 2026-11-17 09:00 | Дедов В | 2h | 2h |
| 41 | 1.34 | Поставить лампу на 1 линии, по аналогу 2 линии, повешать на зонтик, такую же длинную, запитаться от соседней, посмотреть токи, что все хватает | 2h | 2026-10-28 09:00 A | 2026-10-28 11:00 A | 100% |  |  | start no earlier than 2026-10-28 08:00 | Бундин В | 2h | 2h |
| 42 | 1.35 | Ремонт палетообмотчика | 2h | 2026-10-28 09:00 A | 2026-10-28 11:00 A | 100% |  |  | start no earlier than 2026-10-28 09:00 | Тимофеев В | 2h | 2h |
| 43 | 1.36 | Дополнительный свет в зоне экструдера над нож узелом - линия 2 | 2h | 2026-10-28 09:00 A | 2026-10-28 11:00 A | 100% |  |  | start no earlier than 2026-10-28 09:00 | Бобренок В; Николаев | 4h | 4h |
| 44 | 1.37 | монтаж светильник в зону между печь 2 и стенка профлист. Темно уборщице | 2h | 2026-10-27 09:00 A | 2026-10-27 11:00 A | 100% |  |  | start no earlier than 2026-10-27 08:00 | Бундин В | 2h | 2h |
| 45 | 1.38 | Изготовить уши на конвейере №1 по аналогу 1 линии | 2h | 2026-10-29 09:00 A | 2026-10-29 11:00 A | 100% |  |  | start no earlier than 2026-10-29 09:00 | Тимофеев В | 2h | 2h |
| 46 | 1.39 | Загерметизировать щель битумной лентой между мезонином и стеной на экструдере, герметизируем сверху | 2h | 2026-10-27 09:00 A | 2026-10-27 11:00 A | 100% |  |  | start no earlier than 2026-10-27 09:00 | Бобренок В | 2h | 2h |
| 47 | 1.40 | Установить тепловую пушкув гидролизатной для обогрева помещения, чтоб не разморозило трубы. Подключить от шкафа ВРУ, пушка на 380, кабель подобрать по мощности | 2h | 2026-10-23 09:00 A | 2026-10-23 11:00 A | 100% |  |  | start no earlier than 2026-10-23 08:00 | Макаревич А | 2h | 2h |
| 48 | 1.41 | Собрать крышку на дозатор которая в слесарке, вторую часть снять с 3дпринтера | 1h | 2026-10-20 09:00 A | 2026-10-20 10:00 A | 100% |  |  | start no earlier than 2026-10-20 08:00 | Бундин В | 1h | 1h |
| 49 | 1.42 | Изготовление резинки для поломоечной машинки и установка. Резину получить на складе | 30min | 2026-10-20 09:00 A | 2026-10-20 09:30 A | 100% |  |  | start no earlier than 2026-10-20 08:00 | Бундин В | 0.5h | 0.5h |
| 50 | 1.43 | **ремонт 3х ходовой приточная вентиляция** | 4.12d | 2026-10-19 09:00 A | 2026-10-23 10:00 A | 100% |  |  |  |  | 7h | 7h |
| 51 | 1.43.1 | монтаж + замена серволпривод | 1h | 2026-10-19 09:00 A | 2026-10-19 10:00 A | 100% |  |  | start no earlier than 2026-10-19 08:00 | Тимофеев В; Николаев | 2h | 2h |
| 52 | 1.43.2 | монтаж на калорифер /подключить серволпривод | 2h | 2026-10-20 09:00 A | 2026-10-20 11:00 A | 100% |  |  | start no earlier than 2026-10-20 09:00 | Тимофеев В; Николаев | 4h | 4h |
| 53 | 1.43.3 | контроль работы / отлака | 1h | 2026-10-23 09:00 A | 2026-10-23 10:00 A | 100% |  |  | start no earlier than 2026-10-23 09:00 | Дедов В | 1h | 1h |
| 54 | 1.44 | подклоючить в дренаж доп лотки сбора конденсата | 4h | 2026-10-20 09:00 A | 2026-10-20 13:00 A | 100% |  |  | start no earlier than 2026-10-20 09:00 | Труфанов А | 4h | 4h |
| 55 | 1.45 | **монтаж водоподготовка // разделить воду в экструдер и парогенераторы** | 169.5d? | 2026-03-19 09:00 A | 2026-10-29 13:00 | 96% | 6.84d? | 98.09d |  |  | 293h | 281.5h |
| 56 | 1.45.1 | **монтаж водоподготовка** | 3.5d? | 2026-10-26 09:00 A | 2026-10-29 13:00 A | 100% |  |  |  |  | 24h | 24h |
| 57 | 1.45.1.1 | купить тройники / краны | 1d? | 2026-10-26 09:00 A | 2026-10-26 18:00 A | 100% |  |  | start no earlier than 2026-10-26 09:00 | Зорькин В | 8h | 8h |
| 58 | 1.45.1.2 | монтаж трасса раздельная, что можно без отключения | 4h | 2026-10-27 09:00 A | 2026-10-27 13:00 A | 100% |  |  | start no earlier than 2026-10-27 09:00 | Бобренок В; Николаев | 8h | 8h |
| 59 | 1.45.1.3 | подключение в систему / подключение питание | 4h | 2026-10-29 09:00 A | 2026-10-29 13:00 A | 100% |  |  | start no earlier than 2026-10-29 09:00 | Труфанов А; Некрасов А | 8h | 8h |

| ID | WBS | Task | Type | Duration | Start | Finish | Predecessors | Complete | Remaining | Total slack | Free slack | Constraint | Resources | Work | Actual work |
| --- | --- | --- | --- | --- | --- | --- | --- | --- | --- | --- | --- | --- | --- | --- | --- |
| 60 | 1.45.2 | **разделение воды ПГ / экструдер** |  | 67.31d | 2026-08-07 09:00 A | 2026-10-28 11:30 |  | 30% | 46.91d | 99.28d |  |  |  | 16.5h | 5h |
| 61 | 1.45.2.1 | изготовить промежуточную емкость для прекондера, подача воды, сделать по аналогу 3 цеха | manual | 2h | 2026-10-05 09:00 A | 2026-10-05 11:00 A |  | 100% |  |  |  | start no earlier than 2026-10-05 09:00 | Тимофеев В | 2h | 2h |
| 62 | 1.45.2.2 | **воставноить насосы пирльстатические** |  | 6.31d | 2026-10-20 09:00 A | 2026-10-28 11:30 A |  | 100% |  |  |  |  |  | 3h | 3h |
| 63 | 1.45.2.2.1 | Подать информацию (список), что необходимо заказать для восстановления насосов |  | 30min | 2026-10-28 09:00 A | 2026-10-28 09:30 A |  | 100% |  |  |  | start no earlier than 2026-10-28 09:00 | Тимофеев В | 0.5h | 0.5h |
| 64 | 1.45.2.2.2 | заявка трубка |  | 15min | 2026-10-20 09:00 A | 2026-10-20 09:15 A |  | 100% |  |  |  | start no earlier than 2026-10-20 09:00 | Зорькин В | 0.25h | 0.25h |
| 65 | 1.45.2.2.3 | контроль доставка |  | 15min | 2026-10-27 09:15 A | 2026-10-27 09:30 A | 64FS+5d | 100% |  |  |  | start no earlier than 2026-10-19 08:00 | Зорькин В | 0.25h | 0.25h |
| 66 | 1.45.2.2.4 | сборка |  | 2h | 2026-10-28 09:30 A | 2026-10-28 11:30 A | 65FS+1d | 100% |  |  |  | start no earlier than 2026-10-19 08:00 | Тимофеев В | 2h | 2h |
| 67 | 1.45.2.3 | **монтаж на линия 1** |  | 18.44d | 2026-08-07 09:00 | 2026-09-02 12:30 |  |  |  | 148.16d |  |  |  | 11.5h |  |
| 68 | 1.45.2.3.1 | заявка на счетчик, насос, 3х ход клапан, фитинги, канистра |  | 1h | 2026-08-07 09:00 | 2026-08-07 10:00 |  |  |  | 148.16d | 0d | start no earlier than 2026-08-07 09:00 | Зорькин В | 1h |  |
| 69 | 1.45.2.3.2 | контроль поставки |  | 30min | 2026-08-28 10:00 | 2026-08-28 10:30 | 68FS+15d |  |  | 148.16d | 0d | start no earlier than 2026-08-12 09:00 | Зорькин В | 0.5h |  |
| 70 | 1.45.2.3.3 | сборка корпус |  | 4h | 2026-08-31 10:30 | 2026-08-31 15:30 | 69FS+1d |  |  | 148.16d | 0d | start no earlier than 2026-08-12 09:00 | Тимофеев В | 4h |  |
| 71 | 1.45.2.3.4 | монтаж линия 1 |  | 6h | 2026-09-01 15:30 | 2026-09-02 12:30 | 70FS+1d |  |  | 148.16d |  | start no earlier than 2026-08-12 09:00 | Тимофеев В | 6h |  |
| 72 | 1.45.3 | заявка поплавкой клапан вертикальный, подводка с боку по аналогии с 4ц |  | 1h | 2026-03-19 09:00 A | 2026-03-19 10:00 A |  | 100% |  |  |  | start no earlier than 2026-03-19 08:00 | Зорькин В | 1h | 1h |
| 73 | 1.45.4 | доставка |  | 10d | 2026-03-19 10:00 A | 2026-04-02 10:00 A | 72 | 100% |  |  |  | start no earlier than 2026-03-19 08:00 | Карабанов | 80h | 80h |
| 74 | 1.45.5 | испытать производсительность маленького черн насоса с "медленным" счетким |  | 2h | 2026-05-20 09:00 A | 2026-05-20 11:00 A |  | 100% |  |  |  | start no earlier than 2026-05-20 09:00 | Тимофеев В | 2h | 2h |
| 75 | 1.45.6 | изготовить емкость для поплавкой камеры и насоса из нерж |  | 4h | 2026-04-27 09:00 A | 2026-04-27 13:00 A |  | 100% |  |  |  | start no earlier than 2026-04-27 09:00 | Макаревич А | 4h | 4h |
| 76 | 1.45.7 | доставка частотный 220 контроль | milestone | 0d | 2026-04-24 09:00 A | 2026-04-24 09:00 A |  | 100% |  |  |  | start no earlier than 2026-04-24 09:00 | Зорькин В |  |  |
| 77 | 1.45.8 | испытать регулирование насоса на частотнике |  | 1h | 2026-05-26 09:00 A | 2026-05-26 10:00 A |  | 100% |  |  |  | start no earlier than 2026-05-26 09:00 | Дедов В | 1h | 1h |
| 78 | 1.45.9 | монтаж насоса + бак нерж на линия 2 |  | 1h | 2026-05-27 09:00 A | 2026-05-27 10:00 A |  | 100% |  |  |  | start no earlier than 2026-05-27 09:00 | Тимофеев В | 1h | 1h |
| 79 | 1.45.10 | монтаж розетка, кабель до насаса, подключение двигатель насоса |  | 1h | 2026-05-27 09:00 A | 2026-05-27 10:00 A |  | 100% |  |  |  | start no earlier than 2026-05-27 09:00 | Бундин В | 1h | 1h |
| 80 | 1.45.11 | подключение насос + счетчик + кран + частотник - сборка схема с байпасом на мал насосе |  | 2h | 2026-08-11 09:00 A | 2026-08-11 11:00 A |  | 100% |  |  |  | start no earlier than 2026-08-11 09:00 | Тимофеев В | 2h | 2h |
| 81 | 1.45.12 | установить счетчик в линию |  | 1h | 2026-08-12 09:00 A | 2026-08-12 10:00 A |  | 100% |  |  |  | start no earlier than 2026-08-12 09:00 | Тимофеев В | 1h | 1h |
| 82 | 1.45.13 | испытания производительности и регулировки |  | 1h | 2026-08-12 09:00 A | 2026-08-12 10:00 A |  | 100% |  |  |  | start no earlier than 2026-08-12 09:00 | Тимофеев В | 1h | 1h |
| 83 | 1.45.14 | тестирование работы при обновленном SSID |  | 147.5h | 2026-08-07 09:00 A | 2026-09-02 12:30 A |  | 100% |  |  |  |  | Домоводов К | 147.5h | 147.5h |
| 84 | 1.45.15 | подключть конденсатор к насосу, запуск системы |  | 1h | 2026-05-27 08:00 A | 2026-05-27 10:00 A |  | 100% |  |  |  | start no earlier than 2026-05-27 08:00 | Дедов В | 1h | 1h |
| 85 | 1.45.16 | подготовить емкость нерж (попловок, сгон) для подключения к насосу |  | 4h | 2026-05-26 09:00 A | 2026-05-26 13:00 A |  | 100% |  |  |  | start no earlier than 2026-05-26 09:00 | Бундин В | 4h | 4h |
| 86 | 1.45.17 | испытать насос на часотоном приводе |  | 2h | 2026-05-19 09:00 A | 2026-05-19 11:00 A | 76 | 100% |  |  |  | start no earlier than 2026-05-20 09:00 | Тимофеев В | 2h | 2h |
| 87 | 1.45.18 | перенос с 3й линии бак с насосом, установка на линия 2 |  | 4h | 2026-04-08 09:00 A | 2026-04-08 13:00 A | 75 | 100% |  |  |  | start no earlier than 2026-04-08 09:00 | Некрасов А | 4h | 4h |

| ID | WBS | Task | Type | Duration | Start | Finish | Predecessors | Complete | Total slack | Free slack | Constraint | Resources | Work | Actual work |
| --- | --- | --- | --- | --- | --- | --- | --- | --- | --- | --- | --- | --- | --- | --- |
| 88 | 1.46 | **Входная дверь 1 цех - замена шарниров** |  | 10.12d | 2026-10-10 09:00 A | 2026-10-23 10:00 A |  | 100% |  |  |  |  | 2.33h | 2.33h |
| 89 | 1.46.1 | Посмотреть входные двери в 1 цех, тяжело закрываются, устранить | manual | 1h | 2026-10-10 09:00 A | 2026-10-10 10:00 A |  | 100% |  |  | start no earlier than 2026-10-10 09:00 | Бундин В | 1h | 1h |
| 90 | 1.46.2 | Заявка |  | 10min | 2026-10-14 09:00 A | 2026-10-14 09:10 A |  | 100% |  |  | start no earlier than 2026-10-14 09:00 | Зорькин В | 0.17h | 0.17h |
| 91 | 1.46.3 | контроль |  | 10min | 2026-10-21 09:00 A | 2026-10-21 09:10 A |  | 100% |  |  | start no earlier than 2026-10-21 09:00 | Зорькин В | 0.17h | 0.17h |
| 92 | 1.46.4 | Замена петли | manual | 1h | 2026-10-23 09:00 A | 2026-10-23 10:00 A |  | 100% |  |  | start no earlier than 2026-10-23 09:00 | Бундин В | 1h | 1h |
| 93 | 1.47 | Увезти бетономешалку и лестницу с пандуса (бетономешалку прикрутить к паллету на перфоленту и сразу поставить на полку |  | 1d? | 2026-10-12 09:00 A | 2026-10-12 18:00 A |  | 100% |  |  | start no earlier than 2026-10-12 08:00 |  |  |  |
| 94 | 1.48 | Установить вентилятор на пробник (на столе в слесарке?) |  | 1h | 2026-10-09 09:00 A | 2026-10-09 10:00 A |  | 100% |  |  | start no earlier than 2026-10-09 09:00 | Дедов В | 1h | 1h |
| 95 | 1.49 | Убрать пневмотрубу из гидролизатной, видео скинул, муфту взять в кабинете у нас. Остановку согласовать, сделать все за 20 мин максимум |  | 20min | 2026-10-08 09:00 A | 2026-10-08 09:20 A |  | 100% |  |  | start no earlier than 2026-10-08 08:00 | Бобренок В | 0.33h | 0.33h |
| 96 | 1.50 | Устранение течи с вентиляции, предложить варианты, выслушать вариант домоводова |  | 3h | 2026-10-06 09:00 A | 2026-10-06 12:00 A |  | 100% |  |  | start no earlier than 2026-10-06 09:00 | Труфанов А | 3h | 3h |
| 97 | 1.51 | Изготовление и установка крышек на бачок гидролизата в 1 цеху |  | 3h | 2026-10-07 09:00 A | 2026-10-07 12:00 A |  | 100% |  |  | start no earlier than 2026-10-07 09:00 | Бундин В | 3h | 3h |
| 98 | 1.52 | **Вал прекондиционера 1 линия** |  | 1.88d | 2026-10-05 09:00 A | 2026-10-06 17:00 A |  | 100% |  |  |  |  | 11.67h | 11.67h |
| 99 | 1.52.1 | С 8 утра снимаем вал с прекондиционера 1 линия. |  | 3h | 2026-10-05 09:00 A | 2026-10-05 12:00 A |  | 100% |  |  | start no earlier than 2026-10-05 09:00 | Труфанов А | 3h | 3h |
| 100 | 1.52.2 | Образмеривание вала |  | 1h | 2026-10-05 12:00 A | 2026-10-05 13:00 A | 99 | 100% |  |  | start no earlier than 2026-10-02 08:00 | Труфанов А | 1h | 1h |
| 101 | 1.52.3 | Передача всей необходимой информации токарю |  | 30min | 2026-10-05 14:00 A | 2026-10-05 14:30 A | 100 | 100% |  |  | start no earlier than 2026-10-05 09:00 | Зорькин В | 0.5h | 0.5h |
| 102 | 1.52.4 | Контроль |  | 10min | 2026-10-05 14:30 A | 2026-10-05 14:40 A | 101 | 100% |  |  | start no earlier than 2026-10-05 09:00 | Зорькин В | 0.17h | 0.17h |
| 103 | 1.52.5 | Доставка |  | 3h | 2026-10-06 09:00 A | 2026-10-06 12:00 A | 102 | 100% |  |  | start no earlier than 2026-10-06 09:00 | Логист | 3h | 3h |
| 104 | 1.52.6 | Ставим новый вал сразу после прихода |  | 4h | 2026-10-06 12:00 A | 2026-10-06 17:00 A | 103 | 100% |  |  | start no earlier than 2026-10-06 09:00 | Труфанов А | 4h | 4h |
| 105 | 1.53 | **ремонт шарнир подачи пакетов квадропак** |  | 5d? | 2026-10-01 09:00 | 2026-10-06 18:00 |  |  | 115.59d |  |  |  |  |  |
| 106 | 1.53.1 | Составить заявку на шарнир подачи пакетов (зона 1) ВЭД партнер |  | 1d? | 2026-10-01 09:00 | 2026-10-01 18:00 |  |  | 115.59d | 0d | start no earlier than 2026-10-01 08:00 |  |  |  |
| 107 | 1.53.2 | Получить счет - оплата |  | 1d? | 2026-10-02 09:00 | 2026-10-02 18:00 | 106 |  | 115.59d | 0d | start no earlier than 2026-10-01 08:00 |  |  |  |
| 108 | 1.53.3 | Контроль доставки |  | 1d? | 2026-10-04 09:00 | 2026-10-04 18:00 | 107 |  | 115.59d | 0d | start no earlier than 2026-10-01 08:00 |  |  |  |
| 109 | 1.53.4 | Приемка |  | 1d? | 2026-10-05 09:00 | 2026-10-05 18:00 | 108 |  | 115.59d | 0d | start no earlier than 2026-10-01 08:00 |  |  |  |
| 110 | 1.53.5 | Установка |  | 1d? | 2026-10-06 09:00 | 2026-10-06 18:00 | 109 |  | 115.59d |  | start no earlier than 2026-10-01 08:00 |  |  |  |
| 111 | 1.54 | Установить газлифты на раму весов в плоскостях Х и У |  | 3h | 2026-10-02 09:00 A | 2026-10-02 12:00 A |  | 100% |  |  | start no earlier than 2026-10-02 09:00 | Тимофеев В; Бундин В | 6h | 6h |

| ID | WBS | Task | Duration | Start | Finish | Predecessors | Complete | Remaining | Total slack | Constraint | Resources | Work | Actual work |
| --- | --- | --- | --- | --- | --- | --- | --- | --- | --- | --- | --- | --- | --- |
| 112 | 1.55 | **сборка рама для труб приточной вентиляции** | 38.62d? | 2026-10-15 09:00 A | 2026-12-01 15:00 |  | 70% | 11.54d? | 70.97d |  |  | 125.5h | 93.25h |
| 113 | 1.55.1 | Срезать кончики свай на 300 | 2h | 2026-11-17 09:00 A | 2026-11-17 11:00 A |  | 100% |  |  | start no earlier than 2026-11-17 09:00 | Труфанов А; Некрасов А | 4h | 4h |
| 114 | 1.55.2 | Монтаж головок | 1h | 2026-11-17 10:00 A | 2026-11-17 11:00 A | 115 | 100% |  |  |  | Труфанов А; Некрасов А | 2h | 2h |
| 115 | 1.55.3 | Лазером сделать привязки свай относительно вентиляции (колонны здания) | 1h | 2026-11-17 09:00 A | 2026-11-17 10:00 A |  | 100% |  |  | start no earlier than 2026-11-17 09:00 | Труфанов А; Некрасов А | 2h | 2h |
| 116 | 1.55.4 | Монтаж арматурной сетки | 4h | 2026-11-17 09:00 A | 2026-11-17 13:00 A |  | 100% |  |  | start no earlier than 2026-11-17 09:00 | Труфанов А; Некрасов А | 8h | 8h |
| 117 | 1.55.5 | составить проект рамы | 4h | 2026-10-15 09:00 A | 2026-10-15 13:00 A |  | 100% |  |  | start no earlier than 2026-10-15 09:00 | Домоводов К | 4h | 4h |
| 118 | 1.55.6 | заявка металл | 4h | 2026-10-15 14:00 A | 2026-10-15 18:00 A | 117 | 100% |  |  | start no earlier than 2026-09-30 08:00 | Домоводов К | 4h | 4h |
| 119 | 1.55.7 | обновить схему для согласования | 4h | 2026-10-20 09:00 A | 2026-10-20 13:00 A |  | 100% |  |  | start no earlier than 2026-10-20 09:00 | Домоводов К | 4h | 4h |
| 120 | 1.55.8 | проект подготовить заказ на пластины | 4h | 2026-10-22 09:00 A | 2026-10-22 13:00 A |  | 100% |  |  | start no earlier than 2026-10-22 08:00 | Домоводов К | 4h | 4h |
| 121 | 1.55.9 | контроль доставка | 15min | 2026-10-29 09:00 A | 2026-10-29 09:15 A | 118FS+10d | 100% |  |  | start no earlier than 2026-09-30 08:00 | Зорькин В | 0.25h | 0.25h |
| 122 | 1.55.10 | **покраска металл** | 12.38d | 2026-10-27 09:00 A | 2026-11-10 12:00 A |  | 100% |  |  |  |  | 36.5h | 36.5h |
| 123 | 1.55.10.1 | Докрасить металл на рампе | 3h | 2026-11-10 09:00 A | 2026-11-10 12:00 A |  | 100% |  |  | start no earlier than 2026-11-10 09:00 | Макаревич А; Николаев | 6h | 6h |
| 124 | 1.55.10.2 | заявка грунт ПФ116 | 15min | 2026-10-27 09:00 A | 2026-10-27 09:15 A |  | 100% |  |  | start no earlier than 2026-10-27 08:00 | Домоводов К | 0.25h | 0.25h |
| 125 | 1.55.10.3 | контроль доставка | 15min | 2026-11-04 09:00 A | 2026-11-04 09:15 A | 124 | 100% |  |  | start no earlier than 2026-11-04 09:00 | Домоводов К | 0.25h | 0.25h |
| 126 | 1.55.10.4 | покраска металл на рампе 1 цех по верху, то что лежит, перекидывать не нужно | 4h | 2026-11-04 09:15 A | 2026-11-04 14:15 A | 125 | 100% |  |  | start no earlier than 2026-10-27 08:00 | Бобренок В | 4h | 4h |
| 127 | 1.55.10.5 | Продолжить покраску металла на пандусе | 4h | 2026-11-05 09:00 A | 2026-11-05 13:00 A |  | 100% |  |  | start no earlier than 2026-11-05 09:00 | Труфанов А; Некрасов А; Тимофеев В; Бобренок В | 16h | 16h |
| 128 | 1.55.10.6 | Организовать перевозку металла в 3 цех | 2h | 2026-11-06 09:00 A | 2026-11-06 11:00 A |  | 100% |  |  | start no earlier than 2026-11-06 09:00 | Труфанов А; Некрасов А; Тимофеев В; Макаревич А; Николаев | 10h | 10h |
| 129 | 1.55.11 | **изг кронштейнов** | 3.03d | 2026-10-27 09:00 A | 2026-10-30 09:15 |  | 50% | 1.52d | 97.56d |  |  | 0.5h | 0.25h |
| 130 | 1.55.11.1 | заявка оплата ТВР | 15min | 2026-10-27 09:00 A | 2026-10-27 09:15 A |  | 100% |  |  | start no earlier than 2026-10-27 09:00 | Зорькин В | 0.25h | 0.25h |
| 131 | 1.55.11.2 | контроль орг забрать | 15min | 2026-10-30 09:00 | 2026-10-30 09:15 |  |  |  | 97.56d | start no earlier than 2026-10-30 09:00 | Зорькин В | 0.25h |  |
| 132 | 1.55.12 | **бурение свай** | 18.03d? | 2026-10-27 09:00 A | 2026-11-16 09:15 A |  | 100% |  |  |  |  | 9.25h | 9.25h |
| 133 | 1.55.12.1 | получить счет /договор | 1h | 2026-10-27 09:00 A | 2026-10-27 10:00 A |  | 100% |  |  | start no earlier than 2026-10-27 08:00 | Домоводов К | 1h | 1h |
| 134 | 1.55.12.2 | перекладка труб 500 соседких краном | 1d? | 2026-10-27 09:00 A | 2026-10-27 18:00 A |  | 100% |  |  | start no earlier than 2026-10-27 08:00 | Труфанов А; Некрасов А | 8h | 8h |
| 135 | 1.55.12.3 | примерка пластины с отверстием на сваю | 15min | 2026-11-16 09:00 A | 2026-11-16 09:15 A |  | 100% |  |  | start no earlier than 2026-11-20 09:00 | Некрасов А | 0.25h | 0.25h |

| ID | WBS | Task | Duration | Start | Finish | Predecessors | Complete | Remaining | Total slack | Free slack | Constraint | Resources | Work | Actual work |
| --- | --- | --- | --- | --- | --- | --- | --- | --- | --- | --- | --- | --- | --- | --- |
| 136 | 1.55.13 | **сборка рама в цехе 3** | 17.62d | 2026-11-09 09:00 A | 2026-11-30 15:00 | 121 | 26% | 12.99d | 70.97d | 0d |  |  | 39h | 15h |
| 137 | 1.55.13.1 | Изготовление заготовок для рамы (в 9:00 обсуждаем с костей) | 4h | 2026-11-27 09:00 | 2026-11-27 13:00 |  |  |  | 72.09d |  | start no earlier than 2026-11-27 09:00 | Макаревич А; Некрасов А | 8h |  |
| 138 | 1.55.13.2 | монтаж растверк свай | 5h | 2026-11-24 09:00 A | 2026-11-24 15:00 A |  | 100% |  |  |  | start no earlier than 2026-11-24 08:00 | Труфанов А; Некрасов А; Макаревич А | 15h | 15h |
| 139 | 1.55.13.3 | сборка рамы | 5h | 2026-11-30 09:00 | 2026-11-30 15:00 |  |  |  | 70.97d |  | start no earlier than 2026-11-30 09:00 | Некрасов А; Макаревич А | 10h |  |
| 140 | 1.55.13.4 | распаковка настройка станка для резки проката | 1h | 2026-11-10 09:00 | 2026-11-10 10:00 |  |  |  | 87.47d |  | start no earlier than 2026-11-10 09:00 | Труфанов А; Некрасов А | 2h |  |
| 141 | 1.55.13.5 | разработка инструкции по ТБ на данный станок | 4h | 2026-11-09 09:00 | 2026-11-09 13:00 |  |  |  | 88.09d |  | start no earlier than 2026-11-09 08:00 | Зорькин В | 4h |  |
| 142 | 1.55.14 | монтаж рама на цех краном | 1d? | 2026-11-30 15:00 | 2026-12-01 15:00 | 136 |  |  | 70.97d |  | start no earlier than 2026-11-30 09:00 | Некрасов А | 8h |  |
| 143 | 1.56 | герметизация неиспользуемых отверстий после модернизации вентиляции | 1d? | 2026-09-30 09:00 | 2026-09-30 18:00 |  |  |  | 120.59d |  | start no earlier than 2026-09-30 08:00 |  |  |  |
| 144 | 1.57 | **сборка системы дренажа для рекуператоров ввентиляции** | 2d? | 2026-09-30 09:00 A | 2026-10-01 18:00 A |  | 100% |  |  |  |  |  | 30h | 30h |
| 145 | 1.57.1 | Монтаж трассы слива в раковину с рекурператоров | 7h | 2026-09-30 09:00 A | 2026-09-30 17:00 A |  | 100% |  |  |  | start no earlier than 2026-09-30 09:00 | Труфанов А; Некрасов А | 14h | 14h |
| 146 | 1.57.2 | продолжить монтаж | 1d? | 2026-10-01 09:00 A | 2026-10-01 18:00 A |  | 100% |  |  |  | start no earlier than 2026-10-02 09:00 | Труфанов А; Некрасов А | 16h | 16h |
| 147 | 1.58 | Проверка весов на 2 линии красный смеситель, со слов валентина, после замены блока питания, работает, а потом выбивает весы, перестают работать | 1h | 2026-09-29 09:00 A | 2026-09-29 10:00 A |  | 100% |  |  |  | start no earlier than 2026-09-29 09:00 | Дедов В | 1h | 1h |
| 148 | 1.59 | Повторный замер параметров в 1 цеху, вентилляция (подробности по точкам у Домоводова) | 5h | 2026-09-25 09:00 A | 2026-09-25 15:00 A |  | 100% |  |  |  | start no earlier than 2026-09-25 09:00 | Труфанов А; Некрасов А | 10h | 10h |
| 149 | 1.60 | замеры в точках выброса вентиляции с проедставителем | 6h | 2026-09-29 09:00 A | 2026-09-29 16:00 A |  | 100% |  |  |  | start no earlier than 2026-09-29 09:00 | Труфанов А; Некрасов А | 12h | 12h |
| 150 | 1.61 | изготовить переход между прекондиционер и экструдер на 1 линию | 1d? | 2026-09-27 09:00 A | 2026-09-27 18:00 A |  | 100% |  |  |  | start no earlier than 2026-09-27 09:00 | Макаревич А | 8h | 8h |
| 151 | 1.62 | уборка остатков монтажа с рампы | 1h | 2026-09-14 09:00 A | 2026-09-14 10:00 A |  | 100% |  |  |  | start no earlier than 2026-09-14 09:00 | Некрасов А; Тимофеев В; Труфанов А | 3h | 3h |
| 152 | 1.63 | крепить табличку видеонаблюдение в офисе | 15min | 2026-09-14 09:00 A | 2026-09-14 09:15 A |  | 100% |  |  |  | start no earlier than 2026-09-14 09:00 | Тимофеев В | 0.25h | 0.25h |
| 153 | 1.64 | закрыть чердак у Лукаса | 15min | 2026-09-14 09:00 A | 2026-09-14 09:15 A |  | 100% |  |  |  | start no earlier than 2026-09-14 09:00 | Труфанов А; Некрасов А | 0.5h | 0.5h |
| 154 | 1.65 | **ремонт весов смеситель 1 линия** | 1.12d | 2026-09-24 09:00 A | 2026-09-25 10:00 A |  | 100% |  |  |  |  |  | 2h | 2h |
| 155 | 1.65.1 | Реанимировать весы, чтобы показывали. Смесители | 1h | 2026-09-24 09:00 A | 2026-09-24 10:00 A |  | 100% |  |  |  | start no earlier than 2026-09-24 09:00 | Дедов В | 1h | 1h |
| 156 | 1.65.2 | подключить блок питания найти на складе | 1h | 2026-09-25 09:00 A | 2026-09-25 10:00 A |  | 100% |  |  |  | start no earlier than 2026-09-25 08:00 | Бундин В | 1h | 1h |
| 157 | 1.66 | Закрыть каналыгу. На анкера | 2h | 2026-09-15 09:00 A | 2026-09-15 11:00 A |  | 100% |  |  |  | start no earlier than 2026-09-15 09:00 | Бундин В | 2h | 2h |
| 158 | 1.67 | **Дополнительное освещение на Рампе** | 41.12d | 2026-09-11 09:00 A | 2026-10-28 10:00 A |  | 100% |  |  |  |  |  | 7.17h | 7.17h |
| 159 | 1.67.1 | Прокинуть кабель | 2h | 2026-09-11 09:00 A | 2026-09-11 11:00 A |  | 100% |  |  |  | start no earlier than 2026-09-11 09:00 | Бобренок В | 2h | 2h |
| 160 | 1.67.2 | установить доп светильник на погрузочной рампе | 4h | 2026-09-15 09:00 A | 2026-09-15 13:00 A | 159 | 100% |  |  |  | start no earlier than 2026-09-15 09:00 | Бобренок В | 4h | 4h |
| 161 | 1.67.3 | заявка выключатель | 5min | 2026-09-16 09:00 A | 2026-09-16 09:05 A | 160 | 100% |  |  |  | start no earlier than 2026-09-16 08:00 | Зорькин В | 0.08h | 0.08h |
| 162 | 1.67.4 | контроль | 5min | 2026-09-25 09:00 A | 2026-09-25 09:05 A | 161FS+7d | 100% |  |  |  | start no earlier than 2026-09-25 09:00 | Зорькин В | 0.08h | 0.08h |
| 163 | 1.67.5 | пожключение выключателя | 1h | 2026-10-28 09:00 A | 2026-10-28 10:00 A | 162FS+1d | 100% |  |  |  | start no earlier than 2026-10-28 09:00 | Бобренок В | 1h | 1h |
| 164 | 1.68 | востановить светильник отсек выгрузки ГП + установить доп светильник | 4h | 2026-09-09 09:00 A | 2026-09-09 13:00 A |  | 100% |  |  |  | start no earlier than 2026-09-09 09:00 | Бундин В | 4h | 4h |

| ID | WBS | Task | Type | Duration | Start | Finish | Predecessors | Complete | Remaining | Total slack | Free slack | Constraint | Resources | Work | Actual work |
| --- | --- | --- | --- | --- | --- | --- | --- | --- | --- | --- | --- | --- | --- | --- | --- |
| 165 | 1.69 | **реконструкция хранения гидролизатов и маршрут подачи навесок** |  | 78d | 2026-09-08 09:00 A | 2026-12-08 18:00 |  | 36% | 50.09d | 65.59d |  |  |  | 69.08h | 24.5h |
| 166 | 1.69.1 | **перенос системы отопления** |  | 0.12d | 2026-09-11 09:00 A | 2026-09-11 10:00 A |  | 100% |  |  |  |  |  | 1h | 1h |
| 167 | 1.69.1.1 | посик сварщиков |  | 1h | 2026-09-11 09:00 A | 2026-09-11 10:00 A |  | 100% |  |  |  | start no earlier than 2026-09-11 09:00 | Домоводов К | 1h | 1h |
| 168 | 1.69.2 | **монтаж доп плащадки** |  | 54d | 2026-09-28 09:00 A | 2026-12-02 18:00 |  | 9% | 49.37d | 69.59d |  |  |  | 17.5h | 1.5h |
| 169 | 1.69.2.1 | составить чертеж площадки |  | 1h | 2026-09-28 09:00 A | 2026-09-28 10:00 A |  | 100% |  |  |  | start no earlier than 2026-09-28 09:00 | Домоводов К | 1h | 1h |
| 170 | 1.69.2.2 | заявка |  | 15min | 2026-10-13 09:00 A | 2026-10-13 09:15 A | 169FS+1d | 100% |  |  |  | start no earlier than 2026-10-13 09:00 | Домоводов К | 0.25h | 0.25h |
| 171 | 1.69.2.3 | получен счет | milestone | 0d | 2026-10-19 08:00 A | 2026-10-19 08:00 A |  | 100% |  |  |  | start no earlier than 2026-10-19 08:00 | Домоводов К |  |  |
| 172 | 1.69.2.4 | контроль доставки |  | 15min | 2026-10-26 09:00 A | 2026-10-26 09:15 A | 170FS+5d, 171FS+5d | 100% |  |  |  | start no earlier than 2026-09-08 08:00 | Зорькин В | 0.25h | 0.25h |
| 173 | 1.69.2.5 | монтаж |  | 2d | 2026-12-01 09:00 | 2026-12-02 18:00 | 172FS+1d |  |  | 69.59d |  | start no earlier than 2026-12-01 09:00 | Тимофеев В | 16h |  |
| 174 | 1.69.3 | **монтаж перегородка корридор** |  | 35.97d | 2026-10-26 09:15 | 2026-12-08 18:00 |  |  |  | 65.59d |  |  |  | 16.25h |  |
| 175 | 1.69.3.1 | контроль доставки |  | 15min | 2026-10-26 09:15 | 2026-10-26 09:30 | 172 |  |  | 98.53d | 32.94d | start no earlier than 2026-09-08 08:00 | Зорькин В | 0.25h |  |
| 176 | 1.69.3.2 | монтаж |  | 2d | 2026-12-07 09:00 | 2026-12-08 18:00 | 175FS+1d |  |  | 65.59d |  | start no earlier than 2026-12-07 09:00 | Тимофеев В | 16h |  |
| 177 | 1.69.4 | **врезка двери в проем на упаковку** |  | 0.04d | 2026-09-09 09:00 | 2026-09-09 09:20 |  |  |  | 142.55d |  |  |  | 0.33h |  |
| 178 | 1.69.4.1 | планирование с Олегом, как сделана стена |  | 20min | 2026-09-09 09:00 | 2026-09-09 09:20 |  |  |  | 142.55d |  | start no earlier than 2026-09-09 09:00 | Домоводов К | 0.33h |  |
| 179 | 1.69.5 | востановить уплотнения двери в гидролизатной, все резинки, примыкания |  | 3h | 2026-10-20 09:00 | 2026-10-20 12:00 |  |  |  | 105.22d |  | start no earlier than 2026-10-20 09:00 | Тимофеев В; Николаев | 6h |  |
| 180 | 1.69.6 | монтаж трассы к батарее (позвонить труфанову) приоритетная задача |  | 3h | 2026-10-21 09:00 | 2026-10-21 12:00 |  |  |  | 104.22d |  | start no earlier than 2026-10-21 09:00 | Бундин В; Труфанов А | 6h |  |
| 181 | 1.69.7 | перенос батареи отопления в гидролизатной |  | 2h | 2026-10-12 09:00 A | 2026-10-12 11:00 A |  | 100% |  |  |  | start no earlier than 2026-10-12 09:00 | Труфанов А; Некрасов А | 4h | 4h |
| 182 | 1.69.8 | демонтаж бетонного отлива/отмостка |  | 2d | 2026-09-08 09:00 A | 2026-09-09 18:00 A |  | 100% |  |  |  | start no earlier than 2026-09-08 08:00 | Олег | 16h | 16h |
| 183 | 1.69.9 | Помощь Олегу пока ставит шпильки |  | 1h | 2026-10-12 09:00 A | 2026-10-12 10:00 A |  | 100% |  |  |  | start no earlier than 2026-10-12 08:00 | Труфанов А; Бобренок В | 2h | 2h |
| 184 | 1.70 | **ревизия парогенератор КАРЧЕР** |  | 3.03d? | 2026-09-21 09:00 A | 2026-09-24 09:15 A |  | 100% |  |  |  |  |  | 8.5h | 8.5h |
| 185 | 1.70.1 | орг отправить курьера на пнд |  | 15min | 2026-09-23 09:00 A | 2026-09-23 09:15 A |  | 100% |  |  |  | start no earlier than 2026-09-23 09:00 | Зорькин В | 0.25h | 0.25h |
| 186 | 1.70.2 | контроль доставки |  | 15min | 2026-09-24 09:00 A | 2026-09-24 09:15 A | 185 | 100% |  |  |  | start no earlier than 2026-09-24 09:00 | Зорькин В | 0.25h | 0.25h |
| 187 | 1.70.3 | монтаж |  | 1d? | 2026-09-21 09:00 A | 2026-09-21 18:00 A | 186 | 100% |  |  |  | start no earlier than 2026-09-25 09:00 | Тимофеев В | 8h | 8h |
| 188 | 1.71 | **подключить циклоны 1 и 2 линия** |  | 1.12d | 2026-09-09 09:00 A | 2026-09-10 10:00 A |  | 100% |  |  |  |  |  | 1.17h | 1.17h |
| 189 | 1.71.1 | контроль поставка кабель |  | 10min | 2026-09-09 09:00 A | 2026-09-09 09:10 A |  | 100% |  |  |  | start no earlier than 2026-09-09 09:00 | Зорькин В | 0.17h | 0.17h |
| 190 | 1.71.2 | монтаж кабеля (временно удлинить от сущестующих концов) |  | 1h | 2026-09-10 09:00 A | 2026-09-10 10:00 A |  | 100% |  |  |  | start no earlier than 2026-09-10 09:00 | Бундин В | 1h | 1h |

| ID | WBS | Task | Type | Duration | Start | Finish | Predecessors | Complete | Constraint | Resources | Work | Actual work |
| --- | --- | --- | --- | --- | --- | --- | --- | --- | --- | --- | --- | --- |
| 191 | 1.72 | **бактерицидные лампы** |  | 7.12d | 2026-09-09 09:00 A | 2026-09-16 10:00 A |  | 100% |  |  | 3h | 3h |
| 192 | 1.72.1 | замена бактерицидных ламп в коридоре и посмотреть, где не горят |  | 1h | 2026-09-09 09:00 A | 2026-09-09 10:00 A |  | 100% | start no earlier than 2026-09-09 09:00 | Бундин В | 1h | 1h |
| 193 | 1.72.2 | ремонт лампы снятой бундиным с мойки экструдера |  | 1h | 2026-09-16 09:00 A | 2026-09-16 10:00 A |  | 100% | start no earlier than 2026-09-16 09:00 | Бундин В | 1h | 1h |
| 194 | 1.72.3 | ремонт лампы в тамбуре вывоз ГП |  | 1h | 2026-09-16 09:00 A | 2026-09-16 10:00 A |  | 100% | start no earlier than 2026-09-16 09:00 | Бундин В | 1h | 1h |
| 195 | 1.73 | исправить "не возможность открыть" краны фильтр жир 2л |  | 30min | 2026-09-10 09:00 A | 2026-09-10 09:30 A |  | 100% | start no earlier than 2026-09-10 09:00 | Тимофеев В | 0.5h | 0.5h |
| 196 | 1.74 | ремонт силиконовых уплотнений печи на сетке 1 и 2 л |  | 3h? | 2026-09-10 09:00 A | 2026-09-10 12:00 A |  | 100% | start no earlier than 2026-09-10 09:00 | Бундин В | 3h | 3h |
| 197 | 1.75 | **сместить квадропак в сторону охладителя 2л** |  | 20.5d | 2026-09-10 09:00 A | 2026-09-30 13:00 A |  | 100% |  |  | 20h | 20h |
| 198 | 1.75.1 | отключение / перенгос мехнизмов |  | 3h | 2026-09-10 09:00 A | 2026-09-10 12:00 A |  | 100% | start no earlier than 2026-09-10 09:00 | Некрасов А; Труфанов А | 6h | 6h |
| 199 | 1.75.2 | подключение |  | 3h | 2026-09-11 09:00 A | 2026-09-11 12:00 A |  | 100% | start no earlier than 2026-09-11 09:00 | Некрасов А; Труфанов А | 6h | 6h |
| 200 | 1.75.3 | доработка перил |  | 4h | 2026-09-30 09:00 A | 2026-09-30 13:00 A |  | 100% | start no earlier than 2026-09-30 09:00 | Труфанов А; Некрасов А | 8h | 8h |
| 201 | 1.76 | **квадропак - сделать силиконовый успокоитель между нория и весы 800*250 шаг шторок 60** |  | 30.12d | 2026-09-25 09:00 A | 2026-11-02 10:00 A |  | 100% |  |  | 1.33h | 1.33h |
| 202 | 1.76.1 | заявка прозрачный силикон |  | 10min | 2026-09-25 09:00 A | 2026-09-25 09:10 A |  | 100% | start no earlier than 2026-09-25 09:00 | Зорькин В | 0.17h | 0.17h |
| 203 | 1.76.2 | доставка контроль |  | 10min | 2026-10-26 09:00 A | 2026-10-26 09:10 A | 202FS+1d | 100% | start no earlier than 2026-10-26 09:00 | Зорькин В | 0.17h | 0.17h |
| 204 | 1.76.3 | сборка |  | 1h | 2026-11-02 09:00 A | 2026-11-02 10:00 A | 203 | 100% | start no earlier than 2026-11-02 09:00 | Некрасов А | 1h | 1h |
| 205 | 1.77 | квадропак - ремонт люфта штанги нажима роликов открытия захватов на станции №1 |  | 4h | 2026-09-30 09:00 A | 2026-09-30 13:00 A |  | 100% | start no earlier than 2026-09-30 09:00 | Тимофеев В | 4h | 4h |
| 206 | 1.78 | квадропак - кронштейн пневовстряхивателя - востановить резтбу сквозную |  | 1h | 2026-09-30 09:00 A | 2026-09-30 10:00 A |  | 100% | start no earlier than 2026-09-30 09:00 | Тимофеев В | 1h | 1h |
| 207 | 1.79 | Ревизия утечек воздуха на квадропаке (важно проверить пневмораспределителях) и вакуумную систему (если работают, отменяем задание) | manual | 2h | 2026-09-23 09:00 A | 2026-09-23 11:00 A |  | 100% | start no earlier than 2026-09-23 09:00 | Тимофеев В | 2h | 2h |
| 208 | 1.80 | Комплексное ТО квадропака, проверка всех соединений, протяжка болтов на всех узлах | manual | 2h | 2026-09-23 09:00 A | 2026-09-23 11:00 A |  | 100% | start no earlier than 2026-09-23 09:00 | Тимофеев В | 2h | 2h |
| 209 | 1.81 | Сделать основную кнопку на НОТИСЕ, чтоб срабатывало от нее, а не от блока управления (схему взять у нас в кабинете) | manual | 1h | 2026-09-22 09:00 A | 2026-09-22 10:00 A |  | 100% | start no earlier than 2026-09-22 09:00 | Дедов В | 1h | 1h |
| 210 | 1.82 | Убрать все кабеля на полу в зоне фасовки, теко-нотис (кабельный менеджмент) |  | 2h | 2026-09-10 09:00 A | 2026-09-10 11:00 A |  | 100% | start no earlier than 2026-09-10 09:00 | Бундин В | 2h | 2h |
| 211 | 1.83 | Клемная коробка на жирах сделать, сейчас вся висит на хомутах 2 линия |  | 1h | 2026-09-07 09:00 A | 2026-09-07 10:00 A |  | 100% | start no earlier than 2026-09-05 09:00 | Дедов В | 1h | 1h |
| 212 | 1.84 | Ошибка на баке жиротопки 2 линия Err.4 /разобраться и устранить причину |  | 1h | 2026-09-04 09:00 A | 2026-09-04 10:00 A |  | 100% | start no earlier than 2026-09-04 09:00 | Бобренок В | 1h | 1h |
| 213 | 1.85 | Установить новые газлифты, которые получил Бобренок на жиротопку 2 этаж |  | 2h | 2026-09-07 09:00 A | 2026-09-07 11:00 A |  | 100% | start no earlier than 2026-09-07 09:00 | Тимофеев В | 2h | 2h |
| 214 | 1.86 | **Не работают роль ставни на жирах, не стопоряться сделать/устранить неисправность** |  | 20.02d | 2026-09-09 09:00 A | 2026-09-29 09:10 A |  | 100% |  |  | 8.33h | 8.33h |
| 215 | 1.86.1 | Вызвать подрядчика/контроль |  | 10min | 2026-09-09 09:00 A | 2026-09-09 09:10 A |  | 100% | start no earlier than 2026-09-09 09:00 | Зорькин В | 0.17h | 0.17h |
| 216 | 1.86.2 | получить счет на ремонт |  | 1d | 2026-09-09 09:10 A | 2026-09-10 09:10 A | 215 | 100% | start no earlier than 2026-09-08 09:00 | Зорькин В | 8h | 8h |
| 217 | 1.86.3 | согласовать с подрядчиком дату ремонта |  | 10min | 2026-09-29 09:00 A | 2026-09-29 09:10 A | 216 | 100% | start no earlier than 2026-09-29 09:00 | Зорькин В | 0.17h | 0.17h |
| 218 | 1.87 | закреить отбойник корридор навесок (заанкерить) |  | 1h | 2026-09-03 09:00 A | 2026-09-03 10:00 A |  | 100% | start no earlier than 2026-09-03 08:00 | Бобренок В | 1h | 1h |
| 219 | 1.88 | Переподключение кондиционера срежима кондиционера на автоматический |  | 15min | 2026-09-02 09:00 A | 2026-09-02 09:15 A |  | 100% | start no earlier than 2026-09-02 09:00 | Бобренок В | 0.25h | 0.25h |
| 220 | 1.89 | Замена редуктора поворотного стола |  | 1h | 2026-09-02 09:00 A | 2026-09-02 10:00 A |  | 100% | start no earlier than 2026-09-02 09:00 | Бобренок В | 1h | 1h |
| 221 | 1.90 | Программирование частотника теко 0,4 привод смещения ленты |  | 2h | 2026-09-02 09:00 A | 2026-09-02 11:00 A |  | 100% | start no earlier than 2026-09-02 09:00 | Тимофеев В | 2h | 2h |
| 222 | 1.91 | Прозвонить кабель паллетных весов ошибка Error 10 |  | 1h | 2026-09-07 09:00 A | 2026-09-07 10:00 A |  | 100% | start no earlier than 2026-09-05 09:00 | Дедов В | 1h | 1h |
| 223 | 1.92 | Замена подшипников на ножевом узле |  | 2h | 2026-09-01 09:00 A | 2026-09-01 11:00 A |  | 100% | start no earlier than 2026-09-01 09:00 | Бундин В | 2h | 2h |
| 224 | 1.93 | Замена насоса на водяной рубашке жиротопке 2 этаж |  | 2h | 2026-09-01 09:00 A | 2026-09-01 11:00 A |  | 100% | start no earlier than 2026-09-01 09:00 | Бундин В | 2h | 2h |
| 225 | 1.94 | Замена контактора 1 линия 2 зона экструдера |  | 1h | 2026-09-01 09:00 A | 2026-09-01 10:00 A |  | 100% | start no earlier than 2026-09-01 09:00 | Бундин В | 1h | 1h |
| 226 | 1.95 | Редуктор смесителя 1 линия, собрать информацию, что не так, что нужно сделать |  | 30min | 2026-09-02 09:00 A | 2026-09-02 09:30 A |  | 100% | start no earlier than 2026-09-02 09:00 | Тимофеев В | 0.5h | 0.5h |
| 227 | 1.96 | Ремонт мухобойки 1 цех в корридоре завоза навесок |  | 1h | 2026-09-01 09:00 A | 2026-09-01 10:00 A |  | 100% | start no earlier than 2026-09-01 09:00 | Труфанов А | 1h | 1h |
| 228 | 1.97 | капает с кондиционера ближе к жировику (устранить) |  | 2h | 2026-08-31 09:00 A | 2026-08-31 11:00 A |  | 100% | start no earlier than 2026-08-31 09:00 | Бундин В; Тимофеев В | 4h | 4h |
| 229 | 1.98 | отвезти внутренний блок с 1 цеха на синий склад | manual | 1h | 2026-08-30 09:00 A | 2026-08-30 10:00 A |  | 100% | start no earlier than 2026-08-30 09:00 | Бундин В | 1h | 1h |
| 230 | 1.99 | чистка фильтра кондиционера между печками | manual | 1h | 2026-08-31 09:00 A | 2026-08-31 10:00 A |  | 100% | start no earlier than 2026-08-31 09:00 | Бундин В | 1h | 1h |
| 231 | 1.100 | ревизия приточной вентиляции (протяжка контактов и т.д.) | manual | 3h | 2026-08-31 09:00 A | 2026-08-31 12:00 A |  | 100% | start no earlier than 2026-08-31 09:00 | Дедов В | 3h | 3h |
| 232 | 1.101 | прикрутить лоток между барабанами, чтобы не бил о лопасти 1 линия | manual | 1h | 2026-08-30 09:00 A | 2026-08-30 10:00 A |  | 100% | start no earlier than 2026-08-30 09:00 | Бундин В | 1h | 1h |
| 233 | 1.102 | улитка на подиуме за цехом, прикрутить отвод в бок (отвод под подиумом) | manual | 1h | 2026-08-31 09:00 A | 2026-08-31 10:00 A |  | 100% | start no earlier than 2026-08-31 09:00 | Бундин В | 1h | 1h |
| 234 | 1.103 | течет вода с поломоечной машинки - разобраться | manual | 2h | 2026-08-31 09:00 A | 2026-08-31 11:00 A |  | 100% | start no earlier than 2026-08-31 09:00 | Дедов В | 2h | 2h |

| ID | WBS | Task | Duration | Start | Finish | Predecessors | Complete | Remaining | Total slack | Constraint | Resources | Work | Actual work |
| --- | --- | --- | --- | --- | --- | --- | --- | --- | --- | --- | --- | --- | --- |
| 235 | 1.104 | **почистить шнек сухого гидрализата (1 линия)** | 0.12d | 2026-08-28 08:00 A | 2026-08-28 10:00 A |  | 100% |  |  |  | Бобренок В | 3h | 3h |
| 236 | 1.104.1 | замена пошипников | 1h | 2026-08-28 08:00 A | 2026-08-28 10:00 A |  | 100% |  |  | start no earlier than 2026-08-28 08:00 | Тимофеев В; Некрасов А | 2h | 2h |
| 237 | 1.105 | замена фильтров на приточке | 1h | 2026-08-27 09:00 A | 2026-08-27 10:00 A |  | 100% |  |  | start no earlier than 2026-08-27 09:00 | Дедов В | 1h | 1h |
| 238 | 1.106 | **продумать как сделать герметичную крышку на смесителе сухого гидрализата** | 72.25d | 2026-08-27 09:00 A | 2026-11-18 11:00 |  | 86% | 10.26d | 80.34d |  |  | 18.08h | 16.08h |
| 239 | 1.106.1 | печать уплотненителей крышек | 4h | 2026-09-28 09:00 A | 2026-09-28 13:00 A |  | 100% |  |  | start no earlier than 2026-09-28 09:00 | Домоводов К | 4h | 4h |
| 240 | 1.106.2 | контроль доставка резинка упл | 5min | 2026-10-28 09:00 A | 2026-10-28 09:05 A |  | 100% |  |  | start no earlier than 2026-10-28 09:00 | Зорькин В | 0.08h | 0.08h |
| 241 | 1.106.3 | изготовить крышку (расскажу по телефону) | 4h | 2026-08-27 09:00 A | 2026-08-27 13:00 A |  | 100% |  |  | start no earlier than 2026-08-27 09:00 | Бобренок В; Шуранов Ю | 8h | 8h |
| 242 | 1.106.4 | изготовить крышку для 2 линии (как сделал Слава) | 4h | 2026-09-01 09:00 A | 2026-09-01 13:00 A |  | 100% |  |  | start no earlier than 2026-09-01 09:00 | Макаревич А | 4h | 4h |
| 243 | 1.106.5 | установка на струбцинах с уплотнителями | 2h | 2026-11-18 09:00 | 2026-11-18 11:00 | 239, 240 |  |  | 80.34d | start no earlier than 2026-11-18 09:00 | Бундин В | 2h |  |
| 244 | 1.107 | **метал от тенов печи, устранить причину** | 15.38d? | 2026-08-24 09:00 A | 2026-09-11 12:00 A |  | 100% |  |  |  |  | 5.42h | 5.42h |
| 245 | 1.107.1 | выяснить сгорел тен русский или китайский (будет ночью остановка) | 15min | 2026-08-27 09:00 A | 2026-08-27 09:15 A |  | 100% |  |  | start no earlier than 2026-08-27 09:00 | Бобренок В | 0.25h | 0.25h |
| 246 | 1.107.2 | вскрыть 2 зону и посмотреть какой тен (мойка) | 1h | 2026-08-31 09:00 A | 2026-08-31 10:00 A |  | 100% |  |  | start no earlier than 2026-09-02 09:00 | Некрасов А | 1h | 1h |
| 247 | 1.107.3 | осмотр состояния тенов/ планирование замены | 10min | 2026-08-27 09:00 A | 2026-08-27 09:10 A |  | 100% |  |  | start no earlier than 2026-08-27 09:00 | Бобренок В | 0.17h | 0.17h |
| 248 | 1.107.4 | выяснить статус поставки тенов из китая | 1h | 2026-08-24 09:00 A | 2026-08-24 10:00 A |  | 100% |  |  | start no earlier than 2026-08-24 09:00 | Шуранов Ю | 1h | 1h |
| 249 | 1.107.5 | замена заброкованных осмотром тенов | 3h? | 2026-09-11 09:00 A | 2026-09-11 12:00 A |  | 100% |  |  | start no earlier than 2026-09-11 09:00 | Тимофеев В | 3h | 3h |
| 250 | 1.108 | замена плата 485 в контроллере 2 линия | 1h | 2026-08-21 09:00 A | 2026-08-21 10:00 A |  | 100% |  |  | start no earlier than 2026-08-21 09:00 | Дедов В | 1h | 1h |
| 251 | 1.109 | перемонтаж частотный привод сух гидролизат | 2h | 2026-09-02 09:00 A | 2026-09-02 11:00 A |  | 100% |  |  | start no earlier than 2026-09-04 09:00 | Некрасов А; Дедов В | 4h | 4h |
| 252 | 1.110 | поменять светильник где вывозят готовую продукцию (с люлки) | 2h | 2026-08-31 09:00 A | 2026-08-31 11:00 A |  | 100% |  |  | start no earlier than 2026-08-31 09:00 | Тимофеев В; Бундин В | 4h | 4h |
| 253 | 1.111 | на нотис настроить кнопку, чтобы работала в цикле | 1h | 2026-08-20 09:00 A | 2026-08-20 10:00 A |  | 100% |  |  | start no earlier than 2026-08-20 09:00 | Дедов В | 1h | 1h |
| 254 | 1.112 | изготовление герметичной крышки под мойкой экструдера (объясню по телефону) занкрепить на анкера | 2h | 2026-08-19 08:00 A | 2026-08-19 11:00 A |  | 100% |  |  | start no earlier than 2026-08-19 08:00 | Бобренок В | 2h | 2h |
| 255 | 1.113 | **проверка пылесоса, почему не стартует (в слесарке)** | 1d? | 2026-08-25 09:00 A | 2026-08-25 18:00 A |  | 100% |  |  |  | Бобренок В | 16h | 16h |
| 256 | 1.113.1 | заказать двигатель и выяснить на гарантии он или нет | 1d? | 2026-08-25 09:00 A | 2026-08-25 18:00 A |  | 100% |  |  | start no earlier than 2026-08-25 08:00 | Шуранов Ю | 8h | 8h |
| 257 | 1.114 | ремонт свет в раздевалке | 30min | 2026-08-14 09:00 A | 2026-08-14 09:30 A |  | 100% |  |  | start no earlier than 2026-08-14 09:00 | Бундин В | 0.5h | 0.5h |
| 258 | 1.115 | стиральная машинка проверка насоса слива, разборка, фото шильдик. Не качает. | 2h | 2026-08-15 09:00 A | 2026-08-17 11:00 A |  | 100% |  |  | start no earlier than 2026-08-15 09:00 | Бундин В | 2h | 2h |

| ID | WBS | Task | Type | Duration | Start | Finish | Predecessors | Complete | Constraint | Resources | Work | Actual work |
| --- | --- | --- | --- | --- | --- | --- | --- | --- | --- | --- | --- | --- |
| 259 | 1.116 | **настройка пробники на толстую цветную пленку** |  | 9.38d? | 2026-08-14 09:00 A | 2026-08-27 12:00 A |  | 100% |  |  | 25.25h | 25.25h |
| 260 | 1.116.1 | тест пленки на пробнике с Луговских В в 11 00 |  | 1h | 2026-08-14 09:00 A | 2026-08-14 10:00 A |  | 100% | start no earlier than 2026-08-14 09:00 | Тимофеев В | 1h | 1h |
| 261 | 1.116.2 | установить протяжной ролик к турбе от ТЕКО 1.5 с синего,снять с синего примерка |  | 2h | 2026-08-17 09:00 A | 2026-08-17 11:00 A |  | 100% | start no earlier than 2026-08-17 09:00 | Тимофеев В | 2h | 2h |
| 262 | 1.116.3 | настройка пробника с режимом фотометки |  | 1h | 2026-08-27 09:00 A | 2026-08-27 10:00 A |  | 100% | start no earlier than 2026-08-27 09:00 | Дедов В | 1h | 1h |
| 263 | 1.116.4 | получить пневмоцилиндр |  | 15min | 2026-08-20 09:00 A | 2026-08-20 09:15 A |  | 100% | start no earlier than 2026-08-20 09:00 | Тимофеев В | 0.25h | 0.25h |
| 264 | 1.116.5 | изготовление крепления вспомогательной протяжки |  | 6h | 2026-08-21 09:00 A | 2026-08-21 16:00 A |  | 100% | start no earlier than 2026-08-21 09:00 | Тимофеев В | 6h | 6h |
| 265 | 1.116.6 | подключение частотника через реле от двигателя протяжки (спросить Константина) |  | 1d? | 2026-08-25 09:00 A | 2026-08-25 18:00 A |  | 100% | start no earlier than 2026-08-25 08:00 | Бундин В | 8h | 8h |
| 266 | 1.116.7 | настройка частотника для работы пробника |  | 3h | 2026-08-27 09:00 A | 2026-08-27 12:00 A |  | 100% | start no earlier than 2026-08-27 09:00 | Тимофеев В; Шуранов Ю | 6h | 6h |
| 267 | 1.116.8 | жалобы, что пробники бьют периодически током- проверить соединения, контакты и т.д. |  | 1h | 2026-08-26 08:00 A | 2026-08-26 10:00 A |  | 100% | start no earlier than 2026-08-26 08:00 | Бобренок В | 1h | 1h |
| 268 | 1.117 | настройка параметров ЧП сухой ГДЗ сбиты, переставлен с линии 2. Снял Слава, найти. Настройка в птц |  | 15min | 2026-08-20 09:00 A | 2026-08-20 09:15 A |  | 100% | start no earlier than 2026-08-20 09:00 | Дедов В | 0.25h | 0.25h |
| 269 | 1.118 | **ТЕКО ремонт кнопки, которую снял Бобренок В , вернуть то что снял с 3ц** |  | 19.12d | 2026-08-13 09:00 A | 2026-09-08 10:00 A |  | 100% |  |  | 2.75h | 2.75h |
| 270 | 1.118.1 | осмотр |  | 30min | 2026-08-13 09:00 A | 2026-08-13 09:30 A |  | 100% | start no earlier than 2026-08-13 09:00 | Домоводов К | 0.5h | 0.5h |
| 271 | 1.118.2 | заявка в ТЕКО платы |  | 30min | 2026-08-18 09:00 A | 2026-08-18 09:30 A | 270 | 100% | start no earlier than 2026-08-18 09:00 | Зорькин В | 0.5h | 0.5h |
| 272 | 1.118.3 | контроль поставки |  | 15min | 2026-09-04 09:00 A | 2026-09-04 09:15 A | 271FS+10d | 100% | start no earlier than 2026-09-04 09:00 | Зорькин В | 0.25h | 0.25h |
| 273 | 1.118.4 | монтаж платы на место |  | 1h | 2026-09-08 09:00 A | 2026-09-08 10:00 A | 272FS+1d | 100% | start no earlier than 2026-09-09 09:00 | Тимофеев В | 1h | 1h |
| 274 | 1.118.5 | Вернуть голову с восстановленной клавиатурой на НОТИС в 3 цех |  | 30min | 2026-09-08 09:00 A | 2026-09-08 09:30 A |  | 100% | start no earlier than 2026-09-09 09:00 | Тимофеев В | 0.5h | 0.5h |
| 275 | 1.119 | установить вент решетки на трассу кондиционера |  | 30min | 2026-08-12 09:00 A | 2026-08-12 09:30 A |  | 100% | start no earlier than 2026-08-12 09:00 | Труфанов А; Некрасов А | 1h | 1h |
| 276 | 1.120 | течь сливной трубы кондиционара править трассу |  | 2h | 2026-08-12 09:00 A | 2026-08-12 11:00 A |  | 100% | start no earlier than 2026-08-12 09:00 | Труфанов А; Некрасов А | 4h | 4h |
| 277 | 1.121 | слить конденсат и чистка фильтров, продуть радиаторы компрессора | manual | 2h | 2026-08-09 09:00 A | 2026-08-09 11:00 A |  | 100% | start no earlier than 2026-08-09 09:00 | Бундин В | 2h | 2h |
| 278 | 1.122 | заменить камеру над квадропаком (слева) -камера у нас в слесарке, взять в помощь оператора | manual | 1h | 2026-08-09 09:00 A | 2026-08-09 10:00 A |  | 100% | start no earlier than 2026-08-09 09:00 | Бундин В | 1h | 1h |
| 279 | 1.123 | дверь тяжело открывается в гидрализаторную (попробовать поправить, задевает металл-металл) |  | 1h | 2026-08-06 09:00 A | 2026-08-06 10:00 A |  | 100% | start no earlier than 2026-08-06 08:00 | Труфанов А | 1h | 1h |
| 280 | 1.124 | заменить плафон в душе | manual | 1h | 2026-08-06 09:00 A | 2026-08-06 10:00 A |  | 100% | start no earlier than 2026-08-06 09:00 | Бундин В | 1h | 1h |
| 281 | 1.125 | ТО пробники и Теко 0,4 (чистка тен, ножей, смазка) |  | 4h | 2026-08-05 08:00 A | 2026-08-05 13:00 A |  | 100% | start no earlier than 2026-08-05 08:00 | Макаревич А | 4h | 4h |
| 282 | 1.126 | **палетообмостчик монтаж в 1ц** |  | 62.62d | 2026-08-12 09:00 A | 2026-10-26 15:00 A |  | 100% |  |  | 16.25h | 16.25h |
| 283 | 1.126.1 | получить договор + счет |  | 1h | 2026-08-12 09:00 A | 2026-08-12 10:00 A |  | 100% | start no earlier than 2026-08-12 09:00 | Зорькин В | 1h | 1h |

| ID | WBS | Task | Type | Duration | Start | Finish | Predecessors | Complete | Actual finish | Constraint | Resources | Work | Actual work |
| --- | --- | --- | --- | --- | --- | --- | --- | --- | --- | --- | --- | --- | --- |
| 284 | 1.126.2 | **согласвоание договор** |  | 2.89d | 2026-08-12 10:00 A | 2026-08-17 09:05 A | 283 | 100% |  |  |  | 0.17h | 0.17h |
| 285 | 1.126.2.1 | передать Маше |  | 5min | 2026-08-12 10:00 A | 2026-08-12 10:05 A |  | 100% |  | start no earlier than 2026-08-12 09:00 | Домоводов К | 0.08h | 0.08h |
| 286 | 1.126.2.2 | контроль |  | 5min | 2026-08-17 09:00 A | 2026-08-17 09:05 A | 285FS+3d | 100% |  | start no earlier than 2026-08-17 09:00 | Домоводов К | 0.08h | 0.08h |
| 287 | 1.126.3 | оплата подать счет | milestone | 0d | 2026-08-12 09:00 A | 2026-08-12 09:00 A |  | 100% |  | start no earlier than 2026-08-12 09:00 | Домоводов К |  |  |
| 288 | 1.126.4 | доставка конетроль |  | 5min | 2026-09-01 09:00 A | 2026-09-01 09:05 A |  | 100% |  | start no earlier than 2026-09-01 09:00 | Зорькин В | 0.08h | 0.08h |
| 289 | 1.126.5 | прокинуть кабель для подключения обмотчика |  | 2h | 2026-10-26 09:00 A | 2026-10-26 11:00 A |  | 100% |  | start no earlier than 2026-10-26 09:00 | Тимофеев В; Николаев; Бундин В | 6h | 6h |
| 290 | 1.126.6 | монтаж |  | 3h | 2026-10-26 11:00 A | 2026-10-26 15:00 A | 289 | 100% |  | start no earlier than 2026-10-23 09:00 | Тимофеев В; Николаев; Бундин В | 9h | 9h |
| 291 | 1.127 | подключить розетку на правой ноге квадропака (отключить квадропак на 5 минут) |  | 2h | 2026-08-11 09:00 A | 2026-08-11 11:00 A |  | 100% |  | start no earlier than 2026-08-11 09:00 | Бобренок В | 2h | 2h |
| 292 | 1.128 | **перенос вентилятор охладителя линия2 в реверс, убрать шкаф** |  | 24.12d | 2026-08-18 09:00 A | 2026-09-16 10:00 A |  | 100% |  |  |  | 38.25h | 38.25h |
| 293 | 1.128.1 | проектирование рамы |  | 2d | 2026-08-19 09:00 A | 2026-08-20 18:00 A |  | 100% |  | start no earlier than 2026-08-19 09:00 | Зорькин В | 16h | 16h |
| 294 | 1.128.2 | чертеж рамы под вентилятор |  | 2h | 2026-08-18 09:00 A | 2026-08-18 11:00 A |  | 100% |  | start no earlier than 2026-08-18 09:00 | Зорькин В; Домоводов К | 4h | 4h |
| 295 | 1.128.3 | заявка вент фитинги |  | 1h | 2026-08-21 09:00 A | 2026-08-21 10:00 A | 294 | 100% |  | start no earlier than 2026-08-21 09:00 | Зорькин В | 1h | 1h |
| 296 | 1.128.4 | конроль поставки |  | 15min | 2026-09-09 09:00 A | 2026-09-09 09:15 A | 295FS+10d | 100% |  | start no earlier than 2026-09-09 09:00 | Зорькин В | 0.25h | 0.25h |
| 297 | 1.128.5 | сборка рама |  | 4h | 2026-09-07 09:00 A | 2026-09-07 13:00 A |  | 100% |  | start no earlier than 2026-09-07 09:00 | Некрасов А; Труфанов А | 8h | 8h |
| 298 | 1.128.6 | модернизация венттилятора/монтаж вентилляции |  | 4h | 2026-09-11 09:00 A | 2026-09-11 13:00 A | 297 | 100% |  | start no earlier than 2026-09-11 09:00 | Некрасов А; Труфанов А | 8h | 8h |
| 299 | 1.128.7 | Подключение улитки, монтаж щитка к стене |  | 1h | 2026-09-16 09:00 A | 2026-09-16 10:00 A |  | 100% |  | start no earlier than 2026-09-16 09:00 | Макаревич А | 1h | 1h |
| 300 | 1.129 | шум зл двигателя 2 линия / смазка |  | 1h | 2026-08-10 08:00 A | 2026-08-10 10:00 A |  | 100% |  | start no earlier than 2026-08-10 08:00 | Тимофеев В | 1h | 1h |
| 301 | 1.130 | натяжка транспортер №2 линия 2 |  | 2h | 2026-08-12 09:00 A | 2026-08-12 11:00 A |  | 100% |  | start no earlier than 2026-08-12 09:00 | Тимофеев В | 2h | 2h |
| 302 | 1.131 | монтаж- подключение внутреннего блока кондиционера |  | 2h | 2026-08-05 09:00 A | 2026-08-05 11:00 A |  | 100% |  | start no earlier than 2026-08-05 09:00 | Труфанов А; Тимофеев В | 4h | 4h |
| 303 | 1.132 | **теко 0,4 -восстановить или заменить блок для тепловухи** |  | 1.12d? | 2026-08-04 09:00 A | 2026-08-05 10:00 |  | 100% | 2026-08-05 18:00 |  | Макаревич А | 17h | 17h |
| 304 | 1.132.1 | проверить подключение транспортера и тепловуху |  | 1d? | 2026-08-05 09:00 A | 2026-08-05 18:00 A |  | 100% |  | start no earlier than 2026-08-05 09:00 | Шуранов Ю | 8h | 8h |
| 305 | 1.133 | замена перегоревших светильников, монтаж доп. Светильников (Шуранов- покажу) |  | 4h | 2026-08-05 09:00 A | 2026-08-05 13:00 A |  | 100% |  | start no earlier than 2026-08-12 09:00 | Труфанов А; Тимофеев В | 8h | 8h |
| 306 | 1.134 | включить мухоловку 1 линия экструдер | manual | 0.5h | 2026-08-02 09:00 A | 2026-08-02 09:30 A |  | 100% |  | start no earlier than 2026-08-02 09:00 | Бобренок В | 0.5h | 0.5h |
| 307 | 1.135 | пропадает питание на весах смесителя 2 линия- проверить | manual | 1h | 2026-08-01 09:00 A | 2026-08-01 10:00 A |  | 100% |  | start no earlier than 2026-08-01 09:00 | Бундин В | 1h | 1h |
| 308 | 1.136 | эксперимент с лейкой жиры |  | 2h | 2026-08-06 09:00 A | 2026-08-06 11:00 A |  | 100% |  | start no earlier than 2026-08-07 09:00 | Тимофеев В | 2h | 2h |
| 309 | 1.137 | камера над компрессором снять и поменять (камеры у нас в кабинете) |  | 1h | 2026-08-03 09:00 A | 2026-08-03 10:00 A |  | 100% |  | start no earlier than 2026-08-03 09:00 | Макаревич А; Тимофеев В | 2h | 2h |
| 310 | 1.138 | на мезонине смотрит на квадропак, поменять и сделать чуть ниже обзор |  | 1h | 2026-08-03 09:00 A | 2026-08-03 10:00 A |  | 100% |  | start no earlier than 2026-08-03 09:00 | Макаревич А; Тимофеев В | 2h | 2h |
| 311 | 1.139 | камера 1 линия повернуть чуть правее и приподнять |  | 1h | 2026-08-03 09:00 A | 2026-08-03 10:00 A |  | 100% |  | start no earlier than 2026-08-03 09:00 | Макаревич А; Тимофеев В | 2h | 2h |
| 312 | 1.140 | камера на углу, где вывозят готовую продукцию с люльки поменять (камеры у нас в кабинете) |  | 2h | 2026-08-03 09:00 A | 2026-08-03 11:00 A |  | 100% |  | start no earlier than 2026-08-03 09:00 | Макаревич А; Тимофеев В | 4h | 4h |
| 313 | 1.141 | повесить камеру над входом в фасовку, чтобы смотрела на коридор и как обрабатывают руки, монтаж кабеля |  | 3h | 2026-08-03 09:00 A | 2026-08-03 12:00 A |  | 100% |  | start no earlier than 2026-08-03 09:00 | Макаревич А; Тимофеев В | 6h | 6h |

| ID | WBS | Task | Type | Duration | Start | Finish | Predecessors | Complete | Constraint | Resources | Work | Actual work |
| --- | --- | --- | --- | --- | --- | --- | --- | --- | --- | --- | --- | --- |
| 314 | 1.142 | **снять камеру зона экструдера и повесить на жирах со стороны экструдера, монтаж кабель** |  | 0.12d | 2026-09-09 09:00 A | 2026-09-09 10:00 A |  | 100% |  |  | 2h | 2h |
| 315 | 1.142.1 | на мойке попробовать снять камеру |  | 1h | 2026-09-09 09:00 A | 2026-09-09 10:00 A |  | 100% | start no earlier than 2026-09-09 09:00 | Труфанов А; Некрасов А | 2h | 2h |
| 316 | 1.143 | открутить полочку на столе на жирах, сделать ребра жесткости |  | 1h | 2026-07-31 09:00 A | 2026-07-31 10:00 A |  | 100% | start no earlier than 2026-07-31 08:00 | Бундин В | 1h | 1h |
| 317 | 1.144 | слив конденсата с компрессора и продуть радиаторы и фильтры |  | 1h | 2026-07-31 08:00 A | 2026-07-31 10:00 A |  | 100% | start no earlier than 2026-07-31 08:00 | Тимофеев В | 1h | 1h |
| 318 | 1.145 | Ревизия головы от Нотис/заключение |  | 1h | 2026-07-27 08:00 A | 2026-07-27 10:00 A |  | 100% | start no earlier than 2026-07-27 08:00 | Дедов В | 1h | 1h |
| 319 | 1.146 | Снять клавиатуру с головы нотис, подготовить ее к замене лежит на верстаке |  | 30min | 2026-07-29 08:00 A | 2026-07-29 09:30 A |  | 100% | start no earlier than 2026-07-29 08:00 | Дедов В | 0.5h | 0.5h |
| 320 | 1.147 | Ремонт клавиатуры от головы нотис, клаву получить на складе, голову взять у нас в кабинете |  | 1h | 2026-09-01 09:00 A | 2026-09-01 10:00 A |  | 100% | start no earlier than 2026-09-01 08:00 | Бундин В | 1h | 1h |
| 321 | 1.148 | **ремонт кондиционер зона фасовки** |  | 0.5d | 2026-07-16 09:00 A | 2026-07-16 13:00 A |  | 100% |  |  | 6h | 6h |
| 322 | 1.148.1 | демонтаж внутреннего блока |  | 2h | 2026-07-16 09:00 A | 2026-07-16 11:00 A |  | 100% | start no earlier than 2026-07-16 09:00 | Некрасов А; Труфанов А | 4h | 4h |
| 323 | 1.148.2 | разборка, отделить испаритель от рамы |  | 1h | 2026-07-16 11:00 A | 2026-07-16 12:00 A | 322 | 100% | start no earlier than 2026-07-15 09:00 | Бундин В | 1h | 1h |
| 324 | 1.148.3 | опресовка в воде |  | 1h | 2026-07-16 12:00 A | 2026-07-16 13:00 A | 323 | 100% | start no earlier than 2026-07-15 09:00 | Бундин В | 1h | 1h |
| 325 | 1.149 | редуктор конвейера выгрузки пакетов квадропак -> обеспечить гибкое соединеине к раме, жесткое будет ломать либо вал либо редутор |  | 2h | 2026-07-16 09:00 A | 2026-07-16 11:00 A |  | 100% | start no earlier than 2026-07-16 09:00 | Некрасов А | 2h | 2h |
| 326 | 1.150 | монтаж светильник под площадку дозатора квадропака |  | 4h | 2026-07-10 09:00 A | 2026-07-10 13:00 A |  | 100% | start no earlier than 2026-07-10 09:00 | Бобренок В | 4h | 4h |
| 327 | 1.151 | **замена вентилятор вытяжка с экструдеров** |  | 2.25d | 2026-07-13 09:00 A | 2026-07-15 11:00 A |  | 100% |  |  | 13h | 13h |
| 328 | 1.151.1 | подключение воздуховоды |  | 4h | 2026-07-13 09:00 A | 2026-07-13 13:00 A |  | 100% | start no earlier than 2026-07-13 09:00 | Некрасов А; Бундин В | 8h | 8h |
| 329 | 1.151.2 | установить крыльчатку на мотор |  | 1h | 2026-07-14 09:00 A | 2026-07-14 10:00 A |  | 100% | start no earlier than 2026-07-14 08:00 | Труфанов А | 1h | 1h |
| 330 | 1.151.3 | устарнить причину вибрации мотора |  | 2h | 2026-07-15 09:00 A | 2026-07-15 11:00 A |  | 100% | start no earlier than 2026-07-15 09:00 | Некрасов А; Труфанов А | 4h | 4h |
| 331 | 1.152 | **сборка дозатор на квадропак** |  | 84.25d | 2026-07-09 08:00 A | 2026-10-22 11:00 A |  | 100% |  |  | 74.83h | 74.83h |
| 332 | 1.152.1 | тест сублиматов №2 1,5 |  | 6h | 2026-10-21 09:00 A | 2026-10-21 16:00 A |  | 100% | start no earlier than 2026-10-21 09:00 | Зорькин В; Труфанов А | 12h | 12h |
| 333 | 1.152.2 | тест сублиматов №2 0,4 |  | 2h | 2026-10-22 09:00 A | 2026-10-22 11:00 A |  | 100% | start no earlier than 2026-10-22 08:00 | Зорькин В; Труфанов А | 4h | 4h |
| 334 | 1.152.3 | установить переключатель блокировки сброса дозатором |  | 30min | 2026-08-15 09:00 A | 2026-08-17 09:30 A |  | 100% | start no earlier than 2026-08-15 09:00 | Труфанов А | 0.5h | 0.5h |
| 335 | 1.152.4 | упорядочить схему |  | 30min | 2026-08-15 09:00 A | 2026-08-17 09:30 A |  | 100% | start no earlier than 2026-08-15 09:00 | Труфанов А | 0.5h | 0.5h |
| 336 | 1.152.5 | транспортировка дозатора в слесарку |  | 1h | 2026-08-04 08:00 A | 2026-08-04 10:00 A |  | 100% | start no earlier than 2026-08-04 08:00 | Труфанов А; Тимофеев В | 2h | 2h |
| 337 | 1.152.6 | установить розетку для дозатора. Вывод кабель сверлить платформу, что бы он был не под ногами и удобен при уборке |  | 2h | 2026-07-09 08:00 A | 2026-07-09 11:00 A |  | 100% | start no earlier than 2026-07-09 08:00 | Бобренок В | 2h | 2h |
| 338 | 1.152.7 | закрепить монитор фото Зорькин |  | 2h | 2026-07-09 08:00 A | 2026-07-09 11:00 A |  | 100% | start no earlier than 2026-07-09 08:00 | Бобренок В | 2h | 2h |
| 339 | 1.152.8 | подключение дозатора к машине / поиск кабеля в 3 цехе / изучение документации |  | 4h | 2026-07-14 09:00 A | 2026-07-14 13:00 A |  | 100% | start no earlier than 2026-07-14 09:00 | Труфанов А | 4h | 4h |
| 340 | 1.152.9 | подключить реле аварии дозатора паралельно датчику отсутствия пакета квадропака (схема прилагается) |  | 1h | 2026-08-12 09:00 A | 2026-08-12 10:00 A | 339 | 100% | start no earlier than 2026-08-12 09:00 | Труфанов А | 1h | 1h |
| 341 | 1.152.10 | калибровка весов и разгон наполнения, тестирование работы |  | 4h | 2026-08-12 09:00 A | 2026-08-12 13:00 A |  | 100% | start no earlier than 2026-08-12 09:00 | Труфанов А | 4h | 4h |
| 342 | 1.152.11 | монтаж кабель выравнивания потенциалов площадка дозатора и площадка квадропака |  | 30min | 2026-08-15 09:00 A | 2026-08-17 09:30 A |  | 100% | start no earlier than 2026-08-15 09:00 | Труфанов А | 0.5h | 0.5h |
| 343 | 1.152.12 | контроль поставки маткериал | milestone | 0d | 2026-08-27 09:00 A | 2026-08-27 09:00 A |  | 100% | start no earlier than 2026-08-27 09:00 | Зорькин В |  |  |
| 344 | 1.152.13 | тестирование весов / разгон |  | 2h | 2026-09-14 09:00 A | 2026-09-14 11:00 A | 343 | 100% | start no earlier than 2026-09-14 09:00 | Зорькин В | 2h | 2h |
| 345 | 1.152.14 | подключить синхронизацию пуска дозатора паралельно катушки открытия заслонки квадропака |  | 4h | 2026-08-04 11:00 A | 2026-08-04 16:00 A | 340 | 100% | start no earlier than 2026-07-16 09:00 | Труфанов А | 4h | 4h |
| 346 | 1.152.15 | монтаж перила на площадку - подготовка |  | 2h | 2026-08-14 09:00 A | 2026-08-14 11:00 A |  | 100% | start no earlier than 2026-08-14 09:00 | Тимофеев В | 2h | 2h |
| 347 | 1.152.16 | монтаж перила на площадку |  | 2h | 2026-08-17 09:00 A | 2026-08-17 11:00 A |  | 100% | start no earlier than 2026-08-17 09:00 | Тимофеев В; Бобренок В | 4h | 4h |
| 348 | 1.152.17 | сверлить для крепления перил |  | 2h | 2026-09-04 09:00 A | 2026-09-04 11:00 A | 344 | 100% | start no earlier than 2026-09-04 09:00 | Макаревич А | 2h | 2h |
| 349 | 1.152.18 | закрыть зад крышку |  | 20min | 2026-09-13 09:00 A | 2026-09-13 09:20 A |  | 100% | start no earlier than 2026-09-13 09:00 | Дедов В | 0.33h | 0.33h |
| 350 | 1.152.19 | сборка дозатор |  | 2h | 2026-09-25 09:00 A | 2026-09-25 11:00 A |  | 100% | start no earlier than 2026-09-28 09:00 | Труфанов А; Некрасов А | 4h | 4h |
| 351 | 1.152.20 | тест компонентов |  | 1h | 2026-09-23 09:00 A | 2026-09-23 10:00 A |  | 100% | start no earlier than 2026-09-23 09:00 | Зорькин В | 1h | 1h |
| 352 | 1.152.21 | установить на пружины раму дозатора + квеличить её массу |  | 4h | 2026-09-25 09:00 A | 2026-09-25 13:00 A |  | 100% | start no earlier than 2026-09-25 08:00 | Некрасов А; Труфанов А | 8h | 8h |
| 353 | 1.152.22 | покупка за нал / найти доп пружины |  | 1h | 2026-09-28 09:00 A | 2026-09-28 10:00 A |  | 100% | start no earlier than 2026-09-28 09:00 | Зорькин В | 1h | 1h |
| 354 | 1.152.23 | увеличить доп пружины, сжались ноль |  | 4h | 2026-10-01 09:00 A | 2026-10-01 13:00 A |  | 100% | start no earlier than 2026-10-02 09:00 | Некрасов А; Труфанов А | 8h | 8h |
| 355 | 1.152.24 | монтаж кнопка дозатор ОН/ОФФ |  | 1h | 2026-09-30 09:00 A | 2026-09-30 10:00 A | 349 | 100% | start no earlier than 2026-09-30 09:00 | Труфанов А | 1h | 1h |
| 356 | 1.152.25 | закрыть металлом пустые места между площадками квадропак и дозатор |  | 2h | 2026-10-07 09:00 A | 2026-10-07 11:00 A | 348 | 100% | start no earlier than 2026-10-07 09:00 | Тимофеев В | 2h | 2h |
| 357 | 1.152.26 | Сделать перегородки в бункер дозатора для увеличения объема секций |  | 3h | 2026-09-02 09:00 A | 2026-09-02 12:00 A |  | 100% | start no earlier than 2026-09-04 09:00 | Тимофеев В | 3h | 3h |
| 358 | 1.153 | навести сортиировка / порядок пандус 1ц |  | 4h | 2026-07-10 09:00 A | 2026-07-10 13:00 A |  | 100% | start no earlier than 2026-07-10 09:00 | Тимофеев В; Амрулин Р | 7h | 7h |

| ID | WBS | Task | Type | Duration | Start | Finish | Predecessors | Complete | Remaining | Actual start | Actual finish | Total slack | Free slack | Constraint | Resources | Work | Actual work |
| --- | --- | --- | --- | --- | --- | --- | --- | --- | --- | --- | --- | --- | --- | --- | --- | --- | --- |
| 359 | 1.154 | **Кондиционер зоны экструдера** |  | 0.5d | 2026-07-07 09:00 A | 2026-07-07 13:00 A |  | 100% |  |  |  |  |  |  |  | 4h | 4h |
| 360 | 1.154.1 | Чистка сливной магистрали |  | 4h | 2026-07-07 09:00 A | 2026-07-07 13:00 A |  | 100% |  |  |  |  |  | start no earlier than 2026-07-07 09:00 | Бундин В | 4h | 4h |
| 361 | 1.155 | **установить датчик давления на экструдер** |  | 49.53d | 2026-07-06 08:00 A | 2026-09-10 14:15 |  | 68% | 15.89d |  |  | 141.06d |  |  |  | 15.25h | 11h |
| 362 | 1.155.1 | контроль поставка фитинги |  | 15min | 2026-09-10 09:00 | 2026-09-10 09:15 |  |  |  |  |  | 141.06d | 0d | start no earlier than 2026-09-10 09:00 | Зорькин В | 0.25h |  |
| 363 | 1.155.2 | монтаж кронштейны для фиксации датчикоа давления 1+2 линия |  | 2h | 2026-07-10 09:00 A | 2026-07-10 11:00 A |  | 100% |  |  |  |  |  | start no earlier than 2026-07-10 09:00 | Макаревич А; Некрасов А | 4h | 4h |
| 364 | 1.155.3 | установить датчики давления через гидравлические шланги |  | 2h | 2026-07-06 08:00 A | 2026-07-06 11:00 A |  | 100% |  |  |  |  |  | start no earlier than 2026-07-06 08:00 | Дедов В | 2h | 2h |
| 365 | 1.155.4 | доработка кожух нож узла для закрытия |  | 2h | 2026-07-07 09:00 A | 2026-07-07 11:00 A |  | 100% |  |  |  |  |  | start no earlier than 2026-07-07 09:00 | Бобренок В | 2h | 2h |
| 366 | 1.155.5 | Прокинуть кабель ШВВП 2х0,75 от датчиков давления до регистраторов, сделать по красоте. |  | 3h | 2026-07-10 09:00 A | 2026-07-10 12:00 A |  | 100% |  |  |  |  |  | start no earlier than 2026-07-10 09:00 | Бобренок В | 3h | 3h |
| 367 | 1.155.6 | подключение датчиков давления к регистратору |  | 4h | 2026-09-10 09:15 | 2026-09-10 14:15 | 362 |  |  |  |  | 141.06d |  | start no earlier than 2026-09-02 09:00 | Домоводов К | 4h |  |
| 368 | 1.156 | печь №1 ревизия/замена перемычек |  | 4h | 2026-07-04 09:00 A | 2026-07-06 13:00 A |  | 100% |  |  |  |  |  | start no earlier than 2026-07-04 09:00 | Макаревич А | 4h | 4h |
| 369 | 1.157 | печь №2 ревизия/замена перемычек |  | 2h | 2026-07-16 09:00 A | 2026-07-16 11:00 A |  | 100% |  |  |  |  |  | start no earlier than 2026-07-16 09:00 | Бобренок В | 2h | 2h |
| 370 | 1.158 | **заменить амперметры неиспрвные на ШУ 1 и 2 линия (они на складе приехали сегодня новые посмотреть фото в выдаче)** |  | 1h? | 2026-09-04 09:00 | 2026-09-04 10:00 |  | 100% |  | 2026-09-05 09:00 | 2026-09-11 13:00 |  |  |  |  | 6h | 6h |
| 371 | 1.158.1 | монтаж - оказалить не те |  | 2h | 2026-09-05 09:00 A | 2026-09-05 11:00 A |  | 100% |  |  |  |  |  | start no earlier than 2026-09-05 09:00 | Дедов В | 2h | 2h |
| 372 | 1.158.2 | контроль датч тока | milestone | 0d | 2026-09-09 09:00 A | 2026-09-09 09:00 A |  | 100% |  |  |  |  |  | start no earlier than 2026-09-09 09:00 | Зорькин В |  |  |
| 373 | 1.158.3 | монтаж датчиковтока на 2л |  | 4h | 2026-09-11 09:00 A | 2026-09-11 13:00 A |  | 100% |  |  |  |  |  | start no earlier than 2026-09-11 09:00 | Макаревич А | 4h | 4h |
| 374 | 1.159 | **ставим 2 частотника на вентиляторы вытяжки с печек №1 и 2** |  | 0.5d | 2026-07-02 09:00 A | 2026-07-02 13:00 A |  | 100% |  |  |  |  |  |  |  | 4h | 4h |
| 375 | 1.159.1 | подключение к улиткам вытяжки 1 и 2 линия (помошника дадим) |  | 4h | 2026-07-02 09:00 A | 2026-07-02 13:00 A |  | 100% |  |  |  |  |  | start no earlier than 2026-07-02 09:00 | Тимофеев В | 4h | 4h |
| 376 | 1.160 | подключить частотный привод вентилятор на площадке жиротопки |  | 4h | 2026-07-14 09:00 A | 2026-07-14 13:00 A |  | 100% |  |  |  |  |  | start no earlier than 2026-07-14 09:00 | Дедов В | 4h | 4h |
| 377 | 1.161 | установка частотника для улитку в жиротопке (по телефону расскажу) |  | 4h | 2026-07-02 09:00 A | 2026-07-02 13:00 A |  | 100% |  |  |  |  |  | start no earlier than 2026-07-02 09:00 | Дедов В | 4h | 4h |
| 378 | 1.162 | заменить шнеки и гильзы на 2 линии (ставим усиленные, 2 гильзы) по уровню (операторы помогут) | manual | 10h | 2026-07-05 09:00 A | 2026-07-06 11:00 A |  | 100% |  |  |  |  |  | start no earlier than 2026-07-05 09:00 | Бундин В | 10h | 10h |
| 379 | 1.163 | **поменять фильтрующую ткань на фильтрах кондиционеров 1 цех** |  | 0.25d | 2026-07-01 09:00 A | 2026-07-01 11:00 A |  | 100% |  |  |  |  |  |  |  | 4h | 4h |
| 380 | 1.163.1 | установка фильтров закрываем внутренние блоки |  | 2h | 2026-07-01 09:00 A | 2026-07-01 11:00 A |  | 100% |  |  |  |  |  | start no earlier than 2026-07-01 09:00 | Макаревич А; Некрасов А | 4h | 4h |
| 381 | 1.164 | изготовление кронштейна для установки вентилятора крепим на место в зоне экструдера |  | 2h | 2026-06-30 09:00 A | 2026-06-30 11:00 A |  | 100% |  |  |  |  |  | start no earlier than 2026-06-30 09:00 | Некрасов А; Тимофеев В | 4h | 4h |
| 382 | 1.165 | снять на всех валах барабанов колеса, будем покрывать полиуретаном |  | 3h | 2026-06-29 09:00 A | 2026-06-29 12:00 A |  | 100% |  |  |  |  |  | start no earlier than 2026-06-29 09:00 | Бундин В | 3h | 3h |
| 383 | 1.166 | ревизия шестеренок питателя 2 линия, если нужно замена с зип- питатель синий склад |  | 3h | 2026-06-29 09:00 A | 2026-06-29 12:00 A |  | 100% |  |  |  |  |  | start no earlier than 2026-06-29 09:00 | Бундин В | 3h | 3h |
| 384 | 1.167 | повесить полочки у ОТК в кабинете- крепеж по гипсокортону у меня на столе |  | 1h | 2026-06-26 09:00 A | 2026-06-26 10:00 A |  | 100% |  |  |  |  |  | start no earlier than 2026-06-26 09:00 | Тимофеев В; Дедов В | 2h | 2h |
| 385 | 1.168 | нормально прикрутить светильник на стойке со сканером QR- кодов на фасовке, если нужно заменить на другой | manual | 2h | 2026-07-03 09:00 A | 2026-07-03 11:00 A |  | 100% |  |  |  |  |  | start no earlier than 2026-07-03 09:00 | Макаревич А | 2h | 2h |
| 386 | 1.169 | прикрутить розетку возле ШУ приточки |  | 1h | 2026-07-04 09:00 A | 2026-07-06 10:00 A |  | 100% |  |  |  |  |  | start no earlier than 2026-07-04 09:00 | Дедов В | 1h | 1h |
| 387 | 1.170 | заменить светильник 50Вт на жиротопке | manual | 2h | 2026-06-27 09:00 A | 2026-06-27 11:00 A |  | 100% |  |  |  |  |  | start no earlier than 2026-06-27 09:00 | Дедов В | 2h | 2h |
| 388 | 1.171 | мойка внутрених и внешних блоков керхером |  | 4h | 2026-06-24 09:00 A | 2026-06-24 13:00 A |  | 100% |  |  |  |  |  | start no earlier than 2026-06-24 09:00 | Тимофеев В; Дедов В | 8h | 8h |
| 389 | 1.172 | 1 линия средняя зона печи 115А |  | 2h | 2026-07-01 09:00 A | 2026-07-01 11:00 A |  | 100% |  |  |  |  |  | start no earlier than 2026-07-01 09:00 | Некрасов А | 2h | 2h |
| 390 | 1.173 | продуть внешний блок кондиционера (посередине) |  | 2h | 2026-06-24 09:00 A | 2026-06-24 11:00 A |  | 100% |  |  |  |  |  | start no earlier than 2026-06-24 09:00 | Тимофеев В | 2h | 2h |
| 391 | 1.174 | слить конденсат и продуть радиаторы на компрессоре |  | 1h | 2026-06-22 09:00 A | 2026-06-22 10:00 A |  | 100% |  |  |  |  |  | start no earlier than 2026-06-22 08:00 | Бундин В | 1h | 1h |
| 392 | 1.175 | взять ключи на складе и повесить возле каждого щитка | manual | 1h | 2026-07-05 09:00 A | 2026-07-05 10:00 A |  | 100% |  |  |  |  |  | start no earlier than 2026-07-05 09:00 | Бундин В | 1h | 1h |
| 393 | 1.176 | заменить монтажную коробку- пускатели улиток, зона экструдера | manual | 1h | 2026-06-30 09:00 A | 2026-06-30 10:00 A |  | 100% |  |  |  |  |  | start no earlier than 2026-06-30 09:00 | Бундин В | 1h | 1h |
| 394 | 1.177 | герметизация стыков в душевой женской, потечка воды | manual | 1h | 2026-06-21 09:00 A | 2026-06-21 10:00 A |  | 100% |  |  |  |  |  | start no earlier than 2026-06-21 09:00 | Бундин В | 1h | 1h |

| ID | WBS | Task | Duration | Start | Finish | Predecessors | Complete | Actual start | Actual finish | Constraint | Resources | Work | Actual work |
| --- | --- | --- | --- | --- | --- | --- | --- | --- | --- | --- | --- | --- | --- |
| 395 | 1.178 | **вернуть колбу уровня подачи воды на 2 линию** | 1h? | 2026-06-26 09:00 | 2026-06-26 10:00 |  | 100% | 2026-06-29 09:00 | 2026-06-29 18:00 |  |  | 8h | 8h |
| 396 | 1.178.1 | найти колбу | 1d? | 2026-06-29 09:00 A | 2026-06-29 18:00 A |  | 100% |  |  | start no earlier than 2026-06-29 09:00 | Шуранов Ю | 8h | 8h |
| 397 | 1.179 | отключить кондеры и продуть внешние блоки кондиционеров 1 ц. | 2h | 2026-06-20 09:00 A | 2026-06-22 11:00 A |  | 100% |  |  | start no earlier than 2026-06-20 09:00 | Бундин В | 2h | 2h |
| 398 | 1.180 | **померить верхний воздуховод и трассу для подключения новой улитки** | 1d? | 2026-06-22 09:00 A | 2026-06-22 18:00 A |  | 100% |  |  |  | Тимофеев В; Зорькин В | 24h | 24h |
| 399 | 1.180.1 | заказать переходник | 1d? | 2026-06-22 09:00 A | 2026-06-22 18:00 A |  | 100% |  |  | start no earlier than 2026-06-22 08:00 | Зорькин В | 8h | 8h |
| 400 | 1.181 | слив конденсата с компрессора и продуть радиаторы и фильтры | 1h | 2026-06-14 09:00 A | 2026-06-15 10:00 A |  | 100% |  |  | start no earlier than 2026-06-14 09:00 | Бобренок В | 1h | 1h |
| 401 | 1.182 | **закрепить редуктор к отводящему транспортеру** | 1d? | 2026-06-17 09:00 A | 2026-06-17 18:00 A |  | 100% |  |  |  | Некрасов А | 16h | 16h |
| 402 | 1.182.1 | сделать надежное крепление на мойке | 1d? | 2026-06-17 09:00 A | 2026-06-17 18:00 A |  | 100% |  |  | start no earlier than 2026-06-17 09:00 | Бундин В | 8h | 8h |
| 403 | 1.183 | заменить сальник на вакууматоре (редуктор) | 1h | 2026-06-11 09:00 A | 2026-06-11 10:00 A |  | 100% |  |  | start no earlier than 2026-06-11 09:00 | Тимофеев В | 1h | 1h |
| 404 | 1.184 | законтрогаить шпильки-ножки запайщиков | 1h | 2026-06-12 09:00 A | 2026-06-12 10:00 A |  | 100% |  |  | start no earlier than 2026-06-12 09:00 | Бундин В | 1h | 1h |
| 405 | 1.185 | настроить подачу масла на квадропаке по пневмо системе (спросить у Дедова) | 1h | 2026-06-10 09:00 A | 2026-06-10 10:00 A |  | 100% |  |  | start no earlier than 2026-06-10 09:00 | Труфанов А | 1h | 1h |
| 406 | 1.186 | **проверить давление в гидроаккумуляторе водоподготовки** | 0.25d | 2026-06-10 09:00 A | 2026-06-10 11:00 A |  | 100% |  |  |  | Дедов В | 4h | 4h |
| 407 | 1.186.1 | замена мембраны | 2h | 2026-06-10 09:00 A | 2026-06-10 11:00 A |  | 100% |  |  | start no earlier than 2026-06-10 09:00 | Дедов В | 2h | 2h |
| 408 | 1.187 | **готовить в зип сетку оборотную для печей (нижняя)** | 0.5d | 2026-06-09 09:00 A | 2026-06-09 13:00 A |  | 100% |  |  |  |  | 4.5h | 4.5h |
| 409 | 1.187.1 | проверка материал | 30min | 2026-06-09 09:00 A | 2026-06-09 09:30 A |  | 100% |  |  | start no earlier than 2026-06-09 09:00 | Тимофеев В | 0.5h | 0.5h |
| 410 | 1.187.2 | сборка | 4h | 2026-06-09 09:00 A | 2026-06-09 13:00 A |  | 100% |  |  | start no earlier than 2026-06-09 09:00 | Тимофеев В | 4h | 4h |
| 411 | 1.188 | подключить частотный привод насос жир 2 линия/ при остановке | 2h | 2026-06-07 09:00 A | 2026-06-08 11:00 A |  | 100% |  |  | start no earlier than 2026-06-07 09:00 | Дедов В | 2h | 2h |
| 412 | 1.189 | **жиротопка текет сальник насоса** | 36.03d? | 2026-06-28 09:00 A | 2026-08-18 09:15 A |  | 100% |  |  |  |  | 18.5h | 18.5h |
| 413 | 1.189.1 | замена насос из зип | 1h | 2026-06-28 09:00 A | 2026-06-29 10:00 A |  | 100% |  |  | start no earlier than 2026-06-28 09:00 | Дедов В | 1h | 1h |
| 414 | 1.189.2 | замена сальник на снятом насосе | 1h | 2026-06-28 10:00 A | 2026-06-29 10:00 A | 413 | 100% |  |  | start no earlier than 2026-06-17 09:00 | Дедов В | 1h | 1h |
| 415 | 1.189.3 | заказать | 1d? | 2026-06-29 09:00 A | 2026-06-29 18:00 A |  | 100% |  |  | start no earlier than 2026-06-29 09:00 | Шуранов Ю | 8h | 8h |
| 416 | 1.189.4 | ревизия прогресса утечки | 15min | 2026-08-05 09:00 A | 2026-08-05 09:15 A |  | 100% |  |  | start no earlier than 2026-08-05 09:00 | Дедов В | 0.25h | 0.25h |
| 417 | 1.189.5 | контроль наличия сальника | 15min | 2026-08-18 09:00 A | 2026-08-18 09:15 A |  | 100% |  |  | start no earlier than 2026-08-18 09:00 | Шуранов Ю | 0.25h | 0.25h |
| 418 | 1.189.6 | замена сальника | 1d? | 2026-08-05 09:00 A | 2026-08-05 18:00 A |  | 100% |  |  | start no earlier than 2026-08-05 09:00 | Дедов В | 8h | 8h |
| 419 | 1.190 | ремонт весов напольный (палетные) проверить кабель на обрыв | 3h | 2026-06-11 09:00 A | 2026-06-11 12:00 A |  | 100% |  |  | start no earlier than 2026-06-11 09:00 | Дедов В | 3h | 3h |
| 420 | 1.191 | печь №2 проверка токов, тен, замена | 2h | 2026-06-04 09:00 A | 2026-06-04 11:00 A |  | 100% |  |  | start no earlier than 2026-06-04 09:00 | Некрасов А; Бундин В | 4h | 4h |
| 421 | 1.192 | изготовление шторки после приемного лотка циклона | 2h | 2026-06-04 09:00 A | 2026-06-04 11:00 A |  | 100% |  |  | start no earlier than 2026-06-04 09:00 | Бундин В | 2h | 2h |

| ID | WBS | Task | Type | Duration | Start | Finish | Predecessors | Complete | Remaining | Total slack | Free slack | Constraint | Resources | Work | Actual work |
| --- | --- | --- | --- | --- | --- | --- | --- | --- | --- | --- | --- | --- | --- | --- | --- |
| 422 | 1.193 | **на аппликаторе настроить печать QR-кода на пакет, чтобы не размазывало (по тел. Объясню)** |  | 3.12d | 2026-06-04 09:00 A | 2026-06-09 10:00 A |  | 100% |  |  |  |  |  | 2h | 2h |
| 423 | 1.193.1 | тест (подключить доп. Датчик -настроить печать без размытия, картридж находиться у Луговских подписанный) |  | 1h | 2026-06-04 09:00 A | 2026-06-04 10:00 A |  | 100% |  |  |  | start no earlier than 2026-06-04 09:00 | Дедов В | 1h | 1h |
| 424 | 1.193.2 | тест |  | 1h | 2026-06-09 09:00 A | 2026-06-09 10:00 A |  | 100% |  |  |  | start no earlier than 2026-06-09 09:00 | Тимофеев В | 1h | 1h |
| 425 | 1.194 | целкает аппликатор -разобраться, устранить |  | 1h | 2026-06-03 08:00 A | 2026-06-03 10:00 A |  | 100% |  |  |  | start no earlier than 2026-06-03 08:00 | Дедов В | 1h | 1h |
| 426 | 1.195 | **установить резервную трубку/штангу с форсункой на подачу жира** |  | 31d | 2026-09-08 09:00 A | 2026-10-09 18:00 |  | 10% | 27.9d | 112.59d |  |  |  | 10h | 1h |
| 427 | 1.195.1 | проект-схема разработать |  | 1h | 2026-09-08 09:00 A | 2026-09-08 10:00 A |  | 100% |  |  |  | start no earlier than 2026-09-08 09:00 | Домоводов К | 1h | 1h |
| 428 | 1.195.2 | разработать спецкронштейн крепления 4х трубок |  | 1h | 2026-09-10 09:00 | 2026-09-10 10:00 |  |  |  | 132.47d | 19.88d | start no earlier than 2026-09-10 09:00 | Домоводов К | 1h |  |
| 429 | 1.195.3 | монтаж спец кронштенна |  | 1h | 2026-10-01 09:00 | 2026-10-01 10:00 | 428FS+1d |  |  | 112.59d | 0d | start no earlier than 2026-10-01 09:00 | Тимофеев В | 1h |  |
| 430 | 1.195.4 | заявка фитинги / тройники / краны / трубка |  | 1h | 2026-10-01 10:00 | 2026-10-01 11:00 | 427FS+1d, 429 |  |  | 112.59d | 0d | start no earlier than 2026-06-03 08:00 | Зорькин В | 1h |  |
| 431 | 1.195.5 | доставка контроль | milestone | 0d | 2026-10-07 11:00 | 2026-10-07 11:00 | 430FS+5d |  |  | 112.59d | 0d | start no earlier than 2026-06-03 08:00 | Зорькин В |  |  |
| 432 | 1.195.6 | сборка в мастерской |  | 4h | 2026-10-08 11:00 | 2026-10-08 16:00 | 431FS+1d |  |  | 112.59d | 0d | start no earlier than 2026-06-15 09:00 | Тимофеев В | 4h |  |
| 433 | 1.195.7 | монтаж на линию |  | 2h | 2026-10-09 16:00 | 2026-10-09 18:00 | 432FS+1d |  |  | 112.59d |  | start no earlier than 2026-06-03 08:00 | Тимофеев В | 2h |  |
| 434 | 1.196 | **Модернизация смесителей для автоматической подачи сырья из смесителей** |  | 14.02d | 2026-11-16 09:00 A | 2026-12-04 09:10 |  | 24% | 10.66d | 68.57d |  |  |  | 5.17h | 2h |
| 435 | 1.196.1 | Повторить заявку на комплектующие для автоматической подачи сырья из смесителей |  | 1h | 2026-11-16 09:00 A | 2026-11-16 10:00 A |  | 100% |  |  |  | start no earlier than 2026-11-16 08:00 | Дедов В; Зорькин В | 2h | 2h |
| 436 | 1.196.2 | контроль |  | 10min | 2026-12-04 09:00 | 2026-12-04 09:10 |  |  |  | 68.57d |  | start no earlier than 2026-12-04 09:00 | Зорькин В | 0.17h |  |
| 437 | 1.196.3 | монтаж |  | 3h | 2026-11-30 09:00 | 2026-11-30 12:00 |  |  |  | 72.22d |  | start no earlier than 2026-11-30 09:00 | Дедов В | 3h |  |
| 438 | 1.197 | **установить автоматику запуска шнека + смеситель по датчику уровня сырья в бункере экструдера** |  | 26d? | 2026-11-02 09:00 A | 2026-12-01 18:00 |  |  | 25.89d? | 70.59d |  |  |  | 19.17h | 0.08h |
| 439 | 1.197.1 | разработка схема / компановка (составить список материалов) |  | 1h | 2026-11-02 09:00 | 2026-11-02 10:00 |  |  |  | 96.22d | 0d | start no earlier than 2026-11-02 09:00 | Дедов В | 1h |  |
| 440 | 1.197.2 | заявка датчики / пускатели / эл щит |  | 2h | 2026-11-02 10:00 | 2026-11-02 12:00 | 439 |  |  | 96.22d |  | start no earlier than 2026-06-04 09:00 | Домоводов К | 2h |  |
| 441 | 1.197.3 | доставка контроль |  | 5min | 2026-11-09 12:00 A | 2026-11-09 12:05 A | 440FS+7d | 100% |  |  |  | start no earlier than 2026-06-03 08:00 | Зорькин В | 0.08h | 0.08h |
| 442 | 1.197.4 | контроль поставки |  | 5min | 2026-11-10 12:05 | 2026-11-10 12:10 | 441FS+1d |  |  | 86.2d | 15.6d | start no earlier than 2026-06-03 08:00 | Зорькин В | 0.08h |  |
| 443 | 1.197.5 | сборка ШУ |  | 1d? | 2026-11-30 09:00 | 2026-11-30 18:00 | 442 |  |  | 70.59d | 0d | start no earlier than 2026-11-30 09:00 | Дедов В | 8h |  |
| 444 | 1.197.6 | монтаж в линию |  | 1d? | 2026-12-01 09:00 | 2026-12-01 18:00 | 443 |  |  | 70.59d |  | start no earlier than 2026-06-03 08:00 | Дедов В | 8h |  |
| 445 | 1.198 | поставить на двигатели накопительных столов тепловые реле |  | 2h | 2026-06-15 09:00 | 2026-06-15 11:00 |  |  |  | 205.34d |  | start no earlier than 2026-06-15 09:00 | Дедов В | 2h |  |
| 446 | 1.199 | влагоотделитель крышки загрузки квадропак треснул- замена |  | 1h | 2026-06-10 09:00 | 2026-06-10 10:00 |  |  |  | 208.47d |  | start no earlier than 2026-06-10 09:00 | Дедов В | 1h |  |
| 447 | 1.200 | установка ПЧ на насос жира 2 линия |  | 2h | 2026-06-02 09:00 A | 2026-06-02 11:00 A |  | 100% |  |  |  | start no earlier than 2026-06-02 09:00 | Дедов В | 2h | 2h |
| 448 | 1.201 | установка ПЧ на барабаны жиров 1 и 2 линия |  | 2h | 2026-06-02 09:00 A | 2026-06-02 11:00 A |  | 100% |  |  |  | start no earlier than 2026-06-02 09:00 | Дедов В | 2h | 2h |

| ID | WBS | Task | Duration | Start | Finish | Predecessors | Complete | Remaining | Total slack | Constraint | Resources | Work | Actual work |
| --- | --- | --- | --- | --- | --- | --- | --- | --- | --- | --- | --- | --- | --- |
| 449 | 1.202 | **рассекатели после шлюзовика 1 и 2 линия сделать, чтобы корм равномерно ложился по поверхности сетки** | 5.25d | 2026-06-03 09:00 A | 2026-06-10 11:00 A |  | 100% |  |  |  |  | 11h | 11h |
| 450 | 1.202.1 | после обеда будет остановка 2 линия- модернизация рассекателя | 1h | 2026-06-03 09:00 A | 2026-06-03 10:00 A |  | 100% |  |  | start no earlier than 2026-06-03 09:00 | Бундин В | 1h | 1h |
| 451 | 1.202.2 | **установить зубчатую пластину для выравнивания слоя на входе в печь** | 5.25d | 2026-06-03 09:00 A | 2026-06-10 11:00 A |  | 100% |  |  |  |  | 10h | 10h |
| 452 | 1.202.2.1 | подготовиьт чертеж | 2h | 2026-06-03 09:00 A | 2026-06-03 11:00 A |  | 100% |  |  | start no earlier than 2026-06-03 08:00 | Домоводов К | 2h | 2h |
| 453 | 1.202.2.2 | изготовить | 6h | 2026-06-05 09:00 A | 2026-06-05 16:00 A | 452 | 100% |  |  | start no earlier than 2026-06-05 09:00 | Бундин В | 6h | 6h |
| 454 | 1.202.2.3 | монтаж | 2h | 2026-06-10 09:00 A | 2026-06-10 11:00 A | 453 | 100% |  |  | start no earlier than 2026-06-10 09:00 | Некрасов А | 2h | 2h |
| 455 | 1.203 | **монтаж 2х прожекторов на барабаны жиров** | 0.25d | 2026-06-02 09:00 A | 2026-06-02 11:00 A |  | 100% |  |  |  |  | 2h | 2h |
| 456 | 1.203.1 | подключить в ШУ самого транспортера на автомат | 2h | 2026-06-02 09:00 A | 2026-06-02 11:00 A |  | 100% |  |  | start no earlier than 2026-06-02 09:00 | Макаревич А | 2h | 2h |
| 457 | 1.204 | **проверка вентилятор упавший в зимний период. Тест на месте** | 6.25d | 2026-06-05 09:00 A | 2026-06-15 11:00 A |  | 100% |  |  |  |  | 10h | 10h |
| 458 | 1.204.1 | изготовить подиум под улитку | 6h | 2026-06-05 09:00 A | 2026-06-05 16:00 A |  | 100% |  |  | start no earlier than 2026-06-05 09:00 | Тимофеев В | 6h | 6h |
| 459 | 1.204.2 | перенос вентилятора | 2h | 2026-06-15 09:00 A | 2026-06-15 11:00 A |  | 100% |  |  | start no earlier than 2026-06-15 09:00 | Тимофеев В; Некрасов А | 4h | 4h |
| 460 | 1.205 | прачка 1ц замена светильник | 1h | 2026-05-29 09:00 A | 2026-05-29 10:00 A |  | 100% |  |  | start no earlier than 2026-05-29 08:00 | Бундин В | 1h | 1h |
| 461 | 1.206 | запайщик замена нихром | 1h | 2026-05-29 09:00 A | 2026-05-29 10:00 A |  | 100% |  |  | start no earlier than 2026-05-29 08:00 | Бундин В | 1h | 1h |
| 462 | 1.207 | устранить провисание патрубка подачи ГДЗ линия 2 | 1h | 2026-08-31 09:00 A | 2026-08-31 10:00 A |  | 100% |  |  | start no earlier than 2026-08-31 09:00 | Тимофеев В | 1h | 1h |
| 463 | 1.208 | крепеление РР магистраль ф20 воздух в склад гдз | 15min | 2026-05-27 09:00 A | 2026-05-27 09:15 A |  | 100% |  |  | start no earlier than 2026-05-27 09:00 | Бундин В | 0.25h | 0.25h |
| 464 | 1.209 | **перевод насосов ГДЗ на канистры с трассой на насос > 1/2** | 3.25d | 2026-05-28 09:00 A | 2026-06-02 11:00 |  | 50% | 1.62d | 214.34d |  |  | 4h | 2h |
| 465 | 1.209.1 | подготовка канистры установить штуцер, подготовить шланг + фитинги на насос | 2h | 2026-05-28 09:00 A | 2026-05-28 11:00 A |  | 100% |  |  | start no earlier than 2026-05-28 09:00 | Бундин В | 2h | 2h |
| 466 | 1.209.2 | монаж на линию 1 | 2h | 2026-06-02 09:00 | 2026-06-02 11:00 | 465 |  |  | 214.34d | start no earlier than 2026-06-02 09:00 | Бундин В | 2h |  |
| 467 | 1.210 | **с тена печей осыпается оребрение, попадая в продукт** | 10.5d | 2026-05-27 09:00 A | 2026-06-10 13:00 A |  | 100% |  |  |  |  | 11h | 11h |
| 468 | 1.210.1 | осмотр тенов печей линия 1 и линия 2 на предмет отслоения оребрения. Очистка / замена | 3h | 2026-05-27 09:00 A | 2026-05-27 12:00 A |  | 100% |  |  | start no earlier than 2026-05-27 09:00 | Некрасов А | 3h | 3h |
| 469 | 1.210.2 | замена неисправных тенов линия 2, по диагностике Некрасова 27.05 (токи) 2 линия | 4h | 2026-06-02 09:00 A | 2026-06-02 13:00 A |  | 100% |  |  | start no earlier than 2026-06-02 09:00 | Некрасов А | 4h | 4h |
| 470 | 1.210.3 | замена прогнувшихся тен | 4h | 2026-06-10 09:00 A | 2026-06-10 13:00 A |  | 100% |  |  | start no earlier than 2026-06-10 09:00 | Некрасов А | 4h | 4h |
| 471 | 1.211 | перенести частотный привод ШУ печи 1л для доступа обслуживания | 2h | 2026-06-02 09:00 A | 2026-06-02 11:00 A |  | 100% |  |  | start no earlier than 2026-06-02 09:00 | Дедов В | 2h | 2h |
| 472 | 1.212 | нет фазы линия 2 печь оперативно | 1h | 2026-05-26 09:00 A | 2026-05-26 10:00 A |  | 100% |  |  | start no earlier than 2026-05-26 09:00 | Тимофеев В; Бундин В | 2h | 2h |
| 473 | 1.213 | замена твердотельное реле фаза В 2шт (найти пробитый) | 30min | 2026-05-27 09:00 A | 2026-05-27 09:30 A |  | 100% |  |  | start no earlier than 2026-05-27 09:00 | Бундин В | 0.5h | 0.5h |
| 474 | 1.214 | выравнивание потенциалов ШУ тв реле печей 1 и 2 | 1h | 2026-05-27 09:00 A | 2026-05-27 10:00 A |  | 100% |  |  | start no earlier than 2026-05-27 09:00 | Бундин В | 1h | 1h |

| ID | WBS | Task | Type | Duration | Start | Finish | Predecessors | Complete | Constraint | Resources | Work | Actual work |
| --- | --- | --- | --- | --- | --- | --- | --- | --- | --- | --- | --- | --- |
| 475 | 1.215 | **заменить фитинги с гайками (они на складе) на жирах 1 + 2 линия** |  | 28d | 2026-05-27 09:00 A | 2026-07-04 11:00 A |  | 100% |  |  | 6.08h | 6.08h |
| 476 | 1.215.1 | доставка шланг 8х12мм. Контроль |  | 5min | 2026-05-27 09:00 A | 2026-05-27 09:05 A |  | 100% | start no earlier than 2026-05-27 09:00 | Шуранов Ю | 0.08h | 0.08h |
| 477 | 1.215.2 | замена 2 линия |  | 2h | 2026-05-27 09:00 A | 2026-05-27 11:00 A |  | 100% | start no earlier than 2026-05-27 09:00 | Тимофеев В | 2h | 2h |
| 478 | 1.215.3 | замена 1 линия |  | 2h | 2026-06-15 09:00 A | 2026-06-15 11:00 A |  | 100% | start no earlier than 2026-06-15 09:00 | Тимофеев В | 2h | 2h |
| 479 | 1.215.4 | проверить где не поставлены фитинги с гайками- поменять | manual | 2h | 2026-07-04 09:00 A | 2026-07-04 11:00 A |  | 100% | start no earlier than 2026-07-04 09:00 | Тимофеев В | 2h | 2h |
| 480 | 1.216 | подключить Sаvema на теко 0,4 через ИБП (ибп на складе) |  | 1h | 2026-05-26 09:00 A | 2026-05-26 10:00 A |  | 100% | start no earlier than 2026-05-26 09:00 | Дедов В | 1h | 1h |
| 481 | 1.217 | найти и закрутить мотор-редукторы на транспортерах и отписаться на каких были не прикручены и не законтрогаек. |  | 1h | 2026-05-25 09:00 A | 2026-05-25 10:00 A |  | 100% | start no earlier than 2026-05-25 09:00 | Макаревич А | 1h | 1h |
| 482 | 1.218 | транспортер с жиров на виброохладитель- поменять кнопку стоп 2 линия | manual | 1h | 2026-05-27 09:00 A | 2026-05-27 10:00 A |  | 100% | start no earlier than 2026-05-27 09:00 | Дедов В | 1h | 1h |
| 483 | 1.219 | демонтировать на накопительном столе квадропака силиконовую резинку по диаметру | manual | 1h | 2026-05-24 09:00 A | 2026-05-24 10:00 A |  | 100% | start no earlier than 2026-05-24 09:00 | Макаревич А | 1h | 1h |
| 484 | 1.220 | **конв №2 линия 2 нижний вал нет защиты подшипников (был фетр)** |  | 9.16d | 2026-08-19 09:00 A | 2026-09-01 10:15 A |  | 100% |  |  | 5.25h | 5.25h |
| 485 | 1.220.1 | разборка, ревизия, подбор / чертеж уплотнеия |  | 2h | 2026-08-26 09:00 A | 2026-08-26 11:00 A |  | 100% | start no earlier than 2026-08-26 09:00 | Тимофеев В | 2h | 2h |
| 486 | 1.220.2 | заявка уплотнение |  | 1h | 2026-08-19 09:00 A | 2026-08-19 10:00 A |  | 100% | start no earlier than 2026-08-19 09:00 | Шуранов Ю | 1h | 1h |
| 487 | 1.220.3 | контроль поставки |  | 15min | 2026-09-01 10:00 A | 2026-09-01 10:15 A | 486FS+10d | 100% | start no earlier than 2026-08-12 09:00 | Шуранов Ю | 0.25h | 0.25h |
| 488 | 1.220.4 | монтаж уплотнения |  | 2h | 2026-08-31 09:00 A | 2026-08-31 11:00 A | 487FS+1d | 100% | start no earlier than 2026-08-12 09:00 | Тимофеев В | 2h | 2h |
| 489 | 1.221 | вентилятор на охладителе верхний краний слишком большой - переделать крепление |  | 1h | 2026-08-26 09:00 A | 2026-08-26 10:00 A |  | 100% | start no earlier than 2026-08-26 09:00 | Тимофеев В | 1h | 1h |
| 490 | 1.222 | устанить утечку на мойке зона экструдера |  | 1h | 2023-03-10 09:00 A | 2023-03-10 10:00 A |  | 100% |  | Бобренок В | 1h | 1h |
| 491 | 1.223 | выдать шестигранные болты и шайбы на ножевой узел экструдерщикам (штук 20) |  | 1h | 2026-05-21 09:00 A | 2026-05-21 10:00 A |  | 100% | start no earlier than 2026-05-21 08:00 | Бундин В | 1h | 1h |
| 492 | 1.224 | приварить болты к заслонке подачи гранулы на квадропаке (остановить, с мастером согласовать) |  | 1h | 2026-05-26 09:00 A | 2026-05-26 10:00 A |  | 100% | start no earlier than 2026-05-26 09:00 | Бобренок В | 1h | 1h |
| 493 | 1.225 | увеличить диаметр отверстия, чтобы горловина подачи сух. Гидрализата проходила (жиротопка) |  | 1h | 2026-05-20 09:00 A | 2026-05-20 10:00 A |  | 100% | start no earlier than 2026-05-20 09:00 | Некрасов А | 1h | 1h |
| 494 | 1.226 | посмотреть приточку, выпадает часто в аварию по насосу |  | 2h | 2026-05-18 08:00 A | 2026-05-18 11:00 A |  | 100% | start no earlier than 2026-05-18 08:00 | Дедов В | 2h | 2h |
| 495 | 1.227 | замена светильника в зоне завоза навесок (работа на высоте) |  | 2h | 2026-05-15 09:00 A | 2026-05-15 11:00 A |  | 100% | start no earlier than 2026-05-15 09:00 | Некрасов А; Труфанов А | 4h | 4h |
| 496 | 1.228 | закрепить встиряхиватель полного пакета №1 квадропак |  | 1h | 2026-05-14 08:00 A | 2026-05-14 10:00 A |  | 100% | start no earlier than 2026-05-14 08:00 | Бобренок В | 1h | 1h |
| 497 | 1.229 | замена лампа светильник гардероб М = на короткий. |  | 1h | 2026-05-13 09:00 A | 2026-05-13 10:00 A |  | 100% | start no earlier than 2026-05-13 09:00 | Бундин В | 1h | 1h |
| 498 | 1.230 | устранить потерю мощности печи в 2х фазах |  | 2h | 2026-05-12 08:00 A | 2026-05-12 11:00 A |  | 100% | start no earlier than 2026-05-12 08:00 | Тимофеев В; Бобренок В | 4h | 4h |
| 499 | 1.231 | квадропак изготовить и заменить текстолит на термоноже |  | 2h | 2026-05-12 09:00 A | 2026-05-12 11:00 A |  | 100% | start no earlier than 2026-05-12 08:00 | Некрасов А | 2h | 2h |

| ID | WBS | Task | Type | Duration | Start | Finish | Predecessors | Complete | Constraint | Resources | Work | Actual work |
| --- | --- | --- | --- | --- | --- | --- | --- | --- | --- | --- | --- | --- |
| 500 | 1.232 | **бак стабилизации воды-утечка** |  | 0.25d | 2026-05-22 09:00 A | 2026-05-22 11:00 A |  | 100% |  | Тимофеев В | 4h | 4h |
| 501 | 1.232.1 | монтаж подачи воды 2 линия в прекондиционер |  | 2h | 2026-05-22 09:00 A | 2026-05-22 11:00 A |  | 100% | start no earlier than 2026-05-22 09:00 | Тимофеев В | 2h | 2h |
| 502 | 1.233 | **парогенератор 1ц ремонт по гарантии** |  | 30d? | 2026-04-27 09:00 A | 2026-06-05 18:00 A |  | 100% |  |  | 11.33h | 11.33h |
| 503 | 1.233.1 | отправить ПГ на ремонт орг курьера |  | 10min | 2026-04-27 09:00 A | 2026-04-27 09:10 A |  | 100% | start no earlier than 2026-04-27 08:00 | Шуранов Ю | 0.17h | 0.17h |
| 504 | 1.233.2 | контроль ремонт |  | 10min | 2026-05-04 09:10 A | 2026-05-04 09:20 A | 503FS+5d | 100% | start no earlier than 2026-04-27 08:00 | Шуранов Ю | 0.17h | 0.17h |
| 505 | 1.233.3 | нужно посмотреть парогенератор там релюха не щелкает- может разберешься, он находиться на складе у Веры |  | 2h | 2026-05-11 09:00 A | 2026-05-11 11:00 A |  | 100% | start no earlier than 2026-05-11 09:00 | Дедов В | 2h | 2h |
| 506 | 1.233.4 | орг ремонт по гарантии |  | 1h | 2026-05-13 09:00 A | 2026-05-13 10:00 A |  | 100% | start no earlier than 2026-05-13 09:00 | Шуранов Ю | 1h | 1h |
| 507 | 1.233.5 | контроль возврата |  | 1d? | 2026-06-05 09:00 A | 2026-06-05 18:00 A |  | 100% | start no earlier than 2026-06-05 09:00 | Шуранов Ю | 8h | 8h |
| 508 | 1.234 | проверить мотор-редуктор на накопительном столе фасовка и | manual | 4h | 2026-05-11 09:00 A | 2026-05-11 13:00 A |  | 100% | start no earlier than 2026-05-11 09:00 | Бундин В | 4h | 4h |
| 509 | 1.235 | прикрутить ножку на 2 столе (ножка у Луговских в кабинете) |  | 1h | 2026-05-12 09:00 A | 2026-05-12 10:00 A |  | 100% | start no earlier than 2026-05-12 08:00 | Бундин В | 1h | 1h |
| 510 | 1.236 | **отодвинуть миксер подачи сухого гидрализата, чтобы сыпал не на ребра барабана, а на обод выхода** |  | 0.38d | 2026-05-08 08:00 A | 2026-05-08 12:00 A |  | 100% |  |  | 3h | 3h |
| 511 | 1.236.1 | перекрутить платформу миксера подачи сухого гидрализата снизу, чтобы дуло не задевало барабан |  | 3h | 2026-05-08 08:00 A | 2026-05-08 12:00 A |  | 100% | start no earlier than 2026-05-08 08:00 | Макаревич А | 3h | 3h |
| 512 | 1.237 | монтаж светильник в районе ВРУ сверху (зона экструдера) |  | 2h | 2026-05-16 09:00 A | 2026-05-18 11:00 A |  | 100% | start no earlier than 2026-05-16 09:00 | Макаревич А | 2h | 2h |
| 513 | 1.238 | закрепить трубу п/п на фасовке в углу, где стеллаж на клипсы к стене |  | 1h | 2026-05-07 08:00 A | 2026-05-07 10:00 A |  | 100% | start no earlier than 2026-05-07 08:00 | Бобренок В | 1h | 1h |
| 514 | 1.239 | прикрутить пускатели запуска вытяжки перед лестницей на 2 этаж зона экструдера и розетки |  | 2h | 2026-05-06 08:00 A | 2026-05-06 11:00 A |  | 100% | start no earlier than 2026-05-06 08:00 | Бобренок В | 2h | 2h |
| 515 | 1.240 | нет напряжения в розетке для инсектицидного светильника, корридор где вывозят готовую продукцию |  | 1h | 2026-05-07 09:00 A | 2026-05-07 10:00 A |  | 100% | start no earlier than 2026-05-07 09:00 | Бобренок В | 1h | 1h |
| 516 | 1.241 | подключить через счетчик подачу жира |  | 2h | 2026-05-05 08:00 A | 2026-05-05 11:00 A |  | 100% | start no earlier than 2026-05-05 08:00 | Тимофеев В | 2h | 2h |
| 517 | 1.242 | **повесить на места светильники инсектицидные (замена ламп)** |  | 0.38d | 2026-05-05 09:00 A | 2026-05-05 12:00 A |  | 100% |  |  | 3h | 3h |
| 518 | 1.242.1 | заменить инсектицидные лампы в светильниках (количество, которое поменял -записать) |  | 3h | 2026-05-05 09:00 A | 2026-05-05 12:00 A |  | 100% | start no earlier than 2026-05-05 08:00 | Бундин В | 3h | 3h |
| 519 | 1.243 | на жиротопке установить газ лифты (они на складе) |  | 1h | 2026-05-05 08:00 A | 2026-05-05 10:00 A |  | 100% | start no earlier than 2026-05-05 08:00 | Бобренок В | 1h | 1h |
| 520 | 1.244 | **дверь вход в столовую вкрыть заглушки и установить личинку с ключами (взять на складе)** |  | 14.12d | 2026-05-13 09:00 A | 2026-06-02 10:00 A |  | 100% |  |  | 42.5h | 42.5h |
| 521 | 1.244.1 | заказать ручку / ответ |  | 30min | 2026-05-13 09:00 A | 2026-05-13 09:30 A |  | 100% | start no earlier than 2026-05-13 09:00 | Шуранов Ю | 0.5h | 0.5h |
| 522 | 1.244.2 | конроль |  | 5d | 2026-05-18 09:00 A | 2026-05-22 18:00 A | 521 | 100% | start no earlier than 2026-05-18 09:00 | Карабанов | 40h | 40h |
| 523 | 1.244.3 | замена |  | 1h | 2026-05-30 09:00 A | 2026-06-01 10:00 A | 522 | 100% | start no earlier than 2026-05-30 09:00 | Тимофеев В | 1h | 1h |
| 524 | 1.244.4 | перевернуть замок ручкой вверх, личика переворачивается в любую сторону |  | 1h | 2026-06-02 09:00 A | 2026-06-02 10:00 A |  | 100% | start no earlier than 2026-06-02 09:00 | Макаревич А | 1h | 1h |
| 525 | 1.245 | поставить шпонки на питатель в слесарке |  | 1h | 2026-05-04 09:00 A | 2026-05-04 10:00 A |  | 100% | start no earlier than 2026-05-04 08:00 | Тимофеев В | 1h | 1h |
| 526 | 1.246 | установить транспортер на 1 линии |  | 1h | 2026-05-04 08:00 A | 2026-05-04 10:00 A |  | 100% | start no earlier than 2026-05-04 08:00 | Дедов В | 1h | 1h |
| 527 | 1.247 | собрать транспортер ковшевой (валы приехали, фетр на складе) |  | 4h | 2026-04-30 08:00 A | 2026-04-30 13:00 A |  | 100% | start no earlier than 2026-04-30 08:00 | Дедов В | 4h | 4h |

| ID | WBS | Task | Type | Duration | Start | Finish | Predecessors | Complete | Constraint | Resources | Work | Actual work |
| --- | --- | --- | --- | --- | --- | --- | --- | --- | --- | --- | --- | --- |
| 528 | 1.248 | **со старой ленты снять ковши в слесарке** |  | 0.5d | 2026-05-05 09:00 A | 2026-05-05 13:00 A |  | 100% |  |  | 4h | 4h |
| 529 | 1.248.1 | подготовить ленту с ковшами (150 мм между ковшами) лента на складе 5120мм в кольце и унести на желтый склад |  | 4h | 2026-05-05 09:00 A | 2026-05-05 13:00 A |  | 100% | start no earlier than 2026-05-05 09:00 | Бундин В | 4h | 4h |
| 530 | 1.249 | **разбираем улитки циклон и печи, замена подшипников** |  | 1d? | 2026-06-03 09:00 A | 2026-06-03 18:00 A |  | 100% |  | Тимофеев В; Бундин В | 16h | 16h |
| 531 | 1.249.1 | проверка подшипников на улитках печей |  | 1d? | 2026-06-03 09:00 A | 2026-06-03 18:00 A |  | 100% | start no earlier than 2026-06-03 09:00 |  |  |  |
| 532 | 1.250 | ТО Теко 1,5 (чистка тен, смазка штоков пневмоцилиндров, подшипников) |  | 3h | 2026-04-28 09:00 A | 2026-04-28 12:00 A |  | 100% | start no earlier than 2026-04-28 09:00 | Дедов В | 3h | 3h |
| 533 | 1.251 | ТО Теко 0,4 (чистка тен, смазка штоков пневмоцилиндров, подшипников) |  | 3h | 2026-04-28 09:00 A | 2026-04-28 12:00 A |  | 100% | start no earlier than 2026-04-28 09:00 | Дедов В | 3h | 3h |
| 534 | 1.252 | полное ТО квадропака (чистка тен, смазка штоков пневмоцилиндров, шприцевание подшипников, протяжка болтовых соединений) |  | 3h | 2026-04-28 09:00 A | 2026-04-28 12:00 A |  | 100% | start no earlier than 2026-04-28 09:00 | Дедов В | 3h | 3h |
| 535 | 1.253 | **модернизация трассы слива зона мойки экструдеров** |  | 20d? | 2026-04-27 09:00 A | 2026-05-23 10:00 A |  | 100% |  |  | 15.5h | 15.5h |
| 536 | 1.253.1 | заявка соединения и гидрозатвор |  | 15min | 2026-04-27 09:00 A | 2026-04-27 09:15 A |  | 100% | start no earlier than 2026-04-27 08:00 | Шуранов Ю | 0.25h | 0.25h |
| 537 | 1.253.2 | контроль доставки |  | 15min | 2026-05-04 09:15 A | 2026-05-04 09:30 A | 536FS+5d | 100% | start no earlier than 2026-04-27 08:00 | Шуранов Ю | 0.25h | 0.25h |
| 538 | 1.253.3 | монтаж |  | 1d? | 2026-05-06 09:30 A | 2026-05-07 09:30 A | 537FS+2d | 100% | start no earlier than 2026-04-27 08:00 | Тимофеев В | 8h | 8h |
| 539 | 1.253.4 | заявка на бурить стену / получить счет |  | 1h | 2026-04-28 09:00 A | 2026-04-28 10:00 A |  | 100% | start no earlier than 2026-04-28 09:00 | Зорькин В | 1h | 1h |
| 540 | 1.253.5 | расчет угла бурения. Замер + зхарисовать схему |  | 4h | 2026-05-13 09:00 A | 2026-05-13 13:00 A | 539 | 100% | start no earlier than 2026-05-13 09:00 | Зорькин В | 4h | 4h |
| 541 | 1.253.6 | орг работу подрядчика по бурению |  | 1h | 2026-05-20 09:00 A | 2026-05-20 10:00 A | 540 | 100% | start no earlier than 2026-05-20 09:00 | Зорькин В | 1h | 1h |
| 542 | 1.253.7 | запенить стыки в месте бурения | manual | 1h | 2026-05-23 09:00 A | 2026-05-23 10:00 A |  | 100% | start no earlier than 2026-05-23 09:00 | Бобренок В | 1h | 1h |
| 543 | 1.254 | взять на складе 2 гофросифона и заменить на мойке экструдер |  | 1h | 2026-04-24 09:00 A | 2026-04-24 10:00 A |  | 100% | start no earlier than 2026-04-24 08:00 | Бундин В | 1h | 1h |
| 544 | 1.255 | заменить монтажную коробку на 150х200мм -она у них на стяжках. Коробка новая на складе | manual | 1h | 2026-04-26 09:00 A | 2026-04-26 10:00 A |  | 100% | start no earlier than 2026-04-26 09:00 | Бобренок В | 1h | 1h |
| 545 | 1.256 | под мойкой в зоне экструдера на слив 3 греющего кабеля, нужно разобраться |  | 1h | 2026-04-24 09:00 A | 2026-04-24 10:00 A |  | 100% | start no earlier than 2026-04-24 08:00 | Шуранов Ю | 1h | 1h |
| 546 | 1.257 | жиротопка течет сальник, проверить и устранить течи везде. Чистка фильтров. |  | 2h | 2026-04-28 09:00 A | 2026-04-28 11:00 A |  | 100% | start no earlier than 2026-04-28 09:00 | Тимофеев В | 2h | 2h |
| 547 | 1.258 | ТО печи линия 1 ( вскрыть, ревизия- замена перемычек и т.д.) |  | 4h | 2026-04-23 09:00 A | 2026-04-23 13:00 A |  | 100% | start no earlier than 2026-04-23 08:00 | Бундин В | 4h | 4h |
| 548 | 1.259 | протянуть кабель UTP от столя Луговских до шкафа серверного (расскажу как протянуть по звонку) |  | 4h | 2026-04-23 09:00 A | 2026-04-23 13:00 A |  | 100% | start no earlier than 2026-04-23 08:00 | Бундин В | 4h | 4h |
| 549 | 1.260 | **подключить приточку как было** |  | 0.25d | 2026-04-29 09:00 A | 2026-04-29 11:00 A |  | 100% |  | Дедов В | 4h | 4h |
| 550 | 1.260.1 | подключить сервопривод на шибер и подключить |  | 2h | 2026-04-29 09:00 A | 2026-04-29 11:00 A |  | 100% | start no earlier than 2026-04-29 09:00 | Дедов В | 2h | 2h |
| 551 | 1.261 | **замена ленты на транспортере тип 2 2 линия (дособрать)** |  | 1.5d | 2026-04-24 09:00 A | 2026-04-27 13:00 A |  | 100% |  |  | 6h | 6h |
| 552 | 1.261.1 | со снятой ленты транспортера тип 2 снять все ковши (готовим для замены на 1 линии) |  | 2h | 2026-04-24 09:00 A | 2026-04-24 11:00 A |  | 100% | start no earlier than 2026-04-24 09:00 | Бундин В | 2h | 2h |
| 553 | 1.261.2 | установка ковшей со старой ленты на новую со склада 400х 5120мм |  | 4h | 2026-04-25 09:00 A | 2026-04-27 13:00 A |  | 100% | start no earlier than 2026-04-25 09:00 | Макаревич А | 4h | 4h |

| ID | WBS | Task | Duration | Start | Finish | Predecessors | Complete | Constraint | Resources | Work | Actual work |
| --- | --- | --- | --- | --- | --- | --- | --- | --- | --- | --- | --- |
| 554 | 1.262 | **система угольной фильтрации вытяжных газов с печей и пневотранспорта** | 0.25d | 2026-04-21 09:00 A | 2026-04-21 11:00 A |  | 100% |  |  | 3h | 3h |
| 555 | 1.262.1 | подготовить пластины 200*200 5мм для анкерения колон к полу ф12 6шт | 2h | 2026-04-21 09:00 A | 2026-04-21 11:00 A |  | 100% | start no earlier than 2026-04-21 09:00 | Бундин В | 2h | 2h |
| 556 | 1.262.2 | подготовить пластины 100*100 5мм для анкерения колон к стене 8шт | 1h | 2026-04-21 09:00 A | 2026-04-21 10:00 A |  | 100% | start no earlier than 2026-04-21 09:00 | Бундин В | 1h | 1h |
| 557 | 1.263 | проверка фильтров воды с редуктором в прекондиционер на ТО | 1h | 2026-04-22 09:00 A | 2026-04-22 10:00 A |  | 100% | start no earlier than 2026-04-22 09:00 | Бундин В | 1h | 1h |
| 558 | 1.264 | **заменить фильтры на жиротопка** | 17.12d | 2026-09-14 09:00 A | 2026-10-01 10:00 A |  | 100% |  |  | 2.25h | 2.25h |
| 559 | 1.264.1 | выяснить тип фильтров, заказ катриджи | 1h | 2026-09-14 09:00 A | 2026-09-14 10:00 A |  | 100% | start no earlier than 2026-09-14 09:00 | Зорькин В | 1h | 1h |
| 560 | 1.264.2 | контроль | 15min | 2026-09-24 10:00 A | 2026-09-24 10:15 A | 559FS+10d | 100% | start no earlier than 2026-04-22 09:00 | Зорькин В | 0.25h | 0.25h |
| 561 | 1.264.3 | замена | 1h | 2026-10-01 09:00 A | 2026-10-01 10:00 A | 560 | 100% | start no earlier than 2026-10-01 09:00 | Бобренок В | 1h | 1h |
| 562 | 1.265 | проверить напряжение в розетке конатушка вывоза готовой продукции | 1h | 2026-04-19 09:00 A | 2026-04-20 10:00 A |  | 100% | start no earlier than 2026-04-19 09:00 | Дедов В | 1h | 1h |
| 563 | 1.266 | **на 1 линии подготовить из оргстекла обратные крышки транспортера тип 2 (ковшевой), согласовать остановка с мастером и установить** | 0.12d | 2026-04-24 09:00 A | 2026-04-24 10:00 A |  | 100% |  | Бобренок В | 2h | 2h |
| 564 | 1.266.1 | перекрутить оргстекло (операторы подскажут в чем проблема) | 1h | 2026-04-24 09:00 A | 2026-04-24 10:00 A |  | 100% | start no earlier than 2026-04-24 09:00 | Бобренок В | 1h | 1h |
| 565 | 1.267 | проверить гидроаккумуляторы парогенераторов 1 и 2 линия и 100литровый в комнате стабилизации воды, если нужно качаем 2 очка. | 2h | 2026-04-19 09:00 A | 2026-04-20 11:00 A |  | 100% | start no earlier than 2026-04-19 09:00 | Макаревич А | 2h | 2h |
| 566 | 1.268 | проверка фильтров на редукторы экструдеров | 1h | 2026-04-24 09:00 A | 2026-04-24 10:00 A |  | 100% | start no earlier than 2026-04-24 09:00 | Тимофеев В | 1h | 1h |
| 567 | 1.269 | проверка токов, всех перемычек, шприцевание всех подшипников печи №2 | 3h | 2026-04-23 09:00 A | 2026-04-23 12:00 A |  | 100% | start no earlier than 2026-04-24 09:00 | Бобренок В | 3h | 3h |
| 568 | 1.270 | на питателе заменить втулки линия 1 и 2 | 2h | 2026-04-15 08:00 A | 2026-04-15 11:00 A |  | 100% | start no earlier than 2026-04-15 08:00 | Бобренок В | 2h | 2h |
| 569 | 1.271 | проверить радиатор приточки (протечки, есть ли подача горячей воды), если нет - выключить приточку, чтобы не разморозить! | 1h | 2026-04-14 09:00 A | 2026-04-14 10:00 A |  | 100% | start no earlier than 2026-04-14 08:00 | Труфанов А | 1h | 1h |
| 570 | 1.272 | приварить левую ногу мезонина на фасовке (штабелером сместили) | 1h | 2026-04-15 09:00 A | 2026-04-15 10:00 A |  | 100% | start no earlier than 2026-04-15 09:00 | Бобренок В | 1h | 1h |
| 571 | 1.273 | на печи №1 прошприцевать подшипники, проверить токи, если нужно вскрываем на ревизию перемычек | 3h | 2026-04-14 09:00 A | 2026-04-14 12:00 A |  | 100% | start no earlier than 2026-04-14 08:00 | Труфанов А | 3h | 3h |
| 572 | 1.274 | замена электродной группы на парогенераторе линия №1 (электроды подготовили в слесарке) | 4h | 2026-04-14 09:00 A | 2026-04-14 13:00 A |  | 100% | start no earlier than 2026-04-14 08:00 | Труфанов А | 4h | 4h |
| 573 | 1.275 | на квадропаке тена выставить в параллель | 1h | 2026-04-13 09:00 A | 2026-04-13 10:00 A |  | 100% | start no earlier than 2026-04-13 08:00 | Труфанов А | 1h | 1h |
| 574 | 1.276 | покрасить подиум под циклонами линия 1 и 2 | 2h | 2026-04-22 09:00 A | 2026-04-22 11:00 A |  | 100% | start no earlier than 2026-04-22 09:00 | Бундин В | 2h | 2h |
| 575 | 1.277 | подготовить лекало на приемный лоток транспортера тип 2 (у них в работе картонка, можно по ней и сделать), если будет остановка приварить | 1h | 2026-04-27 09:00 A | 2026-04-27 10:00 A |  | 100% | start no earlier than 2026-04-27 09:00 | Тимофеев В | 1h | 1h |
| 576 | 1.278 | на пнемоулитку поставить пистолет (зона экструдера) | 1h | 2026-04-11 09:00 A | 2026-04-13 10:00 A |  | 100% | start no earlier than 2026-04-11 09:00 | Макаревич А | 1h | 1h |
| 577 | 1.279 | установить фильтр на кондиционер между печками (фильтр у Луговских) | 1h | 2026-04-22 09:00 A | 2026-04-22 10:00 A |  | 100% | start no earlier than 2026-04-22 09:00 | Труфанов А | 1h | 1h |

| ID | WBS | Task | Type | Duration | Start | Finish | Predecessors | Complete | Remaining | Actual start | Actual finish | Total slack | Constraint | Resources | Work | Actual work |
| --- | --- | --- | --- | --- | --- | --- | --- | --- | --- | --- | --- | --- | --- | --- | --- | --- |
| 578 | 1.280 | **зафиксировать ручку в туалет (закрутить)** |  | 856.12d | 2023-03-22 09:00 A | 2026-04-22 10:00 |  | 100% |  |  | 2026-05-05 10:00 |  |  |  | 2h | 2h |
| 579 | 1.280.1 | заказать ручки |  | 1h | 2023-03-22 09:00 A | 2023-03-22 10:00 A |  | 100% |  |  |  |  |  | Шуранов Ю | 1h | 1h |
| 580 | 1.280.2 | установка (заменить ручку, взять на складе) |  | 1h | 2026-05-05 09:00 A | 2026-05-05 10:00 A |  | 100% |  |  |  |  | start no earlier than 2026-05-05 09:00 | Бобренок В | 1h | 1h |
| 581 | 1.281 | ТО теко 1,5 (чистка тен, смазка штоков пневмоцилиндров, подшипников) | manual | 3h | 2026-04-25 09:00 A | 2026-04-25 12:00 A |  | 100% |  |  |  |  | start no earlier than 2026-04-25 09:00 | Труфанов А | 3h | 3h |
| 582 | 1.282 | слить конденсат с компрессора, чистка фильтров и радиаторов | manual | 2h | 2026-04-12 09:00 A | 2026-04-12 11:00 A |  | 100% |  |  |  |  | start no earlier than 2026-04-12 09:00 | Макаревич А | 2h | 2h |
| 583 | 1.283 | **заказать газлифт жиротопка** |  | 11.12d? | 2026-04-22 09:00 A | 2026-05-06 10:00 |  | 100% |  |  | 2026-08-18 09:20 |  |  |  | 84.08h | 84.08h |
| 584 | 1.283.1 | доставка |  | 10d | 2026-04-22 09:00 A | 2026-05-05 18:00 A |  | 100% |  |  |  |  | start no earlier than 2026-04-22 09:00 | Карабанов | 80h | 80h |
| 585 | 1.283.2 | **установка газ лифт** |  | 69.04d | 2026-05-13 09:00 A | 2026-08-18 09:20 A |  | 100% |  |  |  |  |  |  | 4.08h | 4.08h |
| 586 | 1.283.2.1 | контроль поставки / размер |  | 20min | 2026-08-18 09:00 A | 2026-08-18 09:20 A |  | 100% |  |  |  |  | start no earlier than 2026-08-18 09:00 | Шуранов Ю | 0.33h | 0.33h |
| 587 | 1.283.2.2 | наварить уголок для площадки упора газлифта |  | 1h | 2026-05-13 09:00 A | 2026-05-13 10:00 A |  | 100% |  |  |  |  | start no earlier than 2026-05-13 09:00 | Труфанов А; Некрасов А | 2h | 2h |
| 588 | 1.283.2.3 | заявка газлифт с меньшей усилием/ выяснить координата |  | 30min | 2026-05-27 09:00 A | 2026-05-27 09:30 A |  | 100% |  |  |  |  | start no earlier than 2026-05-27 09:00 | Зорькин В | 0.5h | 0.5h |
| 589 | 1.283.2.4 | доставка контроль |  | 15min | 2026-08-12 09:00 A | 2026-08-12 09:15 A | 588FS+10d | 100% |  |  |  |  | start no earlier than 2026-05-13 09:00 | Зорькин В | 0.25h | 0.25h |
| 590 | 1.283.2.5 | замена |  | 1h | 2026-08-12 09:00 A | 2026-08-12 10:00 A |  | 100% |  |  |  |  | start no earlier than 2026-08-12 09:00 | Бобренок В | 1h | 1h |
| 591 | 1.284 | убрать диммер за еврокубом, где завозят навески (провода заизолировать и спрятать в кабель-канал) |  | 1h | 2026-04-10 08:00 A | 2026-04-10 10:00 A |  | 100% |  |  |  |  | start no earlier than 2026-04-10 08:00 | Бобренок В | 1h | 1h |
| 592 | 1.285 | закрыть монтажную коробку над дверью зона жиров выход |  | 1h | 2026-04-09 08:00 A | 2026-04-09 10:00 A |  | 100% |  |  |  |  | start no earlier than 2026-04-09 08:00 | Бобренок В | 1h | 1h |
| 593 | 1.286 | **на аппликаторе установить принтер (взять на складе)** |  | 3h? | 2026-04-10 09:00 | 2026-04-10 12:00 |  | 100% |  | 2026-04-09 08:00 | 2026-05-14 10:00 |  |  |  | 5h | 5h |
| 594 | 1.286.1 | монтаж витой пары от аппликатора до шкафа где вывозят ГП справа |  | 4h | 2026-04-09 08:00 A | 2026-04-09 13:00 A |  | 100% |  |  |  |  | start no earlier than 2026-04-09 08:00 | Бобренок В | 4h | 4h |
| 595 | 1.286.2 | тест принтера |  | 1h | 2026-05-14 09:00 A | 2026-05-14 10:00 A |  | 100% |  |  |  |  | start no earlier than 2026-05-14 09:00 | Зорькин В | 1h | 1h |
| 596 | 1.287 | замена шнек+гильзы (б/у) на 2 линии |  | 4h | 2026-04-09 08:00 A | 2026-04-09 13:00 A |  | 100% |  |  |  |  | start no earlier than 2026-04-09 08:00 | Тимофеев В | 4h | 4h |
| 597 | 1.288 | закрепить светильник в комнатке перед выходом, где вывозят готовую продукцию справа, оторвался | manual | 1h | 2026-04-08 09:00 A | 2026-04-08 10:00 A |  | 100% |  |  |  |  | start no earlier than 2026-04-08 08:00 | Бундин В | 1h | 1h |
| 598 | 1.289 | **замена лент на аппликаторе, подумать какой сделать отражатель для фотометки, чтобы не цепляло пакеты в работе** |  | 0.5d | 2026-05-27 09:00 | 2026-05-27 13:00 |  | 100% |  | 2026-10-12 09:00 | 2026-10-12 13:00 |  |  |  | 4h | 4h |
| 599 | 1.289.1 | замена ленеты |  | 4h | 2026-10-12 09:00 A | 2026-10-12 13:00 A |  | 100% |  |  |  |  | start no earlier than 2026-10-12 09:00 | Тимофеев В | 4h | 4h |
| 600 | 1.290 | **замена ленты пролистывателя** |  | 65.5d | 2026-09-18 09:00 A | 2026-12-04 13:00 |  | 32% | 44.6d |  |  | 0d |  |  | 11.75h | 3.75h |
| 601 | 1.290.1 | Полная дефектовка пролистывателя, снятие лент/замена |  | 3h | 2026-09-18 09:00 A | 2026-09-18 12:00 A |  | 100% |  |  |  |  | start no earlier than 2026-09-18 09:00 | Тимофеев В | 3h | 3h |
| 602 | 1.290.2 | заявка на ремень клиновый для ленты + клей |  | 30min | 2026-09-18 12:00 A | 2026-09-18 12:30 A | 601 | 100% |  |  |  |  | start no earlier than 2026-09-18 08:00 | Зорькин В | 0.5h | 0.5h |
| 603 | 1.290.3 | контроль доставки |  | 15min | 2026-09-25 12:30 A | 2026-09-25 12:45 A | 602FS+7d | 100% |  |  |  |  | start no earlier than 2026-09-18 08:00 | Зорькин В | 0.25h | 0.25h |
| 604 | 1.290.4 | склеить ремень с лентой, ремень на складе (отправить ленту организации, которая когда-то приезжала и склеивала ленты) | manual | 4h | 2026-12-04 09:00 | 2026-12-04 13:00 | 603FS+1d |  |  |  |  |  | start no earlier than 2026-12-04 09:00 | Тимофеев В | 4h |  |
| 605 | 1.290.5 | замена лент | manual | 4h | 2026-11-21 09:00 | 2026-11-21 13:00 | 604FS+1d |  |  |  |  |  | start no earlier than 2026-11-21 09:00 | Тимофеев В | 4h |  |
| 606 | 1.291 | подготовить электродную группу для парогенератора (собрать) |  | 2h | 2026-04-08 09:00 A | 2026-04-08 11:00 A |  | 100% |  |  |  |  | start no earlier than 2026-04-08 08:00 | Бундин В | 2h | 2h |

| ID | WBS | Task | Type | Duration | Start | Finish | Predecessors | Complete | Constraint | Resources | Work | Actual work |
| --- | --- | --- | --- | --- | --- | --- | --- | --- | --- | --- | --- | --- |
| 607 | 1.292 | **просыпается гранула на пересыпке с барабана в конвейер** |  | 0.5d | 2026-04-08 09:00 A | 2026-04-08 13:00 A |  | 100% |  |  | 6h | 6h |
| 608 | 1.292.1 | пододвинуть ближе к барабану конвейер + охладитель + вентилятор |  | 2h | 2026-04-08 09:00 A | 2026-04-08 11:00 A |  | 100% | start no earlier than 2026-04-08 09:00 | Бобренок В | 2h | 2h |
| 609 | 1.292.2 | доработка приемного лотка конвейера |  | 4h | 2026-04-08 09:00 A | 2026-04-08 13:00 A |  | 100% | start no earlier than 2026-04-08 09:00 | Некрасов А | 4h | 4h |
| 610 | 1.293 | забрать 2 рохли с пандуса, снять колеса в зип (зад- перед), а сами рохли в контейнер |  | 3h | 2026-04-04 09:00 A | 2026-04-06 12:00 A |  | 100% | start no earlier than 2026-04-04 09:00 | Труфанов А | 3h | 3h |
| 611 | 1.294 | **квадропак модернизация регулировки пластины нажима роликов для захвата пакета** |  | 2.12d | 2026-04-15 09:00 A | 2026-04-17 10:00 A |  | 100% |  |  | 3h | 3h |
| 612 | 1.294.1 | регулировочной тягой отвезти нажимную площадку на 5мм (остановить работу на 10 минут, согласовать с мастером) |  | 1h | 2026-04-17 09:00 A | 2026-04-17 10:00 A |  | 100% | start no earlier than 2026-04-17 09:00 | Бобренок В | 1h | 1h |
| 613 | 1.294.2 | изготовление пластины на ногу по аналогии как на первой ноге |  | 1h | 2026-04-15 09:00 A | 2026-04-15 10:00 A | 612 | 100% | start no earlier than 2026-04-15 09:00 | Бобренок В | 1h | 1h |
| 614 | 1.294.3 | монтаж |  | 1h | 2026-04-15 10:00 A | 2026-04-15 11:00 A | 613 | 100% | start no earlier than 2026-04-10 09:00 | Бобренок В | 1h | 1h |
| 615 | 1.295 | изготовить крышку на приямок слива канализации под раковинами зона экструдер. Из нерж, с ручкой. |  | 4h | 2026-04-02 08:00 A | 2026-04-02 13:00 A |  | 100% | start no earlier than 2026-04-02 08:00 | Бобренок В | 4h | 4h |
| 616 | 1.296 | выпрямить погнутые роль-ворота на рампе - в сторону слесарки (нужно откутить левую направляшку и вставить воротину на место) |  | 1h | 2026-04-02 08:00 A | 2026-04-02 10:00 A |  | 100% | start no earlier than 2026-04-02 08:00 | Бобренок В | 1h | 1h |
| 617 | 1.297 | **выключатель света на входе в гидролизатную закрепить сам рычаг переключения, проскальзывает** |  | 15.12d | 2026-04-06 09:00 A | 2026-04-27 10:00 A |  | 100% |  | Макаревич А | 123h | 123h |
| 618 | 1.297.1 | заказать выключатель |  | 1h | 2026-04-06 09:00 A | 2026-04-06 10:00 A |  | 100% | start no earlier than 2026-04-06 08:00 | Шуранов Ю | 1h | 1h |
| 619 | 1.297.2 | замена выключателя (выключатель в слесарке тебе показывал) |  | 1h | 2026-04-25 09:00 A | 2026-04-27 10:00 A |  | 100% | start no earlier than 2026-04-25 09:00 | Бобренок В | 1h | 1h |
| 620 | 1.298 | на пандусе 1 цеха справа - пометить шнеки и гильзы что они рабочие и вывести в контейнер |  | 2h | 2026-04-01 08:00 A | 2026-04-01 11:00 A |  | 100% | start no earlier than 2026-04-01 08:00 | Бобренок В | 2h | 2h |
| 621 | 1.299 | взять с контейнера пысос- проверить рабочий или нет (если работает выдать в 1 цех) |  | 2h | 2026-04-01 08:00 A | 2026-04-01 11:00 A |  | 100% | start no earlier than 2026-04-01 08:00 | Бобренок В | 2h | 2h |
| 622 | 1.300 | заменить плату интерфейса RS485 |  | 1h | 2026-04-04 09:00 A | 2026-04-06 10:00 A |  | 100% | start no earlier than 2026-04-04 09:00 | Труфанов А | 1h | 1h |
| 623 | 1.301 | замена шнеки 1 линия |  | 4h | 2026-03-31 08:00 A | 2026-03-31 13:00 A |  | 100% | start no earlier than 2026-03-31 08:00 | Тимофеев В; Бобренок В | 8h | 8h |
| 624 | 1.302 | замер износ шнеков |  | 1h | 2026-03-31 08:00 A | 2026-03-31 10:00 A |  | 100% | start no earlier than 2026-03-31 08:00 | Тимофеев В; Бобренок В; Зорькин В | 3h | 3h |
| 625 | 1.303 | почистить канальные вентиляторы вытяжки в курилке |  | 2h | 2026-03-28 09:00 A | 2026-03-30 11:00 A |  | 100% | start no earlier than 2026-03-28 09:00 | Бундин В | 2h | 2h |
| 626 | 1.304 | монтаж розетки на ногу нотис справа для подключения весов |  | 2h | 2026-03-27 09:00 A | 2026-03-27 11:00 A |  | 100% | start no earlier than 2026-03-27 09:00 | Труфанов А | 2h | 2h |
| 627 | 1.305 | добавить вибрации на виброохладителе линия 2 (согласовать с мастером, если будет остановка) |  | 2h | 2026-04-30 09:00 A | 2026-04-30 11:00 A | 636 | 100% |  | Бундин В | 2h | 2h |
| 628 | 1.306 | **замена ленты конвейер 2 линия 2** |  | 12.38d | 2026-04-07 09:00 A | 2026-04-23 12:00 A |  | 100% |  |  | 15h | 15h |
| 629 | 1.306.1 | взять ленту 400мм и начать крепить ковши для транспортера тип 2 (посчитать количество на транспортере) | manual | 9h | 2026-04-07 09:00 A | 2026-04-08 10:00 A |  | 100% | start no earlier than 2026-04-07 09:00 | Тимофеев В | 9h | 9h |
| 630 | 1.306.2 | замена ленты |  | 3h | 2026-04-23 09:00 A | 2026-04-23 12:00 A |  | 100% | start no earlier than 2026-04-23 09:00 | Тимофеев В; Бундин В | 6h | 6h |
| 631 | 1.307 | заменить на штабелере второй АКБ в зоне экструдера |  | 1h | 2026-03-28 09:00 A | 2026-03-30 10:00 A |  | 100% | start no earlier than 2026-03-28 09:00 | Дедов В | 1h | 1h |
| 632 | 1.308 | на кпп №1 опустить на 10см кабель в гофре для камер видеонаблюдения | manual | 2h | 2026-03-28 09:00 A | 2026-03-28 11:00 A |  | 100% | start no earlier than 2026-03-28 09:00 | Бундин В | 2h | 2h |
| 633 | 1.309 | вход охладителя 1 линии - нужно на среднем лотке между уровнями сделать сбоков шторки (фото скину) |  | 2h | 2026-03-28 09:00 A | 2026-03-30 11:00 A |  | 100% | start no earlier than 2026-03-28 09:00 | Бундин В | 2h | 2h |
| 634 | 1.310 | на первой линии под выходом из печи прикрутить на стенку оргстекло (Слава готовил по размерам оргстекло) |  | 1h | 2026-03-28 09:00 A | 2026-03-30 10:00 A |  | 100% | start no earlier than 2026-03-28 09:00 | Труфанов А | 1h | 1h |
| 635 | 1.311 | На пробниках оторвали разъем питания, нужно припаять |  | 2h | 2026-03-27 09:00 A | 2026-03-27 11:00 A |  | 100% | start no earlier than 2026-03-27 09:00 | Дедов В | 2h | 2h |
| 636 | 1.312 | подготовить 1 ленты с ковшами для транспортера тип 2 (зип) |  | 1d? | 2026-04-29 09:00 A | 2026-04-29 18:00 A |  | 100% | start no earlier than 2026-04-29 09:00 | Шуранов Ю | 8h | 8h |
| 637 | 1.313 | замена на старые капролонновые втулки в питателе линия 1 |  | 1h | 2026-03-26 09:00 A | 2026-03-26 10:00 A |  | 100% | start no earlier than 2026-03-26 09:00 | Тимофеев В | 1h | 1h |
| 638 | 1.314 | сделать на 2 линии вставыш на ленту транспортера тип 2 и установить на транспортер |  | 4h | 2026-03-25 09:00 A | 2026-03-25 13:00 A |  | 100% | start no earlier than 2026-03-25 09:00 | Некрасов А; Бобренок В | 8h | 8h |
| 639 | 1.315 | герметизация мезонина подачи навесок по шву |  | 1h | 2026-04-15 09:00 A | 2026-04-15 10:00 A |  | 100% | start no earlier than 2026-04-15 09:00 | Бобренок В | 1h | 1h |

| ID | WBS | Task | Type | Duration | Start | Finish | Complete | Remaining | Actual start | Actual finish | Constraint | Resources | Work | Actual work |
| --- | --- | --- | --- | --- | --- | --- | --- | --- | --- | --- | --- | --- | --- | --- |
| 640 | 1.316 | **на 2 линии на хомуты закрепить горловину к бункеру подачи сухого гидрализата (все расскажу)** |  | 0.25d | 2026-04-27 09:00 A | 2026-04-27 11:00 A | 100% |  |  |  |  | Некрасов А | 4h | 4h |
| 641 | 1.316.1 | на горловине подачи сухого гидрализата приварить выход под углом 45 градусов (углы из нерж есть в 3 цехе) |  | 2h | 2026-04-27 09:00 A | 2026-04-27 11:00 A | 100% |  |  |  | start no earlier than 2026-04-27 09:00 | Макаревич А | 2h | 2h |
| 642 | 1.317 | **разобрать с двух сторон питатель 2 линия - ревизия шестеренок и втулок спереди (оставить все разобранное)** |  | 2h | 2026-03-24 09:00 | 2026-03-24 11:00 | 100% |  | 2026-03-26 09:00 | 2026-03-26 11:00 |  |  | 2h | 2h |
| 643 | 1.317.1 | собрать питатель, ревизия втулок, подшипников, шнеков, шестеренок. Подогнать капролонновые втулки |  | 2h | 2026-03-26 09:00 A | 2026-03-26 11:00 A | 100% |  |  |  | start no earlier than 2026-03-26 09:00 | Тимофеев В | 2h | 2h |
| 644 | 1.318 | пульт управления кондиционером в зоне экструдера- закрепить гофру и заизолировать разрыв гофры, закрепить к стенке |  | 1h | 2026-03-24 08:00 A | 2026-03-24 10:00 A | 100% |  |  |  | start no earlier than 2026-03-24 08:00 | Бобренок В | 1h | 1h |
| 645 | 1.319 | блок питания для весов на жирах развалился, стянуть изолентой |  | 1h | 2026-03-24 08:00 A | 2026-03-24 10:00 A | 100% |  |  |  | start no earlier than 2026-03-24 08:00 | Бобренок В | 1h | 1h |
| 646 | 1.320 | **ремонт /отключить 2 вентилятора охладитель 1 линия** |  | 801d | 2023-06-21 09:00 A | 2026-07-15 18:00 A | 100% |  |  |  |  | Тимофеев В | 12801h | 12801h |
| 647 | 1.320.1 | заказать в зип |  | 6392h | 2023-06-21 09:00 A | 2026-07-15 18:00 A | 100% |  |  |  |  | Шуранов Ю | 6392h | 6392h |
| 648 | 1.320.2 | заменить 2 вентилятора |  | 1h | 2026-04-04 09:00 A | 2026-04-06 10:00 A | 100% |  |  |  |  | Макаревич А | 1h | 1h |
| 649 | 1.321 | демонтаж крышка лотка в проеме между краем площадки вентиляции приточной и проемом ворот вход в кооридор завода навесок |  | 383520min | 2023-06-21 09:00 A | 2026-07-15 18:00 A | 100% |  |  |  |  | Труфанов А | 6392h | 6392h |
| 650 | 1.322 | стук шнек 2 линия - проверить, при необходимости разобрать |  | 3h | 2026-04-27 09:00 A | 2026-04-27 12:00 A | 100% |  |  |  | start no earlier than 2026-04-27 09:00 | Тимофеев В; Бобренок В | 6h | 6h |
| 651 | 1.323 | слить конденсат и продуть все радиаторы компрессор |  | 1h | 2026-03-21 09:00 A | 2026-03-23 10:00 A | 100% |  |  |  | start no earlier than 2026-03-21 09:00 | Дедов В | 1h | 1h |
| 652 | 1.324 | закрепить аварийную кнопку в гидролизатной (фото в чате будет) / пожарный выключатель |  | 1h | 2026-03-22 09:00 A | 2026-03-23 10:00 A | 100% |  |  |  | start no earlier than 2026-03-22 09:00 | Бобренок В | 1h | 1h |
| 653 | 1.325 | кнопки на управление ворот зона жиров поднять и закпепить выше |  | 2h | 2026-03-18 08:00 A | 2026-03-18 11:00 A | 100% |  |  |  | start no earlier than 2026-03-18 08:00 | Макаревич А | 2h | 2h |
| 654 | 1.326 | закрепить все отбойники где завозят навески экструдерщики |  | 2h | 2026-03-18 08:00 A | 2026-03-18 11:00 A | 100% |  |  |  | start no earlier than 2026-03-18 08:00 | Макаревич А | 2h | 2h |
| 655 | 1.327 | закрыить все электро шкафы |  | 30min | 2026-03-17 08:00 A | 2026-03-17 09:30 A | 100% |  |  |  | start no earlier than 2026-03-17 08:00 | Бобренок В | 0.5h | 0.5h |
| 656 | 1.328 | поломоечная машинка устранить течь |  | 1h | 2026-03-17 08:00 A | 2026-03-17 10:00 A | 100% |  |  |  | start no earlier than 2026-03-17 08:00 | Бобренок В | 1h | 1h |
| 657 | 1.329 | закрыить крышку на пробниках, задняя стенка прикрутить |  | 30min | 2026-03-17 08:00 A | 2026-03-17 09:30 A | 100% |  |  |  | start no earlier than 2026-03-17 08:00 | Бобренок В | 0.5h | 0.5h |
| 658 | 1.330 | продувка кабельного лотка |  | 2h | 2026-03-18 09:00 A | 2026-03-18 11:00 A | 100% |  |  |  | start no earlier than 2026-03-18 09:00 | Труфанов А; Некрасов А | 4h | 4h |
| 659 | 1.331 | монтаж крючков под халаты. Получить у мастера |  | 1h | 2026-03-17 08:00 A | 2026-03-17 10:00 A | 100% |  |  |  | start no earlier than 2026-03-17 08:00 | Бобренок В | 1h | 1h |
| 660 | 1.332 | **установить расходомеры пара на ПГ** |  | 0.38d | 2026-04-01 09:00 | 2026-04-01 12:00 |  | 0.38d | 2026-10-12 09:00 |  |  |  | 3h |  |
| 661 | 1.332.1 | монтаж 1 линия расходомер / кабель / блок питания | manual | 3h | 2026-10-12 09:00 A | 2026-10-12 12:00 |  | 3h |  |  | start no earlier than 2026-10-12 09:00 | Некрасов А | 3h |  |
| 662 | 1.333 | **монтаж регистратор данных линия 1 и 2:** |  | 0.25d | 2026-03-18 09:00 A | 2026-03-18 11:00 A | 100% |  |  |  |  |  | 2h | 2h |
| 663 | 1.333.1 | подключение линия 1 |  | 2h | 2026-03-18 09:00 A | 2026-03-18 11:00 A | 100% |  |  |  | start no earlier than 2026-03-18 09:00 | Домоводов К | 2h | 2h |
| 664 | 1.334 | бойлер на экструдере - установить трубку на клапан сброса и смонтировать её ы раковину |  | 1h | 2026-03-14 09:00 A | 2026-03-16 10:00 A | 100% |  |  |  | start no earlier than 2026-03-14 09:00 | Бундин В | 1h | 1h |
| 665 | 1.335 | смазать дверную ручку (входную) |  | 1h | 2026-03-15 09:00 A | 2026-03-16 10:00 A | 100% |  |  |  | start no earlier than 2026-03-15 09:00 | Бундин В | 1h | 1h |
| 666 | 1.336 | сделать ручку дверную (вход на упаковку) |  | 1h | 2026-03-15 09:00 A | 2026-03-16 10:00 A | 100% |  |  |  | start no earlier than 2026-03-15 09:00 | Бундин В | 1h | 1h |
| 667 | 1.337 | дверная ручка в туалет (подкрутить) |  | 1h | 2026-03-15 09:00 A | 2026-03-16 10:00 A | 100% |  |  |  | start no earlier than 2026-03-15 09:00 | Бундин В | 1h | 1h |
| 668 | 1.338 | штабелер экструдера натянуть цепь |  | 1h | 2026-03-13 08:00 A | 2026-03-13 10:00 A | 100% |  |  |  | start no earlier than 2026-03-13 08:00 | Дедов В | 1h | 1h |
| 669 | 1.339 | установить розетку возле роутера. Место монтажа фото от Шуранова |  | 2h | 2026-03-14 09:00 A | 2026-03-16 11:00 A | 100% |  |  |  | start no earlier than 2026-03-14 09:00 | Бундин В | 2h | 2h |
| 670 | 1.340 | линия 1 лоток охладителя под конвейером (по фото) - поднять на 3см, что бы не цеплял сетку. Снять / пересверлить крепеж |  | 2h | 2026-03-14 09:00 A | 2026-03-16 11:00 A | 100% |  |  |  | start no earlier than 2026-03-14 09:00 | Бундин В | 2h | 2h |
| 671 | 1.341 | изготовтиь полочку для роутера с "крышей. Двух скатная". |  | 4h | 2026-03-14 09:00 A | 2026-03-16 13:00 A | 100% |  |  |  | start no earlier than 2026-03-14 09:00 | Бундин В | 4h | 4h |

| ID | WBS | Task | Type | Duration | Start | Finish | Predecessors | Complete | Constraint | Resources | Work | Actual work |
| --- | --- | --- | --- | --- | --- | --- | --- | --- | --- | --- | --- | --- |
| 672 | 1.342 | **АКБ штабелер на навесках** |  | 43d | 2026-03-13 08:00 A | 2026-05-12 18:00 A |  | 100% |  |  | 2h | 2h |
| 673 | 1.342.1 | заявка на новые АКБ, отправить | milestone | 0d | 2026-03-13 08:00 A | 2026-03-13 08:00 A |  | 100% | start no earlier than 2026-03-13 08:00 | Шуранов Ю |  |  |
| 674 | 1.342.2 | получить счет | milestone | 0d | 2026-03-16 09:00 A | 2026-03-16 09:00 A | 673 | 100% | start no earlier than 2026-03-16 09:00 | Шуранов Ю |  |  |
| 675 | 1.342.3 | доставыка\ |  | 40d | 2026-03-16 09:00 A | 2026-05-12 18:00 A | 674 | 100% | start no earlier than 2026-03-13 08:00 |  |  |  |
| 676 | 1.342.4 | замена (получить на складе 2 АКБ и поменять на штабелере) |  | 2h | 2026-03-25 09:00 A | 2026-03-25 11:00 A |  | 100% | start no earlier than 2026-03-25 09:00 | Бобренок В | 2h | 2h |
| 677 | 1.343 | замена шнеков на 1 линии по команде. Подготовить / старые увезти |  | 1h | 2026-03-14 09:00 A | 2026-03-16 10:00 A |  | 100% | start no earlier than 2026-03-14 09:00 | Бобренок В; Некрасов А | 2h | 2h |
| 678 | 1.344 | **заменить мятый профлист коррдиор подачи навесок** |  | 32.25d | 2026-03-13 09:00 A | 2026-04-28 11:00 A |  | 100% |  |  | 85h | 85h |
| 679 | 1.344.1 | расчет материал / заявка |  | 1h | 2026-03-13 09:00 A | 2026-03-13 10:00 A |  | 100% | start no earlier than 2026-03-13 09:00 | Шуранов Ю | 1h | 1h |
| 680 | 1.344.2 | доставка |  | 10d | 2026-03-13 10:00 A | 2026-03-27 10:00 A | 679 | 100% | start no earlier than 2026-03-12 08:00 | Карабанов | 80h | 80h |
| 681 | 1.344.3 | замена |  | 2h | 2026-04-28 09:00 A | 2026-04-28 11:00 A | 680 | 100% | start no earlier than 2026-04-28 09:00 | Некрасов А; Труфанов А | 4h | 4h |
| 682 | 1.345 | **заменить аллюминевый скотч на швах вентиляции** |  | 18.25d | 2026-03-12 09:00 A | 2026-04-07 11:00 A |  | 100% |  |  | 82.33h | 82.33h |
| 683 | 1.345.1 | заявка |  | 20min | 2026-03-12 09:00 A | 2026-03-12 09:20 A |  | 100% | start no earlier than 2026-03-12 08:00 | Зорькин В | 0.33h | 0.33h |
| 684 | 1.345.2 | доставка |  | 10d | 2026-03-12 09:20 A | 2026-03-26 09:20 A | 683 | 100% | start no earlier than 2026-03-12 08:00 | Карабанов | 80h | 80h |
| 685 | 1.345.3 | замена (также на улитках печей, циклона, стык регулировки шибера улитки) | manual | 2h | 2026-04-07 09:00 A | 2026-04-07 11:00 A | 684 | 100% | start no earlier than 2026-04-07 09:00 | Бундин В | 2h | 2h |
| 686 | 1.346 | **замена скорлупа утеплитель горячих труб печи** |  | 16d | 2026-03-13 09:00 A | 2026-04-05 11:00 A |  | 100% |  |  | 83h | 83h |
| 687 | 1.346.1 | заявка |  | 1h | 2026-03-13 09:00 A | 2026-03-13 10:00 A |  | 100% | start no earlier than 2026-03-13 09:00 | Зорькин В | 1h | 1h |
| 688 | 1.346.2 | доставка |  | 10d | 2026-03-13 10:00 A | 2026-03-27 10:00 A | 687 | 100% | start no earlier than 2026-03-12 08:00 | Карабанов | 80h | 80h |
| 689 | 1.346.3 | замена | manual | 2h | 2026-04-05 09:00 A | 2026-04-05 11:00 A | 688 | 100% | start no earlier than 2026-04-05 09:00 | Бундин В | 2h | 2h |
| 690 | 1.347 | **купить прокатный запайщик** |  | 85.12d? | 2026-03-16 09:00 A | 2026-07-13 10:00 A |  | 100% |  |  | 11h | 11h |
| 691 | 1.347.1 | поиск / заявка |  | 2h | 2026-03-16 09:00 A | 2026-03-16 11:00 A |  | 100% | start no earlier than 2026-03-16 09:00 | Зорькин В | 2h | 2h |
| 692 | 1.347.2 | получить счет + договор |  | 1h | 2026-05-12 09:00 A | 2026-05-12 10:00 A | 691 | 100% | start no earlier than 2026-05-12 09:00 | Зорькин В | 1h | 1h |
| 693 | 1.347.3 | оплата | milestone | 0d | 2026-05-12 10:00 A | 2026-05-12 10:00 A | 692 | 100% | start no earlier than 2026-03-12 08:00 | Домоводов К |  |  |
| 694 | 1.347.4 | доставка |  | 40d | 2026-05-12 10:00 A | 2026-07-13 10:00 A | 693 | 100% | start no earlier than 2026-03-12 08:00 |  |  |  |
| 695 | 1.347.5 | приемка / сборка |  | 1d? | 2026-06-29 09:00 A | 2026-06-29 18:00 A | 694 | 100% | start no earlier than 2026-03-12 08:00 | Тимофеев В | 8h | 8h |
| 696 | 1.348 | сборка рохли 2шт |  | 1h | 2026-03-13 09:00 A | 2026-03-13 10:00 A |  | 100% | start no earlier than 2026-03-13 09:00 | Тимофеев В | 1h | 1h |
| 697 | 1.349 | изготовить герметичную крышку на подачку гидролизата |  | 2h | 2026-05-20 09:00 A | 2026-05-20 11:00 A |  | 100% | start no earlier than 2026-05-20 09:00 | Дедов В; Шуранов Ю | 4h | 4h |

| ID | WBS | Task | Type | Duration | Start | Finish | Predecessors | Complete | Actual start | Actual finish | Constraint | Resources | Work | Actual work |
| --- | --- | --- | --- | --- | --- | --- | --- | --- | --- | --- | --- | --- | --- | --- |
| 698 | 1.350 | **установить крышку печи торцевую с стороны экструдера на шарниры** |  | 12.5d | 2026-03-25 09:00 | 2026-04-10 13:00 |  | 100% | 2026-03-06 09:00 | 2026-09-11 13:00 |  |  | 88.08h | 88.08h |
| 699 | 1.350.1 | заказ шарниры |  | 5min | 2026-03-06 09:00 A | 2026-03-06 09:05 A |  | 100% |  |  | start no earlier than 2026-03-06 08:00 | Шуранов Ю | 0.08h | 0.08h |
| 700 | 1.350.2 | доставка |  | 10d | 2026-03-06 09:05 A | 2026-03-20 09:05 A | 699 | 100% |  |  | start no earlier than 2026-03-06 08:00 | Карабанов | 80h | 80h |
| 701 | 1.350.3 | монтаж линия 1 |  | 4h | 2026-05-13 09:00 A | 2026-05-13 13:00 A | 700 | 100% |  |  | start no earlier than 2026-05-13 09:00 | Бобренок В | 4h | 4h |
| 702 | 1.350.4 | монтаж линия 1 и 2 печи (чтобы открывалась и не мешала открыванию лотку сверху) | manual | 4h | 2026-09-11 09:00 A | 2026-09-11 13:00 A | 700 | 100% |  |  | start no earlier than 2026-09-11 09:00 | Макаревич А | 4h | 4h |
| 703 | 1.351 | **квадропак заменить пружины на лапках** |  | 10.12d | 2026-03-18 09:00 A | 2026-04-01 10:00 A |  | 100% |  |  |  |  | 3h | 3h |
| 704 | 1.351.1 | попытка заменить |  | 1h | 2026-03-18 09:00 A | 2026-03-18 10:00 A |  | 100% |  |  | start no earlier than 2026-03-18 09:00 | Дедов В | 1h | 1h |
| 705 | 1.351.2 | проврить ролики на износ / заказать |  | 1h | 2026-03-19 09:00 A | 2026-03-19 10:00 A |  | 100% |  |  | start no earlier than 2026-03-19 08:00 | Зорькин В | 1h | 1h |
| 706 | 1.351.3 | проверить / разрабоать полпн прижимная пластина регулировка |  | 1h | 2026-04-01 09:00 A | 2026-04-01 10:00 A |  | 100% |  |  | start no earlier than 2026-04-01 09:00 | Шуранов Ю | 1h | 1h |
| 707 | 1.352 | **звонок на ворота по привозу навесок** |  | 37.25d | 2026-03-05 09:00 A | 2026-04-27 11:00 A |  | 100% |  |  |  |  | 82.5h | 82.5h |
| 708 | 1.352.1 | заявка на сирену / звонок |  | 30min | 2026-03-05 09:00 A | 2026-03-05 09:30 A |  | 100% |  |  | start no earlier than 2026-03-05 09:00 | Шуранов Ю | 0.5h | 0.5h |
| 709 | 1.352.2 | доставка |  | 10d | 2026-03-12 09:00 A | 2026-03-25 18:00 A | 708 | 100% |  |  | start no earlier than 2026-03-12 08:00 | Карабанов | 80h | 80h |
| 710 | 1.352.3 | монтаж кнопка и звонок на складе (кнопку устанавливаем справа от ворот- звонок возле ВРУ слева |  | 2h | 2026-04-25 09:00 A | 2026-04-27 11:00 A | 709 | 100% |  |  | start no earlier than 2026-04-25 09:00 | Бобренок В | 2h | 2h |
| 711 | 1.353 | **установить профлист на левую стену** |  | 47d? | 2026-03-12 09:00 A | 2026-05-15 18:00 A |  | 100% |  |  |  |  | 185.5h | 185.5h |
| 712 | 1.353.1 | расчет материал с Олегом |  | 1h | 2026-03-12 09:00 A | 2026-03-12 10:00 A |  | 100% |  |  | start no earlier than 2026-03-12 09:00 | Шуранов Ю | 1h | 1h |
| 713 | 1.353.2 | заявка |  | 30min | 2026-03-19 09:00 A | 2026-03-19 09:30 A | 712 | 100% |  |  | start no earlier than 2026-03-19 09:00 | Шуранов Ю | 0.5h | 0.5h |
| 714 | 1.353.3 | доставка |  | 10d | 2026-03-19 09:30 A | 2026-04-02 09:30 A | 713 | 100% |  |  | start no earlier than 2026-03-04 08:00 | Карабанов | 80h | 80h |
| 715 | 1.353.4 | монтаж пробный ряд |  | 4h | 2026-04-22 09:00 A | 2026-04-22 13:00 A |  | 100% |  |  | start no earlier than 2026-04-22 09:00 | Некрасов А; Олег; Труфанов А | 12h | 12h |
| 716 | 1.353.5 | монтаж каркас |  | 1d? | 2026-04-23 14:00 A | 2026-04-24 13:00 A | 714, 715FS+1d | 100% |  |  | start no earlier than 2026-04-22 09:00 | Некрасов А; Труфанов А | 16h | 16h |
| 717 | 1.353.6 | монтаж лист |  | 6h | 2026-04-28 09:00 A | 2026-04-28 16:00 A | 716 | 100% |  |  | start no earlier than 2026-04-28 09:00 | Некрасов А; Труфанов А | 12h | 12h |
| 718 | 1.353.7 | монтаж уровень 2 |  | 4d | 2026-05-12 09:00 A | 2026-05-15 18:00 A |  | 100% |  |  | start no earlier than 2026-05-12 08:00 | Некрасов А; Труфанов А | 64h | 64h |
| 719 | 1.354 | **модернизация вентиляции** |  | 135.5d | 2026-03-13 09:00 A | 2026-09-15 13:00 A |  | 100% |  |  |  |  | 14.5h | 14.5h |
| 720 | 1.354.1 | заявка врезки для отбора проб |  | 15min | 2026-08-21 09:00 A | 2026-08-21 09:15 A |  | 100% |  |  | start no earlier than 2026-08-21 09:00 | Зорькин В | 0.25h | 0.25h |
| 721 | 1.354.2 | контроль доставки врезки для отбора проб |  | 15min | 2026-09-09 09:00 A | 2026-09-09 09:15 A | 720FS+7d | 100% |  |  | start no earlier than 2026-09-09 09:00 | Зорькин В | 0.25h | 0.25h |
| 722 | 1.354.3 | монтаж врезки для отбора проб |  | 4h | 2026-09-15 09:00 A | 2026-09-15 13:00 A | 721FS+1d | 100% |  |  | start no earlier than 2026-09-15 09:00 | Некрасов А; Труфанов А | 8h | 8h |
| 723 | 1.354.4 | составить схему, расчет |  | 2h | 2026-03-13 09:00 A | 2026-03-13 11:00 A |  | 100% |  |  | start no earlier than 2026-03-13 09:00 | Домоводов К | 2h | 2h |
| 724 | 1.354.5 | монтаж вентиляторов |  | 4h | 2026-05-12 09:00 A | 2026-05-12 13:00 A |  | 100% |  |  | start no earlier than 2026-05-12 08:00 | оплот | 4h | 4h |

| ID | WBS | Task | Type | Duration | Start | Finish | Predecessors | Complete | Constraint | Resources | Work | Actual work |
| --- | --- | --- | --- | --- | --- | --- | --- | --- | --- | --- | --- | --- |
| 725 | 1.355 | **заменаить фитинги на жирах** |  | 44.12d | 2026-02-19 09:00 A | 2026-04-22 10:00 A |  | 100% |  |  | 81.5h | 81.5h |
| 726 | 1.355.1 | заявка |  | 30min | 2026-02-19 09:00 A | 2026-02-19 09:30 A |  | 100% | start no earlier than 2026-02-19 09:00 | Шуранов Ю | 0.5h | 0.5h |
| 727 | 1.355.2 | доставка |  | 10d | 2026-02-19 09:30 A | 2026-03-05 09:30 A | 726 | 100% |  | Карабанов | 80h | 80h |
| 728 | 1.355.3 | контроль поставки | milestone | 0d | 2026-03-12 08:00 A | 2026-03-12 08:00 A | 727 | 100% | start no earlier than 2026-03-12 08:00 | Шуранов Ю |  |  |
| 729 | 1.355.4 | контроль. Пришли опять не те | milestone | 0min | 2026-03-12 09:00 A | 2026-03-12 09:00 A | 727, 728 | 100% | start no earlier than 2026-03-12 09:00 | Зорькин В |  |  |
| 730 | 1.355.5 | контроль | milestone | 0d | 2026-04-01 09:00 A | 2026-04-01 09:00 A |  | 100% | start no earlier than 2026-04-01 09:00 | Зорькин В |  |  |
| 731 | 1.355.6 | замена |  | 1h | 2026-04-22 09:00 A | 2026-04-22 10:00 A | 729FS+2d | 100% | start no earlier than 2026-04-22 09:00 | Бобренок В | 1h | 1h |
| 732 | 1.356 | **жиротопка замена воздухоотводчиков** |  | 24.12d | 2026-03-04 09:00 A | 2026-04-07 10:00 A |  | 100% |  |  | 41.25h | 41.25h |
| 733 | 1.356.1 | заявка |  | 15min | 2026-03-04 09:00 A | 2026-03-04 09:15 A |  | 100% | start no earlier than 2026-03-04 09:00 | Зорькин В | 0.25h | 0.25h |
| 734 | 1.356.2 | доставка |  | 5d | 2026-03-04 09:15 A | 2026-03-11 09:15 A | 733 | 100% | start no earlier than 2026-02-27 08:00 | Карабанов | 40h | 40h |
| 735 | 1.356.3 | замена |  | 1h | 2026-04-07 09:00 A | 2026-04-07 10:00 A | 734 | 100% | start no earlier than 2026-04-07 09:00 | Бундин В | 1h | 1h |
| 736 | 1.357 | **увеличить освещение в зоне квадропака** |  | 11.12d | 2026-03-04 09:00 A | 2026-03-19 10:00 A |  | 100% |  |  | 83.5h | 83.5h |
| 737 | 1.357.1 | составить список мматериал для монтажа |  | 30min | 2026-03-04 09:00 A | 2026-03-04 09:30 A |  | 100% | start no earlier than 2026-03-04 09:00 | Зорькин В; Шуранов Ю | 1h | 1h |
| 738 | 1.357.2 | заявка трос, светильники |  | 30min | 2026-03-04 09:30 A | 2026-03-04 10:00 A | 737 | 100% | start no earlier than 2026-02-27 08:00 | Шуранов Ю | 0.5h | 0.5h |
| 739 | 1.357.3 | доставка |  | 10d | 2026-03-05 10:00 A | 2026-03-19 10:00 A | 738FS+1d | 100% | start no earlier than 2026-02-27 08:00 | Карабанов | 80h | 80h |
| 740 | 1.357.4 | монтаж |  | 2h | 2026-03-06 09:00 A | 2026-03-06 11:00 A |  | 100% | start no earlier than 2026-03-06 09:00 | Бобренок В | 2h | 2h |
| 741 | 1.358 | **установить орг стекло/нерж на обратный ход ленты на раму конвейера** |  | 38.25d | 2026-03-03 09:00 A | 2026-04-24 11:00 A |  | 100% |  |  | 83.5h | 83.5h |
| 742 | 1.358.1 | заявка нерж |  | 30min | 2026-03-03 09:00 A | 2026-03-03 09:30 A |  | 100% | start no earlier than 2026-03-03 09:00 | Зорькин В | 0.5h | 0.5h |
| 743 | 1.358.2 | доставка |  | 10d | 2026-03-03 09:30 A | 2026-03-17 09:30 A | 742 | 100% | start no earlier than 2026-03-02 09:00 | Карабанов | 80h | 80h |
| 744 | 1.358.3 | подготовка материала в размер по аналогии 2 линии |  | 1h | 2026-04-15 09:00 A | 2026-04-15 10:00 A | 743 | 100% | start no earlier than 2026-04-15 09:00 | Бундин В | 1h | 1h |
| 745 | 1.358.4 | установка на остановке 1 линии (переустановить) |  | 2h | 2026-04-24 09:00 A | 2026-04-24 11:00 A |  | 100% | start no earlier than 2026-04-24 09:00 | Бобренок В | 2h | 2h |
| 746 | 1.359 | **установить роутер в зону экструдера для регистрации данных** |  | 2.12d | 2026-03-02 09:00 A | 2026-03-04 10:00 A |  | 100% |  |  | 10.17h | 10.17h |
| 747 | 1.359.1 | монтаж кабель / розетка, роутер |  | 4h | 2026-03-02 09:00 A | 2026-03-02 13:00 A |  | 100% | start no earlier than 2026-03-02 09:00 | Некрасов А; Труфанов А | 8h | 8h |
| 748 | 1.359.2 | Монтаж розетки для роутера |  | 1h | 2026-03-03 09:00 A | 2026-03-03 10:00 A |  | 100% | start no earlier than 2026-03-03 09:00 | Тимофеев В | 1h | 1h |
| 749 | 1.359.3 | Заявка Айтишнику на монтаж наконечников |  | 10min | 2026-03-03 09:00 A | 2026-03-03 09:10 A |  | 100% | start no earlier than 2026-03-03 09:00 | Зорькин В | 0.17h | 0.17h |
| 750 | 1.359.4 | Монтаж штекеров на кабель |  | 1h | 2026-03-04 09:00 A | 2026-03-04 10:00 A |  | 100% | start no earlier than 2026-03-04 09:00 | Коленкоров | 1h | 1h |

| ID | WBS | Task | Duration | Start | Finish | Predecessors | Complete | Constraint | Resources | Work | Actual work |
| --- | --- | --- | --- | --- | --- | --- | --- | --- | --- | --- | --- |
| 751 | 1.360 | **ремонт приточной вентиляции** | 47.25d | 2026-02-26 09:00 A | 2026-05-04 11:00 A |  | 100% |  |  | 334.5h | 334.5h |
| 752 | 1.360.1 | заявка калорифер | 30min | 2026-03-04 09:00 A | 2026-03-04 09:30 A |  | 100% | start no earlier than 2026-03-04 09:00 | Зорькин В | 0.5h | 0.5h |
| 753 | 1.360.2 | доставка | 10d | 2026-03-04 09:30 A | 2026-03-20 09:30 A | 752 | 100% |  | Карабанов | 80h | 80h |
| 754 | 1.360.3 | замена калорифер | 4h | 2026-03-11 09:00 A | 2026-03-11 13:00 A |  | 100% | start no earlier than 2026-03-11 09:00 | Некрасов А; Труфанов А | 8h | 8h |
| 755 | 1.360.4 | дать фото насоса | 20min | 2026-02-26 09:00 A | 2026-02-26 09:20 A |  | 100% | start no earlier than 2026-02-26 08:00 | Бундин В | 0.33h | 0.33h |
| 756 | 1.360.5 | заявка насос вода | 30min | 2026-03-02 09:30 A | 2026-03-02 10:00 A | 752, 755 | 100% | start no earlier than 2026-02-26 08:00 | Зорькин В | 0.5h | 0.5h |
| 757 | 1.360.6 | доставка | 10d | 2026-03-02 10:00 A | 2026-03-16 10:00 A | 756 | 100% | start no earlier than 2026-02-26 08:00 | Карабанов | 80h | 80h |
| 758 | 1.360.7 | контроль доставки насос и заслонка | 10min | 2026-03-24 09:00 A | 2026-03-24 09:10 A |  | 100% | start no earlier than 2026-03-24 08:00 | Зорькин В | 0.17h | 0.17h |
| 759 | 1.360.8 | замена насоса | 1h | 2026-03-25 09:10 A | 2026-03-25 10:10 A | 758FS+1d | 100% | start no earlier than 2026-03-24 09:00 | Труфанов А | 1h | 1h |
| 760 | 1.360.9 | заявка привод заслонки | 30min | 2026-03-04 09:00 A | 2026-03-04 09:30 A | 756 | 100% | start no earlier than 2026-03-04 09:00 | Зорькин В | 0.5h | 0.5h |
| 761 | 1.360.10 | доставка | 10d | 2026-03-04 09:30 A | 2026-03-18 09:30 A | 760 | 100% | start no earlier than 2026-02-26 08:00 | Карабанов | 80h | 80h |
| 762 | 1.360.11 | замена привода заслонки | 1h | 2026-05-04 09:00 A | 2026-05-04 10:00 A | 758FS+1d | 100% | start no earlier than 2026-05-04 09:00 | Бобренок В | 1h | 1h |
| 763 | 1.360.12 | заявка фильтры на приточная вентиляция | 30min | 2026-03-04 09:00 A | 2026-03-04 09:30 A |  | 100% | start no earlier than 2026-03-04 09:00 | Зорькин В | 0.5h | 0.5h |
| 764 | 1.360.13 | доставка | 10d | 2026-03-04 09:30 A | 2026-03-18 09:30 A | 763 | 100% | start no earlier than 2026-02-27 08:00 | Карабанов | 80h | 80h |
| 765 | 1.360.14 | замена | 2h | 2026-05-04 09:00 A | 2026-05-04 11:00 A | 764 | 100% | start no earlier than 2026-05-04 09:00 | Некрасов А | 2h | 2h |
| 766 | 1.361 | **монтаж регистратор данных линия 1 и 2:** | 1.12d | 2026-02-24 09:00 A | 2026-02-25 10:00 A |  | 100% |  |  | 5h | 5h |
| 767 | 1.361.1 | установить розетку и автомат для для блока питания в ШУ экструдера, без подключения | 2h | 2026-02-24 09:00 A | 2026-02-24 11:00 A |  | 100% | start no earlier than 2026-02-24 09:00 | Дедов В | 2h | 2h |
| 768 | 1.361.2 | монтаж безподключения кабель RS485 по аналогии с линия 3 - только часотный привод. На складе. | 1h | 2026-02-24 09:00 A | 2026-02-24 10:00 A |  | 100% | start no earlier than 2026-02-24 09:00 | Дедов В | 1h | 1h |
| 769 | 1.361.3 | подключение розеток для блока питания в ШУ | 1h | 2026-02-25 09:00 A | 2026-02-25 10:00 A |  | 100% | start no earlier than 2026-02-25 09:00 | Некрасов А | 1h | 1h |
| 770 | 1.361.4 | монтаж пультов управления и индикации регистратор, по аналогии с линия 3 | 1h | 2026-02-25 09:00 A | 2026-02-25 10:00 A |  | 100% | start no earlier than 2026-02-25 09:00 | Некрасов А | 1h | 1h |
| 771 | 1.362 | заменить пластик втулку на металл деталь уплотнение вала прекондицинера 2 линия | 1d? | 2025-09-08 09:00 A | 2025-09-08 18:00 A |  | 100% | start no earlier than 2025-09-08 09:00 |  |  |  |
| 772 | 1.363 | **баки жир 2 линия устноавить наконечники. От 23.05.25** | 265.25d | 2025-04-16 09:00 A | 2026-04-22 11:00 A |  | 100% |  |  | 42.5h | 42.5h |
| 773 | 1.363.1 | заявка на наконечнки | 30min | 2025-04-16 09:00 A | 2025-04-16 09:30 A |  | 100% | start no earlier than 2025-04-16 09:00 | Зорькин В | 0.5h | 0.5h |
| 774 | 1.363.2 | доставка | 5d | 2025-04-16 09:30 A | 2025-04-23 09:30 A | 773 | 100% | start no earlier than 2025-04-14 09:00 | Мультан | 40h | 40h |
| 775 | 1.363.3 | ТО каблей, клемников | 2h | 2026-04-22 09:00 A | 2026-04-22 11:00 A | 774 | 100% | start no earlier than 2026-04-22 09:00 | Труфанов А | 2h | 2h |

| ID | WBS | Task | Duration | Start | Finish | Predecessors | Complete | Actual finish | Constraint | Resources | Work | Actual work |
| --- | --- | --- | --- | --- | --- | --- | --- | --- | --- | --- | --- | --- |
| 776 | 1.364 | **установить фильтры на жир** | 89.12d? | 2025-05-14 09:00 A | 2025-09-16 10:00 A |  | 100% |  |  |  | 50h | 50h |
| 777 | 1.364.1 | изготовить переходники токарь разместить | 1h | 2025-09-08 09:00 A | 2025-09-08 10:00 A |  | 100% |  | start no earlier than 2025-09-08 09:00 | Зорькин В | 1h | 1h |
| 778 | 1.364.2 | контроль доставки | 5d | 2025-09-08 10:00 A | 2025-09-15 10:00 A | 777 | 100% |  | start no earlier than 2025-09-08 09:00 | Зорькин В | 40h | 40h |
| 779 | 1.364.3 | замена | 1d? | 2025-09-15 10:00 A | 2025-09-16 10:00 A | 778 | 100% |  | start no earlier than 2025-09-08 09:00 | Тимофеев В | 8h | 8h |
| 780 | 1.364.4 | установить фильтры на жир 2шт через краны на тройник | 1h | 2025-05-14 09:00 A | 2025-05-14 10:00 A |  | 100% |  | start no earlier than 2025-05-14 09:00 | Тимофеев В | 1h | 1h |
| 781 | 1.365 | **палетные ворота подача навесок + подача жир** | 14d? | 2025-07-17 09:00 A | 2025-08-05 18:00 A |  | 100% |  |  |  | 32h | 32h |
| 782 | 1.365.1 | подготовить чертеж | 1d? | 2025-07-17 09:00 A | 2025-07-17 18:00 A |  | 100% |  | start no earlier than 2025-07-17 09:00 | Зорькин В | 8h | 8h |
| 783 | 1.365.2 | сборка рамы | 2d | 2025-07-25 09:00 A | 2025-07-28 18:00 A | 782 | 100% |  | start no earlier than 2025-07-25 09:00 | Некрасов А | 16h | 16h |
| 784 | 1.365.3 | монтаж | 1d? | 2025-08-05 09:00 A | 2025-08-05 18:00 A | 783 | 100% |  | start no earlier than 2025-08-05 09:00 | Некрасов А | 8h | 8h |
| 785 | 1.366 | защита подшипников паронтом + подготовка | 4h | 2025-06-18 09:00 A | 2025-06-18 13:00 A |  | 100% |  | start no earlier than 2025-06-18 09:00 | Тимофеев В | 4h | 4h |
| 786 | 1.367 | **квадропак ТО + составить карту смазки и ТО + составить список ЗИП** | 0.5d | 2025-04-02 09:00 A | 2025-04-02 13:00 A |  | 100% |  |  |  | 4h | 4h |
| 787 | 1.367.1 | оформить карту ТО | 4h | 2025-04-02 09:00 A | 2025-04-02 13:00 A |  | 100% |  | start no earlier than 2025-04-02 09:00 | Зорькин В | 4h | 4h |
| 788 | 1.368 | **квадропак некрасивый шов - золотинка** | 104.25d | 2025-01-13 09:00 A | 2025-06-06 11:00 |  | 100% | 2025-04-17 16:30 |  |  | 8h | 8h |
| 789 | 1.368.1 | **изготовление термоножа с вставкойвставкой** | 0.12d | 2025-01-13 09:00 A | 2025-01-13 10:00 A |  | 100% |  |  |  | 1h | 1h |
| 790 | 1.368.1.1 | чертеж | 1h | 2025-01-13 09:00 A | 2025-01-13 10:00 A |  | 100% |  | start no earlier than 2025-01-13 09:00 | Зорькин В | 1h | 1h |
| 791 | 1.368.2 | **установка тефлона на термонож** | 42.25d | 2025-04-17 09:00 A | 2025-06-06 11:00 |  | 100% | 2025-04-17 16:30 |  |  | 7h | 7h |
| 792 | 1.368.2.1 | разработать метод крепления | 30min | 2025-04-17 09:00 A | 2025-04-17 09:30 A |  | 100% |  | start no earlier than 2025-04-17 09:00 | Зорькин В; Шуранов Ю | 1h | 1h |
| 793 | 1.368.2.2 | чертеж | 4h | 2025-04-17 09:30 A | 2025-04-17 14:30 A | 792 | 100% |  | start no earlier than 2025-01-17 09:00 | Зорькин В | 4h | 4h |
| 794 | 1.368.2.3 | орг изготовление деталей | 2h | 2025-04-17 14:30 A | 2025-04-17 16:30 A | 793 | 100% |  | start no earlier than 2025-04-16 09:00 | Шуранов Ю | 2h | 2h |
| 795 | 1.369 | **режет кабель ЛУКАС силовой в лотке эстакада у КПП** | 444.5d | 2024-08-02 09:00 A | 2026-04-16 13:00 A |  | 100% |  |  |  | 4.5h | 4.5h |
| 796 | 1.369.1 | решение о переговорах ГП | 30min | 2024-08-02 09:00 A | 2024-08-02 09:30 A |  | 100% |  | start no earlier than 2024-08-02 09:00 | Домоводов К | 0.5h | 0.5h |
| 797 | 1.369.2 | перекладка кабель | 4h | 2026-04-16 09:00 A | 2026-04-16 13:00 A |  | 100% |  | start no earlier than 2026-04-16 08:00 | Олег | 4h | 4h |
| 798 | 1.370 | **ШР2.2 замена автомат на циклон на номинальный** | 5.06d | 2026-04-10 09:00 A | 2026-04-17 09:30 A |  | 100% |  |  |  | 41.5h | 41.5h |
| 799 | 1.370.1 | прорверить какой стоит / заявка по мощности мотора | 30min | 2026-04-10 09:00 A | 2026-04-10 09:30 A |  | 100% |  | start no earlier than 2026-04-10 09:00 | Тимофеев В | 0.5h | 0.5h |
| 800 | 1.370.2 | достьавка | 5d | 2026-04-10 09:30 A | 2026-04-17 09:30 A | 799 | 100% |  | start no earlier than 2024-03-04 09:00 | Малинина М | 40h | 40h |
| 801 | 1.370.3 | замена | 1h | 2026-04-16 09:30 A | 2026-04-16 10:30 A | 800 | 100% |  | start no earlier than 2026-04-06 09:00 | Шуранов Ю | 1h | 1h |

| ID | WBS | Task | Type | Duration | Start | Finish | Predecessors | Complete | Remaining | Total slack | Free slack | Constraint | Resources | Work | Actual work |
| --- | --- | --- | --- | --- | --- | --- | --- | --- | --- | --- | --- | --- | --- | --- | --- |
| 802 | 1.371 | **кронштейн фотометки ТЕКО усилить** |  | 10.12d | 2024-09-11 09:00 A | 2024-09-25 10:00 A |  | 100% |  |  |  |  |  | 82h | 82h |
| 803 | 1.371.1 | поиск заявка кронштейна для датчика с регулировкой в3 плоскостях |  | 1h | 2024-09-11 09:00 A | 2024-09-11 10:00 A |  | 100% |  |  |  | start no earlier than 2024-09-11 09:00 | Зорькин В | 1h | 1h |
| 804 | 1.371.2 | доставка |  | 10d | 2024-09-11 10:00 A | 2024-09-25 10:00 A | 803 | 100% |  |  |  | start no earlier than 2024-09-11 09:00 | Мультан | 80h | 80h |
| 805 | 1.371.3 | замена |  | 1h | 2024-09-21 10:00 A | 2024-09-23 10:00 A | 804 | 100% |  |  |  | start no earlier than 2024-09-11 09:00 | Тимофеев В | 1h | 1h |
| 806 | 1.372 | **квадропак греет пневмоцилиндр термоножа** |  | 14.5d | 2024-09-12 09:00 A | 2024-10-02 13:00 A |  | 100% |  |  |  |  |  | 85h | 85h |
| 807 | 1.372.1 | решение о применении теплоизоляц пластины / заявка |  | 1h | 2024-09-12 09:00 A | 2024-09-12 10:00 A |  | 100% |  |  |  | start no earlier than 2024-09-12 09:00 | Зорькин В | 1h | 1h |
| 808 | 1.372.2 | доставка |  | 10d | 2024-09-12 10:00 A | 2024-09-26 10:00 A | 807 | 100% |  |  |  | start no earlier than 2024-09-11 09:00 | Мультан | 80h | 80h |
| 809 | 1.372.3 | замена |  | 4h | 2024-10-02 09:00 A | 2024-10-02 13:00 A | 808 | 100% |  |  |  | start no earlier than 2024-10-02 09:00 | Тимофеев В | 4h | 4h |
| 810 | 1.373 | **ремонт комппрессора - сдать по гарантии** |  | 739.12d | 2023-10-31 09:00 A | 2026-08-31 10:00 A |  | 100% |  |  |  |  |  | 2h | 2h |
| 811 | 1.373.1 | контроль снабжения - отправитьт поставщику |  | 1h | 2023-10-31 09:00 A | 2023-10-31 10:00 A |  | 100% |  |  |  | start no earlier than 2023-10-31 09:00 | Лобанов И | 1h | 1h |
| 812 | 1.373.2 | контроль возврата |  | 1h | 2026-08-31 09:00 A | 2026-08-31 10:00 A | 811 | 100% |  |  |  | start no earlier than 2026-08-31 09:00 | Зорькин В | 1h | 1h |
| 813 | 1.374 | режет металлом изоляцию кабеля в прорходе стены в 1 цех угол комппрессора - обезвредить |  | 1h | 2023-12-28 09:00 A | 2023-12-28 10:00 A |  | 100% |  |  |  | start no earlier than 2023-12-28 09:00 | Бобренок В; Дедов В | 2h | 2h |
| 814 | 1.375 | **карантин и потом удалить** |  | 206.25d? | 2026-03-13 09:00 A | 2026-12-09 11:00 |  | 68% | 65.7d? | 65.34d |  |  |  | 264.17h | 180.42h |
| 815 | 1.375.1 | **замена сетка печи линия 1** |  | 44.09d? | 2026-08-12 09:00 A | 2026-10-02 09:45 |  | 8% | 40.52d? | 119.5d |  |  |  | 9.5h | 1h |
| 816 | 1.375.1.1 | замерить параметры сетки |  | 15min | 2026-08-12 09:00 A | 2026-08-12 09:15 A |  | 100% |  |  |  | start no earlier than 2026-08-12 09:00 | Домоводов К; Тимофеев В | 0.5h | 0.5h |
| 817 | 1.375.1.2 | получить счет на сетку КИТАЙ |  | 15min | 2026-08-17 09:00 A | 2026-08-17 09:15 A | 816 | 100% |  |  |  | start no earlier than 2026-08-17 09:00 | Зорькин В | 0.25h | 0.25h |
| 818 | 1.375.1.3 | контроль оплата | milestone | 0d | 2026-08-21 09:00 A | 2026-08-21 09:00 A | 817FS+2d | 100% |  |  |  | start no earlier than 2026-08-21 09:00 | Зорькин В |  |  |
| 819 | 1.375.1.4 | контроль доставки |  | 15min | 2026-09-30 09:00 A | 2026-09-30 09:15 A | 818FS+30d | 100% |  |  |  | start no earlier than 2026-09-30 09:00 | Зорькин В | 0.25h | 0.25h |
| 820 | 1.375.1.5 | приемка |  | 30min | 2026-09-30 09:15 | 2026-09-30 09:45 | 819 |  |  | 119.5d | 0d | start no earlier than 2026-08-10 08:00 | Зорькин В | 0.5h |  |
| 821 | 1.375.1.6 | замена |  | 1d? | 2026-10-01 09:45 | 2026-10-02 09:45 | 820FS+1d |  |  | 119.5d |  | start no earlier than 2026-09-26 09:00 | Тимофеев В | 8h |  |
| 822 | 1.375.2 | **зависает диспелей на расходомере 2л** |  | 59.06d | 2026-08-11 09:00 A | 2026-10-20 09:30 |  | 82% | 10.74d | 105.53d |  |  |  | 2.75h | 2.25h |
| 823 | 1.375.2.1 | контроль поставки |  | 15min | 2026-08-11 09:00 A | 2026-08-11 09:15 A |  | 100% |  |  |  | start no earlier than 2026-08-11 09:00 | Домоводов К | 0.25h | 0.25h |
| 824 | 1.375.2.2 | замена кабель к монитору |  | 30min | 2026-08-19 09:00 A | 2026-08-19 09:30 A | 823 | 100% |  |  |  | start no earlier than 2026-08-19 09:00 | Домоводов К | 0.5h | 0.5h |
| 825 | 1.375.2.3 | объеденить минус шину контроллера с нулевым проводом оборудования ч/з резистор 10 Ом |  | 30min | 2026-10-20 09:00 | 2026-10-20 09:30 |  |  |  | 105.53d |  | start no earlier than 2026-10-20 09:00 | Дедов В | 0.5h |  |
| 826 | 1.375.2.4 | замена кабель от ЧП к контроллеру на экранированный |  | 30min | 2026-08-24 09:00 A | 2026-08-24 09:30 A |  | 100% |  |  |  | start no earlier than 2026-08-24 09:00 | Домоводов К | 0.5h | 0.5h |
| 827 | 1.375.2.5 | замена блок питания 5в |  | 1h | 2026-08-13 09:00 A | 2026-08-13 10:00 A |  | 100% |  |  |  | start no earlier than 2026-08-13 09:00 | Труфанов А | 1h | 1h |

| ID | WBS | Task | Duration | Start | Finish | Predecessors | Complete | Remaining | Total slack | Free slack | Constraint | Resources | Work | Actual work |
| --- | --- | --- | --- | --- | --- | --- | --- | --- | --- | --- | --- | --- | --- | --- |
| 828 | 1.375.3 | **ревизия красного смесителя 2 линия (просыпается мука)** | 34.03d | 2026-08-17 09:00 A | 2026-09-25 09:15 |  | 92% | 2.62d | 126.56d |  |  |  | 3.25h | 3h |
| 829 | 1.375.3.1 | подтянуть торцевое уплотнение смесителя | 30min | 2026-08-17 09:00 A | 2026-08-17 09:30 A |  | 100% |  |  |  | start no earlier than 2026-08-17 09:00 | Бундин В | 0.5h | 0.5h |
| 830 | 1.375.3.2 | запрос штатное уплотнеие у производителя / заявка | 30min | 2026-08-19 09:00 A | 2026-08-19 09:30 A |  | 100% |  |  |  | start no earlier than 2026-08-19 09:00 | Шуранов Ю | 0.5h | 0.5h |
| 831 | 1.375.3.3 | контроль поставки уплотнение торцевое вала | 15min | 2026-09-25 09:00 | 2026-09-25 09:15 | 830FS+5d |  |  | 126.56d |  | start no earlier than 2026-09-25 09:00 | Зорькин В | 0.25h |  |
| 832 | 1.375.3.4 | замена | 2h | 2026-09-01 09:00 A | 2026-09-01 11:00 A | 831FS+1d | 100% |  |  |  | start no earlier than 2026-09-04 09:00 | Тимофеев В | 2h | 2h |
| 833 | 1.375.4 | **выполнить смотровые люки состояния цепи средниий и верхние этажи. На торцевой крышке с стороны экструдера.** | 37d | 2026-07-14 09:00 A | 2026-09-02 18:00 |  | 13% | 32.29d | 147.59d |  |  |  | 9.17h | 1.17h |
| 834 | 1.375.4.1 | заявка шарниры нерж + бугельный зажим | 1h | 2026-07-14 09:00 A | 2026-07-14 10:00 A |  | 100% |  |  |  | start no earlier than 2026-07-14 08:00 | Домоводов К | 1h | 1h |
| 835 | 1.375.4.2 | контроль доставка | 10min | 2026-08-17 09:00 A | 2026-08-17 09:10 A | 834FS+7d | 100% |  |  |  | start no earlier than 2026-08-17 09:00 | Шуранов Ю | 0.17h | 0.17h |
| 836 | 1.375.4.3 | монтаж 1 линия | 4h | 2026-09-02 09:00 | 2026-09-02 13:00 | 835FS+1d |  |  | 147.59d | 0d | start no earlier than 2026-09-02 09:00 | Макаревич А | 4h |  |
| 837 | 1.375.4.4 | монтаж 2 линия | 4h | 2026-09-02 14:00 | 2026-09-02 18:00 | 836 |  |  | 147.59d |  | start no earlier than 2026-07-14 08:00 | Макаревич А | 4h |  |
| 838 | 1.375.5 | **сборка раковина нерж для мойки конвейер** | 7.25d? | 2026-11-30 09:00 | 2026-12-09 11:00 |  |  |  | 65.34d |  |  |  | 34h |  |
| 839 | 1.375.5.1 | подготовить данные, оформить как проект / инициировать совещание | 2h | 2026-11-30 09:00 | 2026-11-30 11:00 |  |  |  | 65.34d | 0d | start no earlier than 2026-11-30 09:00 | Зорькин В | 2h |  |
| 840 | 1.375.5.2 | совещание с руководителями / фиксация решения | 1d? | 2026-12-01 11:00 | 2026-12-02 11:00 | 839FS+1d |  |  | 65.34d | 0d | start no earlier than 2026-08-31 09:00 | Зорькин В | 8h |  |
| 841 | 1.375.5.3 | подготовить чертеж раковины, проверить материал | 1d? | 2026-12-03 11:00 | 2026-12-04 11:00 | 840FS+1d |  |  | 65.34d | 0d | start no earlier than 2026-09-08 09:00 | Зорькин В | 8h |  |
| 842 | 1.375.5.4 | сборка | 2d | 2026-12-07 11:00 | 2026-12-09 11:00 | 841FS+1d |  |  | 65.34d |  | start no earlier than 2026-07-14 08:00 | Бундин В | 16h |  |
| 843 | 1.375.6 | **изготовить шило для экструдерщиков, они подскажут** | 1h? | 2026-06-26 09:00 | 2026-06-26 10:00 |  |  |  |  |  |  |  | 0.25h |  |
| 844 | 1.375.6.1 | заказать спицы не пустые | 15min | 2026-09-01 09:00 | 2026-09-01 09:15 |  |  |  | 149.56d |  | start no earlier than 2026-09-01 09:00 | Шуранов Ю | 0.25h |  |
| 845 | 1.375.7 | модернизация опроры пневмоцилиндра встряживателя №1 квадропак | 4h | 2026-10-21 09:00 | 2026-10-21 13:00 |  |  |  | 104.09d |  | start no earlier than 2026-10-21 09:00 | Некрасов А | 4h |  |
| 846 | 1.375.8 | **установка фосунок - подача жира 1 линия** | 22.12d? | 2026-06-05 09:00 A | 2026-07-07 10:00 |  | 17% | 18.44d? | 189.47d |  |  |  | 4h | 2h |
| 847 | 1.375.8.1 | сборка кронштейн для фильтров + счетчик/ покраска | 1h | 2026-06-05 09:00 A | 2026-06-05 10:00 A |  | 100% |  |  |  | start no earlier than 2026-06-05 09:00 | Тимофеев В | 1h | 1h |
| 848 | 1.375.8.2 | установка | 1d? | 2026-07-06 09:00 | 2026-07-06 18:00 |  |  |  | 189.59d |  | start no earlier than 2026-07-06 09:00 |  |  |  |
| 849 | 1.375.8.3 | монтаж в линию | 2h | 2026-07-06 09:00 | 2026-07-06 11:00 |  |  |  | 190.34d |  | start no earlier than 2026-07-06 09:00 | Тимофеев В | 2h |  |
| 850 | 1.375.8.4 | монтаж розетка для блок питания 5в для регистратора | 1h | 2026-07-07 09:00 A | 2026-07-07 10:00 A |  | 100% |  |  |  | start no earlier than 2026-07-07 09:00 | Тимофеев В | 1h | 1h |
| 851 | 1.375.9 | **обслуживание инсекьюеров, утлизация отработанных ламп** | 127.12d | 2026-04-21 08:00 A | 2026-10-05 10:00 |  | 98% | 2.84d | 117.47d |  |  |  | 89.5h | 87.5h |
| 852 | 1.375.9.1 | Составить список ламп по цехам и передать Зорькину | 2h | 2026-04-21 08:00 A | 2026-04-21 11:00 A |  | 100% |  |  |  | start no earlier than 2026-04-21 08:00 | Тимофеев В | 2h | 2h |
| 853 | 1.375.9.2 | Заказать новые лампы | 30min | 2026-04-21 10:00 A | 2026-04-21 10:30 A | 852 | 100% |  |  |  | start no earlier than 2026-04-21 08:00 | Зорькин В | 0.5h | 0.5h |
| 854 | 1.375.9.3 | доставка | 10d | 2026-04-21 10:30 A | 2026-05-05 10:30 A | 853 | 100% |  |  |  | start no earlier than 2026-04-21 08:00 | Карабанов | 80h | 80h |
| 855 | 1.375.9.4 | снять все светильники мухоловки, извлечь лампы, уложить аккуратно в коробку (оставить в слесарке отработанные) светильники снятые передать мастеру смены для мытья | 2h | 2026-05-05 10:30 A | 2026-05-05 12:30 A | 854 | 100% |  |  |  | start no earlier than 2026-05-01 09:00 | Бобренок В | 2h | 2h |
| 856 | 1.375.9.5 | после чистки установить лампы в светильники, тусклые замнеить | 2h | 2026-05-12 09:00 A | 2026-05-12 11:00 A | 855 | 100% |  |  |  | start no earlier than 2026-05-12 09:00 | Бундин В | 2h | 2h |
| 857 | 1.375.9.6 | сообщить кол-во замененных ламп нач цехов | 1h | 2026-05-12 11:00 A | 2026-05-12 12:00 A | 856 | 100% |  |  |  | start no earlier than 2026-05-01 09:00 | Шуранов Ю | 1h | 1h |
| 858 | 1.375.9.7 | запрос договор на утилизацию ламп | 1h | 2026-09-14 09:00 | 2026-09-14 10:00 |  |  |  | 137.34d | 19.88d | start no earlier than 2026-09-14 09:00 | Домоводов К | 1h |  |
| 859 | 1.375.9.8 | подготовить лампы к утилизации | 1h | 2026-10-05 09:00 | 2026-10-05 10:00 | 857, 858 |  |  | 117.47d |  | start no earlier than 2026-10-05 09:00 | Тимофеев В | 1h |  |

| ID | WBS | Task | Duration | Start | Finish | Predecessors | Complete | Remaining | Actual start | Total slack | Constraint | Resources | Work | Actual work |
| --- | --- | --- | --- | --- | --- | --- | --- | --- | --- | --- | --- | --- | --- | --- |
| 860 | 1.375.10 | **установить принтер датаматрикс на пролистыватель** | 151d? | 2026-03-13 09:00 A | 2026-09-30 18:00 |  | 20% | 120.8d? |  | 120.59d |  |  | 11h | 3h |
| 861 | 1.375.10.1 | разработка крепления принтера | 1h | 2026-03-13 09:00 A | 2026-03-13 10:00 A |  | 100% |  |  |  | start no earlier than 2026-03-13 08:00 | Зорькин В; Шуранов Ю | 2h | 2h |
| 862 | 1.375.10.2 | настройка ПО с агрегатором | 1d? | 2026-09-30 09:00 | 2026-09-30 18:00 |  |  |  |  | 120.59d | start no earlier than 2026-09-30 09:00 | Домоводов К | 8h |  |
| 863 | 1.375.10.3 | изучение документации | 1h | 2026-05-28 09:00 A | 2026-05-28 10:00 A |  | 100% |  |  |  | start no earlier than 2026-05-28 09:00 | Домоводов К | 1h | 1h |
| 864 | 1.375.11 | **заменить плинтус стена вдольпечи 2** | 11.06d? | 2026-03-26 09:00 | 2026-04-10 09:30 |  | 91% | 1d? | 2026-03-13 09:00 |  |  |  | 96.5h | 80.5h |
| 865 | 1.375.11.1 | заявка | 30min | 2026-03-13 09:00 A | 2026-03-13 09:30 A |  | 100% |  |  |  | start no earlier than 2026-03-13 09:00 | Шуранов Ю | 0.5h | 0.5h |
| 866 | 1.375.11.2 | доставка | 10d | 2026-03-13 09:30 A | 2026-03-27 09:30 A | 865 | 100% |  |  |  | start no earlier than 2026-03-12 08:00 | Карабанов | 80h | 80h |
| 867 | 1.375.11.3 | замена | 1d? | 2026-10-12 09:00 | 2026-10-12 18:00 | 866 |  |  |  | 111.59d | start no earlier than 2026-10-12 09:00 | Некрасов А; Олег | 16h |  |
| 868 | 1.375.12 | **убрать кабеля с пола на упаковке 1 цех** | 0.02d | 2026-09-01 09:00 | 2026-09-01 09:10 |  |  |  |  | 149.57d |  |  | 0.17h |  |
| 869 | 1.375.12.1 | проверить на актуальность | 10min | 2026-09-01 09:00 | 2026-09-01 09:10 |  |  |  |  | 149.57d | start no earlier than 2026-09-01 09:00 | Зорькин В | 0.17h |  |
| 870 | 1.375.13 | **убрать кабеля с пола и заменить переноски штатными розетками - участок жира 1 цех** | 0.01d | 2026-09-01 09:00 | 2026-09-01 09:05 |  |  |  |  | 149.58d |  |  | 0.08h |  |
| 871 | 1.375.13.1 | проверить на актуальность | 5min | 2026-09-01 09:00 | 2026-09-01 09:05 |  |  |  |  | 149.58d | start no earlier than 2026-09-01 09:00 | Зорькин В | 0.08h |  |
| 872 | 1.376 | изготовить ключь для ТП | 2h | 2023-06-21 09:00 A | 2023-06-21 11:00 A |  | 100% |  |  |  | start no earlier than 2023-06-21 09:00 | Домоводов К | 2h | 2h |
| 873 | 1.377 | заменитьт автомат 63С кондиционер 1 цех | 1h | 2023-06-22 09:00 A | 2023-06-22 10:00 A |  | 100% |  |  |  | start no earlier than 2023-06-22 09:00 | Тимофеев В | 1h | 1h |
| 874 | 1.378 | **Барабаны 2 линия дражжировка** | 18d | 2026-04-21 09:00 A | 2026-05-14 18:00 A |  | 100% |  |  |  |  |  | 94.5h | 94.5h |
| 875 | 1.378.1 | Проработать модернизацию форсунок | 3h | 2026-04-22 09:00 A | 2026-04-22 12:00 A |  | 100% |  |  |  | start no earlier than 2026-04-22 09:00 | Зорькин В; Домоводов К | 6h | 6h |
| 876 | 1.378.2 | сделать заявку на доп форсунки, расходники | 30min | 2026-04-22 09:00 A | 2026-04-22 09:30 A |  | 100% |  |  |  | start no earlier than 2026-04-22 09:00 | Зорькин В | 0.5h | 0.5h |
| 877 | 1.378.3 | доставка | 10d | 2026-04-30 09:00 A | 2026-05-14 18:00 A |  | 100% |  |  |  | start no earlier than 2026-04-30 09:00 | Карабанов | 80h | 80h |
| 878 | 1.378.4 | Внедрение и монтаж | 2h | 2026-05-08 09:00 A | 2026-05-08 11:00 A |  | 100% |  |  |  | start no earlier than 2026-05-08 09:00 | Зорькин В; Тимофеев В | 4h | 4h |
| 879 | 1.378.5 | **Парогенератор** | 0.25d | 2026-04-21 09:00 A | 2026-04-21 11:00 A |  | 100% |  |  |  |  |  | 4h | 4h |
| 880 | 1.378.5.1 | Проверить термадатчик (панельтемпературы) TC4R на корректность работы, скачет температура, по необходимости заменить | 2h | 2026-04-21 09:00 A | 2026-04-21 11:00 A |  | 100% |  |  |  | start no earlier than 2026-04-21 08:00 | Бундин В; Зорькин В | 4h | 4h |
| 881 | 1.379 | **Звонок на экструдер** | 14.12d | 2026-04-07 09:00 A | 2026-04-27 10:00 A |  | 100% |  |  |  |  |  | 6h | 6h |
| 882 | 1.379.1 | Протяжка кабеля от ворот к экструдерщикам | 4h | 2026-04-07 09:00 A | 2026-04-07 13:00 A |  | 100% |  |  |  | start no earlier than 2026-04-22 09:00 | Дедов В | 4h | 4h |
| 883 | 1.379.2 | монтаж звонка | 1h | 2026-04-25 09:00 A | 2026-04-27 10:00 A | 882 | 100% |  |  |  | start no earlier than 2026-04-25 09:00 | Дедов В | 1h | 1h |
| 884 | 1.379.3 | монтаж кнопки за воротами | 1h | 2026-04-25 10:00 A | 2026-04-27 10:00 A | 883 | 100% |  |  |  | start no earlier than 2026-04-21 08:00 | Дедов В | 1h | 1h |

| ID | WBS | Task | Type | Duration | Start | Finish | Predecessors | Complete | Actual start | Actual finish | Constraint | Resources | Work | Actual work |
| --- | --- | --- | --- | --- | --- | --- | --- | --- | --- | --- | --- | --- | --- | --- |
| 885 | 1.380 | **Насос гидролизата** |  | 28.01d | 2026-08-04 09:00 A | 2026-09-10 09:05 A |  | 100% |  |  |  |  | 0.42h | 0.42h |
| 886 | 1.380.1 | Заказать ремкомплект шнек, резинка, трубка, связаться с производителем |  | 20min | 2026-08-04 09:00 A | 2026-08-04 09:20 A |  | 100% |  |  | start no earlier than 2026-08-04 09:00 | Зорькин В | 0.33h | 0.33h |
| 887 | 1.380.2 | Доставка контроль сам насос шетсрен |  | 5min | 2026-09-10 09:00 A | 2026-09-10 09:05 A |  | 100% |  |  | start no earlier than 2026-09-10 09:00 | Зорькин В | 0.08h | 0.08h |
| 888 | 1.381 | **Дражжировка конвейер №1 после печки** |  | 122.12d | 2026-04-22 08:00 A | 2026-09-30 10:00 A |  | 100% |  |  |  |  | 13.08h | 13.08h |
| 889 | 1.381.1 | Поставить резьбовые клепки на боковой кожух, где кончается лента |  | 1h | 2026-09-30 09:00 A | 2026-09-30 10:00 A |  | 100% |  |  | start no earlier than 2026-09-30 09:00 | Тимофеев В | 1h | 1h |
| 890 | 1.381.2 | Ремонт насоса от 2 линии 1 цех, статор взять на складе |  | 2h | 2026-09-10 09:00 A | 2026-09-10 11:00 A |  | 100% |  |  | start no earlier than 2026-09-10 09:00 | Некрасов А | 2h | 2h |
| 891 | 1.381.3 | контроль героторная пара оплата |  | 5min | 2026-08-21 09:00 A | 2026-08-21 09:05 A |  | 100% |  |  | start no earlier than 2026-08-21 09:00 | Зорькин В | 0.08h | 0.08h |
| 892 | 1.381.4 | Замена сальника на поворотном столе/проверить |  | 1h | 2026-07-23 09:00 A | 2026-07-23 10:00 A |  | 100% |  |  | start no earlier than 2026-07-23 08:00 | Бундин В | 1h | 1h |
| 893 | 1.381.5 | **дражжировка** |  | 0.62d | 2026-04-22 08:00 A | 2026-04-22 15:00 A |  | 100% |  |  |  |  | 9h | 9h |
| 894 | 1.381.5.1 | Установка рамы для фильтров |  | 3h | 2026-04-22 08:00 A | 2026-04-22 12:00 A |  | 100% |  |  | start no earlier than 2026-04-22 08:00 | Тимофеев В | 3h | 3h |
| 895 | 1.381.5.2 | установка счетчика |  | 1h | 2026-04-22 11:00 A | 2026-04-22 12:00 A | 894 | 100% |  |  | start no earlier than 2026-04-22 08:00 | Тимофеев В | 1h | 1h |
| 896 | 1.381.5.3 | кронштейн под пульт расходомера |  | 2h | 2026-04-22 12:00 A | 2026-04-22 15:00 A | 895 | 100% |  |  | start no earlier than 2026-04-22 08:00 | Тимофеев В | 2h | 2h |
| 897 | 1.381.5.4 | **Парогенератор** |  | 0.38d | 2026-04-22 09:00 A | 2026-04-22 12:00 A |  | 100% |  |  |  |  | 3h | 3h |
| 898 | 1.381.5.4.1 | чистка парогенераторов 1 и 2 линия |  | 3h | 2026-04-22 09:00 A | 2026-04-22 12:00 A |  | 100% |  |  | start no earlier than 2026-04-22 08:00 | Бундин В | 3h | 3h |
| 899 | 1.382 | **отмена** |  | 70.75d? | 2026-04-22 09:00 | 2026-07-29 16:00 A |  | 100% | 2026-07-08 09:00 |  |  |  | 12.33h | 12.33h |
| 900 | 1.382.1 | **Парогенератор** |  | 27.5d? | 2026-04-22 09:00 | 2026-05-25 13:00 |  | 100% | 2026-07-08 09:00 | 2026-07-29 16:00 |  |  | 12.33h | 12.33h |
| 901 | 1.382.1.1 | Замена говротрубы 1 линия |  | 1h | 2026-07-08 09:00 A | 2026-07-08 10:00 A |  | 100% |  |  | start no earlier than 2026-07-08 09:00 | Бобренок В | 1h | 1h |
| 902 | 1.382.1.2 | Осмотр стоек где стоит реле давления до расширительного бачка |  | 30min | 2026-07-27 09:00 A | 2026-07-27 09:30 A |  | 100% |  |  | start no earlier than 2026-07-27 09:00 | Тимофеев В | 0.5h | 0.5h |
| 903 | 1.382.1.3 | Составить список материала для ремонта и изготовления стоек |  | 30min | 2026-07-27 09:30 A | 2026-07-27 10:00 A | 902 | 100% |  |  | start no earlier than 2026-05-27 09:00 | Тимофеев В | 0.5h | 0.5h |
| 904 | 1.382.1.4 | Заказать недостающий материал |  | 20min | 2026-07-27 09:00 A | 2026-07-27 09:20 A |  | 100% |  |  | start no earlier than 2026-07-27 09:00 | Зорькин В | 0.33h | 0.33h |
| 905 | 1.382.1.5 | Изготовление стоек |  | 3h | 2026-07-29 09:00 A | 2026-07-29 12:00 A | 903 | 100% |  |  | start no earlier than 2026-07-29 09:00 | Некрасов А | 3h | 3h |
| 906 | 1.382.1.6 | Замена стойки под реле давления |  | 3h | 2026-07-29 12:00 A | 2026-07-29 16:00 A | 905 | 100% |  |  | start no earlier than 2026-05-27 09:00 | Некрасов А | 3h | 3h |
| 907 | 1.382.1.7 | Составить список материалов или заключение по 2-м частотникам из 1 цеха от теко 0,4 (поворотный стол и конвейер) |  | 1h | 2026-07-27 08:00 A | 2026-07-27 10:00 A |  | 100% |  |  | start no earlier than 2026-07-27 08:00 | Дедов В | 1h | 1h |
| 908 | 1.382.1.8 | Взять трубку в нашем кабинете и насверлить по всей длине симметрично отверстия самым маленьким сверлом которое у нас есть (по этому заданию позвонить) |  | 3h | 2026-07-28 08:00 A | 2026-07-28 12:00 A |  | 100% |  |  | start no earlier than 2026-07-28 08:00 | Макаревич А | 3h | 3h |
| 909 | 1.383 | Демонтаж разборка/сборка редукторы шлюз. Питателей циклона 1 и 2 линия | manual | 3h | 2026-04-24 09:00 A | 2026-04-24 12:00 A |  | 100% |  |  | start no earlier than 2026-04-24 09:00 | Бундин В | 3h | 3h |

| ID | WBS | Task | Type | Duration | Start | Finish | Complete | Remaining | Actual start | Total slack | Constraint | Resources | Work | Actual work |
| --- | --- | --- | --- | --- | --- | --- | --- | --- | --- | --- | --- | --- | --- | --- |
| 910 | 1.384 | **Теко 0,4** |  | 0.38d | 2026-04-03 09:00 A | 2026-04-03 12:00 A | 100% |  |  |  |  |  | 3h | 3h |
| 911 | 1.384.1 | замена ковшей | manual | 3h | 2026-04-03 09:00 A | 2026-04-03 12:00 A | 100% |  |  |  | start no earlier than 2026-04-03 09:00 | Макаревич А | 3h | 3h |
| 912 | 2 | **2 цех** |  | 249d? | 2023-11-16 09:00 | 2024-10-29 18:00 | 89% | 27.52d? | 2024-01-08 09:00 |  |  |  | 3103.5h | 2770.25h |
| 913 | 2.1 | Настройка и подключение ворот с электромагнитом, продолжаем работу |  | 8h | 2026-11-27 09:00 | 2026-11-27 18:00 |  |  |  | 72.59d | start no earlier than 2026-11-27 08:00 | Дедов В | 8h |  |
| 914 | 2.2 | Для электромагнита использовать свободные жилы кабеля UTP |  | 2h | 2026-11-27 09:00 | 2026-11-27 11:00 |  |  |  | 73.34d | start no earlier than 2026-11-27 08:00 | Дедов В | 2h |  |
| 915 | 2.3 | Замена переключателя в шкафу синий бункер |  | 1h | 2026-11-27 09:00 | 2026-11-27 10:00 |  |  |  | 73.47d | start no earlier than 2026-11-27 09:00 | Тимофеев В | 1h |  |
| 916 | 2.4 | Замена стульчака в туалете правая дверь |  | 1h | 2026-11-25 09:00 A | 2026-11-25 10:00 A | 100% |  |  |  | start no earlier than 2026-11-25 08:00 | Николаев | 1h | 1h |
| 917 | 2.5 | Ремонт фартука поломоечной машины (впаять проволоку в фронтальный разрыв, по периметру обклеить космофеном с содой, дополнитьльно армировать стеклотканью) установить обратно |  | 3h | 2026-11-25 09:00 A | 2026-11-25 12:00 A | 100% |  |  |  | start no earlier than 2026-11-25 09:00 | Николаев | 3h | 3h |
| 918 | 2.6 | Замена автомата в печи, не работает |  | 1h | 2026-11-24 09:00 | 2026-11-24 10:00 |  |  |  | 76.47d | start no earlier than 2026-11-24 09:00 | Николаев | 1h |  |
| 919 | 2.7 | Осмотр вентиляции, жалуются на вонь |  | 1h | 2026-11-19 09:00 A | 2026-11-19 10:00 A | 100% |  |  |  | start no earlier than 2026-11-19 09:00 | Труфанов А; Некрасов А | 2h | 2h |
| 920 | 2.8 | состаивть инструкцию по эксплуатации на пролистыватель |  | 4h | 2026-11-17 09:00 | 2026-11-17 13:00 |  |  |  | 81.09d | start no earlier than 2026-11-17 09:00 | Зорькин В | 4h |  |
| 921 | 2.9 | заменаить лопатки на прекондиционере |  | 4h | 2026-11-20 09:00 A | 2026-11-20 13:00 A | 100% |  |  |  | start no earlier than 2026-11-20 09:00 | Тимофеев В; Макаревич А | 8h | 8h |
| 922 | 2.10 | ремонт ручка двери заявка битрикс |  | 1h | 2026-11-13 09:00 A | 2026-11-13 10:00 A | 100% |  |  |  | start no earlier than 2026-11-17 09:00 | Дедов В | 1h | 1h |
| 923 | 2.11 | Найти на синем складе лопатки от прекондиционера LT 85 |  | 1h | 2026-11-19 09:00 A | 2026-11-19 10:00 A | 100% |  |  |  | start no earlier than 2026-11-19 09:00 | Тимофеев В | 1h | 1h |
| 924 | 2.12 | Повешать болер, горизонтальный, на мойке, где экструдер. Попросить помощи пацанов на экструдере |  | 1h | 2026-11-12 09:00 A | 2026-11-12 10:00 A | 100% |  |  |  | start no earlier than 2026-11-12 08:00 | Бундин В | 1h | 1h |
| 925 | 2.13 | Повесить на кухне информационный стенд |  | 1h | 2026-11-11 09:00 A | 2026-11-11 10:00 A | 100% |  |  |  | start no earlier than 2026-11-11 08:00 | Дедов В | 1h | 1h |
| 926 | 2.14 | течь редуктор смесителя с стороны эл мотора - разборка /замена сальник\ |  | 4h | 2026-11-12 09:00 A | 2026-11-12 13:00 A | 100% |  |  |  | start no earlier than 2026-11-12 09:00 | Тимофеев В | 4h | 4h |
| 927 | 2.15 | Замена и ремонт инсектицидных ламп 7 шт (сделана 1шт) подробная информация состояния и что нужно |  | 3h | 2026-11-18 09:00 A | 2026-11-18 12:00 A | 100% |  |  |  | start no earlier than 2026-11-18 09:00 | Дедов В | 3h | 3h |
| 928 | 2.16 | Замена подшипника на прекондиционере передний на остановке |  | 2h | 2026-11-05 09:00 A | 2026-11-05 11:00 A | 100% |  |  |  | start no earlier than 2026-11-05 08:00 | Дедов В | 2h | 2h |
| 929 | 2.17 | Проверить приточку, проконтролировать работу и теплового узла |  | 1h | 2026-11-03 09:00 A | 2026-11-03 10:00 A | 100% |  |  |  | start no earlier than 2026-11-03 08:00 | Дедов В | 1h | 1h |
| 930 | 2.18 | Заземление пролистывателя/кусается/устранить, найти где пробивает на корпус |  | 2h | 2026-11-03 09:00 A | 2026-11-03 11:00 A | 100% |  |  |  | start no earlier than 2026-11-03 08:00 | Дедов В | 2h | 2h |
| 931 | 2.19 | Подключить частотник приточной вентиляции к калориферу |  | 1h | 2026-11-03 09:00 A | 2026-11-03 10:00 A | 100% |  |  |  | start no earlier than 2026-11-03 08:00 | Дедов В | 1h | 1h |
| 932 | 2.20 | Ремонт дегистра в лаборатории |  | 2h | 2026-11-03 09:00 A | 2026-11-03 11:00 A | 100% |  |  |  | start no earlier than 2026-11-03 09:00 | Тимофеев В | 2h | 2h |
| 933 | 2.21 | Установка и пусконаладка пролистывателя и апликатора | manual | 4h | 2026-11-02 09:00 A | 2026-11-02 13:00 A | 100% |  |  |  | start no earlier than 2026-11-02 09:00 | Дедов В | 4h | 4h |
| 934 | 2.22 | повесить светильник в корридоре по пути на экструдер, установить на высоте с которой можно достать со стремянки |  | 2h | 2026-10-30 09:00 A | 2026-10-30 11:00 A | 100% |  |  |  | start no earlier than 2026-10-30 08:00 | Бобренок В | 2h | 2h |
| 935 | 2.23 | Ремонт звонка зона навесок, разобраться, почему не звенит/устранить |  | 1h | 2026-10-30 09:00 A | 2026-10-30 10:00 A | 100% |  |  |  | start no earlier than 2026-10-30 08:00 | Бобренок В | 1h | 1h |
| 936 | 2.24 | Ремонт доводчика 2 цех, зона навесок |  | 1h | 2026-10-30 09:00 A | 2026-10-30 10:00 A | 100% |  |  |  | start no earlier than 2026-10-30 08:00 | Бобренок В | 1h | 1h |
| 937 | 2.25 | Замена бактерицидных ламп. (косте ты платы не отдавал, ищи разъемы) | manual | 30min | 2026-10-31 09:00 A | 2026-10-31 09:30 A | 100% |  |  |  | start no earlier than 2026-10-31 09:00 | Дедов В | 0.5h | 0.5h |
| 938 | 2.26 | На КПП №2 сделать штуцер для набора кубов |  | 1h | 2026-10-30 09:00 A | 2026-10-30 10:00 A | 100% |  |  |  | start no earlier than 2026-10-30 09:00 | Труфанов А; Некрасов А | 2h | 2h |
| 939 | 2.27 | Перекрыть на складе воду питающую 2 цех, переключить бочку в реверс во 2 цеху, вода должна течь в обратку, запитать экструдер через байпас |  | 1h | 2026-10-30 09:00 A | 2026-10-30 10:00 A | 100% |  |  |  | start no earlier than 2026-10-30 09:00 | Труфанов А; Некрасов А | 2h | 2h |
| 940 | 2.28 | Скомплектовать что нужно для безопасного отвода пара на парогенераторе на подрывном клапане написать смской |  | 1h | 2026-11-19 09:00 A | 2026-11-19 10:00 A | 100% |  |  |  | start no earlier than 2026-11-19 09:00 | Труфанов А; Некрасов А | 2h | 2h |
| 941 | 2.29 | поменять лампу на этаже кабинетов в коридоре |  | 1h | 2026-10-28 09:00 A | 2026-10-28 10:00 A | 100% |  |  |  | start no earlier than 2026-10-28 08:00 | Бундин В | 1h | 1h |
| 942 | 2.30 | замена ножек на полибоксах под которые не заезжает рохля |  | 2h | 2026-10-30 09:00 A | 2026-10-30 11:00 A | 100% |  |  |  | start no earlier than 2026-10-30 09:00 | Бобренок В | 2h | 2h |
| 943 | 2.31 | переключить сигнализацию ПГ на независимое питание, что бы не отключалась при откл ПГ |  | 2h | 2026-10-28 09:00 A | 2026-10-28 11:00 A | 100% |  |  |  | start no earlier than 2026-10-28 09:00 | Бобренок В | 2h | 2h |
| 944 | 2.32 | Запустить отопление на экструдере |  | 1h | 2026-10-26 09:00 A | 2026-10-26 10:00 A | 100% |  |  |  | start no earlier than 2026-10-26 08:00 | Дедов В | 1h | 1h |
| 945 | 2.33 | закрепить воздушные шланги на упаковке водль стены на подобии как в ГДЗ |  | 2h | 2026-10-20 09:00 A | 2026-10-20 11:00 A | 100% |  |  |  | start no earlier than 2026-10-20 09:00 | Бундин В | 2h | 2h |
| 946 | 2.34 | установить вентилятор на охладитель который отсутсвует, должен быть снятый с 3ц |  | 1h | 2026-10-20 09:00 A | 2026-10-20 10:00 A | 100% |  |  |  | start no earlier than 2026-10-20 09:00 | Тимофеев В; Николаев | 2h | 2h |
| 947 | 2.35 | резервный кабель у компрессора убрать в лоток |  | 20min | 2026-10-20 09:00 A | 2026-10-20 09:20 A | 100% |  |  |  | start no earlier than 2026-10-20 09:00 | Бундин В | 0.33h | 0.33h |

| ID | WBS | Task | Type | Duration | Start | Finish | Predecessors | Complete | Constraint | Resources | Work | Actual work |
| --- | --- | --- | --- | --- | --- | --- | --- | --- | --- | --- | --- | --- |
| 948 | 2.36 | **замена трубки на насос гидролизат** |  | 8.25d | 2026-10-20 09:00 A | 2026-10-30 11:00 A |  | 100% |  |  | 2.75h | 2.75h |
| 949 | 2.36.1 | по очереди установить на насосах трубку 12/10 |  | 30min | 2026-10-20 09:00 A | 2026-10-20 09:30 A |  | 100% | start no earlier than 2026-10-20 09:00 | Тимофеев В | 0.5h | 0.5h |
| 950 | 2.36.2 | контроль поставки фитингов под гайку 12/10 |  | 15min | 2026-10-20 09:00 A | 2026-10-20 09:15 A |  | 100% | start no earlier than 2026-10-20 09:00 | Зорькин В | 0.25h | 0.25h |
| 951 | 2.36.3 | замена всех трубок на 12/10 |  | 2h | 2026-10-30 09:00 A | 2026-10-30 11:00 A |  | 100% | start no earlier than 2026-10-30 09:00 | Тимофеев В | 2h | 2h |
| 952 | 2.37 | **получить образцы пакет мешок на БЕСТРОМ на пленке PE** |  | 1d | 2026-10-22 09:00 A | 2026-10-22 18:00 A |  | 100% |  |  | 21h | 21h |
| 953 | 2.37.1 | Установка оснастки на бестром, которую привезете. Старую снимаем и вешаем на специальную стойку, ее подготовить |  | 2h | 2026-10-22 09:00 A | 2026-10-22 11:00 A |  | 100% | start no earlier than 2026-10-22 09:00 | Труфанов А; Некрасов А | 4h | 4h |
| 954 | 2.37.2 | транспортировка штабелер |  | 1h | 2026-10-22 09:00 A | 2026-10-22 10:00 A |  | 100% | start no earlier than 2026-10-22 09:00 | Труфанов А | 1h | 1h |
| 955 | 2.37.3 | замена головы / настройка / тесты |  | 8h | 2026-10-22 09:00 A | 2026-10-22 18:00 A |  | 100% | start no earlier than 2026-10-22 09:00 | Зорькин В; Труфанов А | 16h | 16h |
| 956 | 2.38 | Поставить зарядку для поломоечной машинки |  | 1h | 2026-10-14 09:00 A | 2026-10-14 10:00 A |  | 100% | start no earlier than 2026-10-14 08:00 | Бобренок В | 1h | 1h |
| 957 | 2.39 | Ремонт светильника на углу здания, со стороны склада упаковки |  | 1h | 2026-10-20 09:00 A | 2026-10-20 10:00 A |  | 100% | start no earlier than 2026-10-20 09:00 | Тимофеев В; Николаев | 2h | 2h |
| 958 | 2.40 | **Борьба с запахом корма на антрисоли офисы** |  | 7.25d | 2026-10-13 09:00 A | 2026-10-21 11:00 A |  | 100% |  |  | 2.33h | 2.33h |
| 959 | 2.40.1 | Заказать пистолет и очиститель для пены |  | 10min | 2026-10-13 09:00 A | 2026-10-13 09:10 A |  | 100% | start no earlier than 2026-10-13 09:00 | Зорькин В | 0.17h | 0.17h |
| 960 | 2.40.2 | Контроль |  | 10min | 2026-10-20 09:00 A | 2026-10-20 09:10 A | 959 | 100% | start no earlier than 2026-10-20 09:00 | Зорькин В | 0.17h | 0.17h |
| 961 | 2.40.3 | Под потолком в корридоре кабинетов дополнительно запенить балку |  | 2h | 2026-10-21 09:00 A | 2026-10-21 11:00 A | 960 | 100% | start no earlier than 2026-10-21 09:00 | Бобренок В | 2h | 2h |
| 962 | 2.41 | С 3 цеха притащить плитку армстронг и заменить на целую на втором этаже в корридоре, при необходимости вырезать в размер |  | 2h | 2026-10-13 09:00 A | 2026-10-13 11:00 A |  | 100% | start no earlier than 2026-10-13 08:00 | Бобренок В | 2h | 2h |
| 963 | 2.42 | Сфотать шильдик компрессора (попросить пацанов с фасовки) и скинуть Зорькину |  | 1h | 2026-10-12 09:00 A | 2026-10-12 10:00 A |  | 100% | start no earlier than 2026-10-12 08:00 | Бундин В | 1h | 1h |
| 964 | 2.43 | Слить весь антифриз с приточки в вентиляции, перемотать соединения ПП к колориферу и насос |  | 2h | 2026-10-12 09:00 A | 2026-10-12 11:00 A |  | 100% | start no earlier than 2026-10-12 08:00 | Бундин В | 2h | 2h |
| 965 | 2.44 | Открыть приточку под потолком, где кабинеты в корридоре (по возможности найти диффузор и установить его, либо подумать, как ограничить поток) |  | 2h | 2026-10-12 09:00 A | 2026-10-12 11:00 A |  | 100% | start no earlier than 2026-10-12 08:00 | Бундин В | 2h | 2h |
| 966 | 2.45 | Бежит со стыка в раковине с сифоном, проверить/исправить на жирах |  | 1h | 2026-10-12 09:00 A | 2026-10-12 10:00 A |  | 100% | start no earlier than 2026-10-12 08:00 | Бундин В | 1h | 1h |
| 967 | 2.46 | Поставить воздухоотводчик с боковым отводом на котел с которого бежало | manual | 1h | 2026-10-12 09:00 A | 2026-10-12 10:00 A | 968 | 100% |  | Бобренок В | 1h | 1h |
| 968 | 2.47 | Поставить сливной шланг на поломоечную машинку, должен быть на ней | manual | 30min | 2026-10-10 09:00 A | 2026-10-10 09:30 A |  | 100% | start no earlier than 2026-10-10 09:00 | Бундин В | 0.5h | 0.5h |
| 969 | 2.48 | Собрать новый электрод для парогенератора из цельного нерж прутка, конец немного закруглить лепестковым диском |  | 4h | 2026-10-12 10:00 A | 2026-10-12 15:00 A | 967 | 100% |  | Бобренок В; Зорькин В | 8h | 8h |
| 970 | 2.49 | Сделать штекер поломоечной машинки. Склеить или взять со старого зарядного и приделать в замен нынешнего, проявить смекалку как это можно сделать. Созвониться с зорькиным |  | 2h | 2026-10-06 09:00 A | 2026-10-06 11:00 A |  | 100% | start no earlier than 2026-10-06 08:00 | Бобренок В | 2h | 2h |
| 971 | 2.50 | При запуске отопления приточки, как будет давление в системе проверить антифриз, долить |  | 1h | 2026-11-03 09:00 A | 2026-11-03 10:00 A |  | 100% | start no earlier than 2026-11-03 09:00 | Труфанов А; Некрасов А | 2h | 2h |
| 972 | 2.51 | Устранить течь в вентялиционной, проверить количество антифриза |  | 1h | 2026-10-06 09:00 A | 2026-10-06 10:00 A |  | 100% | start no earlier than 2026-10-06 09:00 | Бобренок В | 1h | 1h |
| 973 | 2.52 | Перебрать ножевой узел, понять причину люфта/устранить |  | 2h | 2026-10-06 09:00 A | 2026-10-06 11:00 A |  | 100% | start no earlier than 2026-10-06 09:00 | Бобренок В | 2h | 2h |
| 974 | 2.53 | Откалибровать смеситель |  | 1h | 2026-10-09 09:00 A | 2026-10-09 10:00 A |  | 100% | start no earlier than 2026-10-09 09:00 | Дедов В | 1h | 1h |

| ID | WBS | Task | Type | Duration | Start | Finish | Predecessors | Complete | Remaining | Total slack | Free slack | Constraint | Resources | Work | Actual work |
| --- | --- | --- | --- | --- | --- | --- | --- | --- | --- | --- | --- | --- | --- | --- | --- |
| 975 | 2.54 | **востановить работу пирометра печи** |  | 26.25d | 2026-10-21 09:00 A | 2026-11-20 11:00 |  | 67% | 8.75d | 78.34d |  |  |  | 8h | 4h |
| 976 | 2.54.1 | монтаж кабель сигнальный RS485 от пирометра к регистратору на экструдере. Паралельно витой паре - по ней останется питание датчика. |  | 4h | 2026-10-21 09:00 A | 2026-10-21 13:00 A |  | 100% |  |  |  | start no earlier than 2026-10-21 08:00 | Бобренок В | 4h | 4h |
| 977 | 2.54.2 | Подключить кабель датчика пирометра с печи, разобраться, где что |  | 2h | 2026-11-20 09:00 | 2026-11-20 11:00 |  |  |  | 78.34d |  | start no earlier than 2026-11-20 09:00 | Дедов В; Домоводов К | 4h |  |
| 978 | 2.55 | Восстановление платы от рециркуляторной лампы, составление списка комплектующих, подбор аналога платы |  | 3h | 2026-10-07 09:00 A | 2026-10-07 12:00 A |  | 100% |  |  |  | start no earlier than 2026-10-07 09:00 | Дедов В | 3h | 3h |
| 979 | 2.56 | Ремонт шпингалета на воротох, где навески, получить у мастеров, если нет, звони Зорькину | manual | 1h | 2026-10-03 09:00 A | 2026-10-03 10:00 A |  | 100% |  |  |  | start no earlier than 2026-10-03 09:00 | Бобренок В | 1h | 1h |
| 980 | 2.57 | Замена дырявой трубы под парогенератором |  | 1h | 2026-10-08 09:00 A | 2026-10-08 10:00 A |  | 100% |  |  |  | start no earlier than 2026-10-08 09:00 |  |  |  |
| 981 | 2.58 | Плата связи RS485 замена |  | 1h | 2026-10-01 09:00 A | 2026-10-01 10:00 A |  | 100% |  |  |  | start no earlier than 2026-10-01 08:00 | Дедов В | 1h | 1h |
| 982 | 2.59 | Ремонт электрики Бестром (в случае если не будет работать) |  | 4h | 2026-10-07 09:00 A | 2026-10-07 13:00 A |  | 100% |  |  |  | start no earlier than 2026-10-07 09:00 | Дедов В | 4h | 4h |
| 983 | 2.60 | Изготовить пластину для удобного сбора гранулы лопатой, позвонить зорькину | manual | 2h | 2026-10-06 09:00 A | 2026-10-06 11:00 A |  | 100% |  |  |  | start no earlier than 2026-10-06 09:00 | Бобренок В | 2h | 2h |
| 984 | 2.61 | Посмотреть ручки на складе, по возможности замена, если их нет ,сообщить какие закупить. Если ничего нет и ремонт невозможен, фиксируем язычок или убираем его. | manual | 1h | 2026-10-03 09:00 A | 2026-10-03 10:00 A |  | 100% |  |  |  | start no earlier than 2026-10-03 09:00 | Бобренок В | 1h | 1h |
| 985 | 2.62 | Посмотреть пылесос от второго цеха, должен быть в слесарке, если нет, забрать | manual | 1h | 2026-09-29 09:00 A | 2026-09-29 10:00 A |  | 100% |  |  |  | start no earlier than 2026-09-29 09:00 | Бобренок В | 1h | 1h |
| 986 | 2.63 | Включить отопление в лабораторию |  | 1h | 2026-10-02 09:00 A | 2026-10-02 10:00 A |  | 100% |  |  |  | start no earlier than 2026-10-02 09:00 |  |  |  |
| 987 | 2.64 | **Ремонт бактерицидной лампы возле компрессора** |  | 18.25d | 2026-10-02 09:00 A | 2026-10-26 11:00 A |  | 100% |  |  |  |  |  | 3.17h | 3.17h |
| 988 | 2.64.1 | Заявка на плату управления лампы |  | 1h | 2026-10-02 09:00 A | 2026-10-02 10:00 A |  | 100% |  |  |  | start no earlier than 2026-10-02 08:00 | Зорькин В | 1h | 1h |
| 989 | 2.64.2 | контроль |  | 10min | 2026-10-22 09:00 A | 2026-10-22 09:10 A |  | 100% |  |  |  | start no earlier than 2026-10-22 09:00 | Зорькин В | 0.17h | 0.17h |
| 990 | 2.64.3 | Ремонт |  | 2h | 2026-10-26 09:00 A | 2026-10-26 11:00 A | 989 | 100% |  |  |  | start no earlier than 2026-10-26 09:00 | Дедов В | 2h | 2h |
| 991 | 2.65 | **пыление при загрузке при высыпании из мешка в бункер дозатора** |  | 22.53d | 2026-10-01 09:00 A | 2026-10-29 14:15 |  | 11% | 20.16d | 98.06d |  |  |  | 4.75h | 0.5h |
| 992 | 2.65.1 | **изготовить рукав на дозатор для помещения в него мешка из гибкого герметичного матриала** |  | 22.53d | 2026-10-01 09:00 A | 2026-10-29 14:15 |  | 11% | 20.16d | 98.06d |  |  |  | 4.75h | 0.5h |
| 993 | 2.65.1.1 | заявка на силикон/брезент полотно |  | 30min | 2026-10-01 09:00 A | 2026-10-01 09:30 A |  | 100% |  |  |  | start no earlier than 2026-10-01 09:00 | Зорькин В | 0.5h | 0.5h |
| 994 | 2.65.1.2 | доставка контроль |  | 15min | 2026-10-28 09:00 | 2026-10-28 09:15 | 993FS+12d |  |  | 98.06d | 0d | start no earlier than 2026-10-28 09:00 | Зорькин В | 0.25h |  |
| 995 | 2.65.1.3 | изготовление мешка |  | 4h | 2026-10-29 09:15 | 2026-10-29 14:15 | 994FS+1d |  |  | 98.06d |  | start no earlier than 2026-10-22 09:00 | Тимофеев В | 4h |  |
| 996 | 2.66 | **установить аспирационный рукав в зону бункера + фильтр + выход в цех/или общ обменную вент** |  | 27d? | 2026-11-04 09:00 | 2026-12-04 18:00 |  |  |  | 67.59d |  |  |  | 8.75h |  |
| 997 | 2.66.1 | заявка на аспирацию как в слесарке |  | 30min | 2026-11-04 09:00 | 2026-11-04 09:30 |  |  |  | 77.5d | 0d | start no earlier than 2026-11-04 09:00 | Зорькин В | 0.5h |  |
| 998 | 2.66.2 | доставка контроль |  | 15min | 2026-11-19 09:30 | 2026-11-19 09:45 | 997FS+15d |  |  | 77.5d | 9.91d | start no earlier than 2026-09-30 08:00 | Зорькин В | 0.25h |  |
| 999 | 2.66.3 | монтаж аспирационная установка |  | 1d? | 2026-12-04 09:00 | 2026-12-04 18:00 | 998FS+1d |  |  | 67.59d |  | start no earlier than 2026-12-04 09:00 | Тимофеев В | 8h |  |

| ID | WBS | Task | Duration | Start | Finish | Predecessors | Complete | Remaining | Total slack | Free slack | Constraint | Resources | Work | Actual work |
| --- | --- | --- | --- | --- | --- | --- | --- | --- | --- | --- | --- | --- | --- | --- |
| 1000 | 2.67 | **пыление при дозации из шнека на продукт** | 0.38d | 2026-10-01 09:00 A | 2026-10-01 12:00 |  | 40% | 0.23d | 120.22d |  |  |  | 5h | 2h |
| 1001 | 2.67.1 | установить пластину НЕРЖ на выход шнека для отклонения порошка ближе к барабану | 2h | 2026-10-01 09:00 A | 2026-10-01 11:00 A |  | 100% |  |  |  | start no earlier than 2026-10-01 09:00 | Тимофеев В | 2h | 2h |
| 1002 | 2.67.2 | **изготовить /купить патрубок типа 90 колено сантех** | 0.38d | 2026-10-01 09:00 | 2026-10-01 12:00 |  |  |  | 120.22d |  |  |  | 3h |  |
| 1003 | 2.67.2.1 | модель + печать на 3д | 2h | 2026-10-01 09:00 | 2026-10-01 11:00 |  |  |  | 120.22d | 0d | start no earlier than 2026-10-01 09:00 | Домоводов К | 2h |  |
| 1004 | 2.67.2.2 | монтаж | 1h | 2026-10-01 11:00 | 2026-10-01 12:00 | 1003 |  |  | 120.22d |  | start no earlier than 2026-09-30 08:00 | Тимофеев В | 1h |  |
| 1005 | 2.68 | **сыпит в одну точку барабана, образуя не нужное кольцо** | 13d | 2026-10-20 09:00 | 2026-11-05 18:00 |  |  |  | 92.59d |  |  |  | 14h |  |
| 1006 | 2.68.1 | изготовить отвод на 3д | 4h | 2026-10-20 09:00 | 2026-10-20 13:00 |  |  |  | 104.97d | 1.5d | start no earlier than 2026-10-20 09:00 | Домоводов К | 4h |  |
| 1007 | 2.68.2 | монтаж | 1h | 2026-10-22 09:00 | 2026-10-22 10:00 | 1006 |  |  | 103.47d |  | start no earlier than 2026-10-22 09:00 | Тимофеев В | 1h |  |
| 1008 | 2.68.3 | **перенос дозатора на второй барабан** | 9d | 2026-10-26 09:00 | 2026-11-05 18:00 |  |  |  | 92.59d |  |  |  | 9h |  |
| 1009 | 2.68.3.1 | согласовоать с производством технологами старт переноса | 1h | 2026-10-26 09:00 | 2026-10-26 10:00 |  |  |  | 97.47d | 4.88d | start no earlier than 2026-10-26 09:00 | Зорькин В | 1h |  |
| 1010 | 2.68.3.2 | изготовить раму - составить чертежи | 2h | 2026-11-04 09:00 | 2026-11-04 11:00 | 1009FS+2d |  |  | 92.59d | 0d | start no earlier than 2026-11-04 09:00 | Труфанов А | 2h |  |
| 1011 | 2.68.3.3 | сборка рама | 4h | 2026-11-04 11:00 | 2026-11-04 16:00 | 1010 |  |  | 92.59d | 0d | start no earlier than 2026-10-02 09:00 | Труфанов А | 4h |  |
| 1012 | 2.68.3.4 | перенос шнека дозатора / переключения | 2h | 2026-11-05 16:00 | 2026-11-05 18:00 | 1011FS+1d |  |  | 92.59d |  | start no earlier than 2026-09-30 08:00 | Тимофеев В | 2h |  |
| 1013 | 2.69 | Продуть всю вентиляшку на жирах с люльки | 2h | 2026-09-29 09:00 A | 2026-09-29 11:00 A |  | 100% |  |  |  | start no earlier than 2026-09-29 08:00 | Бундин В | 2h | 2h |
| 1014 | 2.70 | Изготовить носик на подаче сухого гидролизата под уклоном ближе к барабану | 3h | 2026-09-29 09:00 A | 2026-09-29 12:00 A |  | 100% |  |  |  | start no earlier than 2026-09-29 09:00 | Тимофеев В | 3h | 3h |
| 1015 | 2.71 | Изготовление рамы на ножках для переноса всего барабана с сухим гидролизатом к нижнему барабану | 4h | 2026-09-29 09:00 | 2026-09-29 13:00 |  |  |  | 122.09d |  | start no earlier than 2026-09-29 09:00 | Тимофеев В | 4h |  |
| 1016 | 2.72 | изготовить ножки на бункер нории БЕСТРОМ | 3h | 2026-09-26 09:00 A | 2026-09-26 12:00 A |  | 100% |  |  |  | start no earlier than 2026-09-26 09:00 | Бобренок В | 3h | 3h |
| 1017 | 2.73 | **установить 4 трубки с быстросъемами в барабаны жиров** | 3.5d | 2026-09-25 09:00 A | 2026-09-28 13:00 |  | 33% | 2.33d | 123.09d |  |  |  | 6h | 2h |
| 1018 | 2.73.1 | подготовить сменную трубку для подачи жира, насверлить резьбу, отверстия | 2h | 2026-09-25 09:00 A | 2026-09-25 11:00 A |  | 100% |  |  |  | start no earlier than 2026-09-25 09:00 | Тимофеев В | 2h | 2h |
| 1019 | 2.73.2 | подготовить трубку 3 и 4 | 4h | 2026-09-28 09:00 | 2026-09-28 13:00 |  |  |  | 123.09d |  | start no earlier than 2026-09-28 09:00 | Тимофеев В | 4h |  |
| 1020 | 2.74 | кран на жирах нет стопора - вращение на 360 устранить, найти этот кран. | 30min | 2026-09-24 09:00 A | 2026-09-24 09:30 A |  | 100% |  |  |  | start no earlier than 2026-09-24 09:00 | Тимофеев В | 0.5h | 0.5h |
| 1021 | 2.75 | Проверить весы на смесителе прыгают в диапазаоне 40кг | 1h | 2026-09-23 09:00 | 2026-09-23 10:00 |  |  |  | 128.47d |  | start no earlier than 2026-09-23 09:00 | Дедов В | 1h |  |
| 1022 | 2.76 | **лаборатория** | 0.12d | 2026-09-22 09:00 A | 2026-09-22 10:00 A |  | 100% |  |  |  |  |  | 1.5h | 1.5h |
| 1023 | 2.76.1 | Перегорел тэн на дигистре | 30min | 2026-09-22 09:00 A | 2026-09-22 09:30 A |  | 100% |  |  |  | start no earlier than 2026-09-22 09:00 | Тимофеев В | 0.5h | 0.5h |
| 1024 | 2.76.2 | Поставить колбу в лаборотории на бульбуляторе, колба в лаборатории | 1h | 2026-09-22 09:00 A | 2026-09-22 10:00 A |  | 100% |  |  |  | start no earlier than 2026-09-22 09:00 | Тимофеев В | 1h | 1h |
| 1025 | 2.77 | Сделать ручки и щеколду для мусорки на улице | 1h | 2026-09-25 09:00 A | 2026-09-25 10:00 A |  | 100% |  |  |  | start no earlier than 2026-09-25 09:00 | Бундин В | 1h | 1h |
| 1026 | 2.78 | установить трубку жир ф12 - нарезать резьбу под фитинг / сверлить под "струйки" | 2h | 2026-09-24 09:00 A | 2026-09-24 11:00 A |  | 100% |  |  |  | start no earlier than 2026-09-24 09:00 | Тимофеев В | 2h | 2h |

| ID | WBS | Task | Type | Duration | Start | Finish | Predecessors | Complete | Constraint | Resources | Work | Actual work |
| --- | --- | --- | --- | --- | --- | --- | --- | --- | --- | --- | --- | --- |
| 1027 | 2.79 | **система сброса муки с прекондиционера в мешки** |  | 2d? | 2026-09-18 09:00 A | 2026-09-19 18:00 A |  | 100% |  |  | 11h | 11h |
| 1028 | 2.79.1 | Продумать варианты предложить, согласовать с Домоводовым и смонтировать, чтоб можно было вешать мешок на экструдере, под рассекатель потока муки выходящий из прекондиционера, который сделал Макаревич |  | 3h | 2026-09-18 09:00 A | 2026-09-18 12:00 A |  | 100% | start no earlier than 2026-09-18 09:00 | Бобренок В | 3h | 3h |
| 1029 | 2.79.2 | изготовление тележки с креплением для 2х мешков. Покрасить |  | 1d? | 2026-09-19 09:00 A | 2026-09-19 18:00 A |  | 100% | start no earlier than 2026-09-19 09:00 | Бобренок В | 8h | 8h |
| 1030 | 2.80 | Промывка дистилятора в лаборатории |  | 3h | 2026-09-18 09:00 A | 2026-09-18 12:00 A |  | 100% | start no earlier than 2026-09-18 09:00 | Бобренок В | 3h | 3h |
| 1031 | 2.81 | Изготовить стопор для пленки на бестром (Обратиться к пацанам на фасовке или к мастеру, должны подсказать) |  | 2h | 2026-09-16 09:00 A | 2026-09-16 11:00 A |  | 100% | start no earlier than 2026-09-16 08:00 | Бундин В | 2h | 2h |
| 1032 | 2.82 | ремонт лампа бактерициодная (это не инсекюьтер) на ГП (не горит табло). Ревизия. |  | 2h | 2026-09-13 09:00 A | 2026-09-13 11:00 A |  | 100% | start no earlier than 2026-09-13 09:00 | Дедов В | 2h | 2h |
| 1033 | 2.83 | ремонт ворот ГП слетели тросы |  | 2h | 2026-09-11 09:00 A | 2026-09-11 11:00 A |  | 100% | start no earlier than 2026-09-11 08:00 | Бобренок В | 2h | 2h |
| 1034 | 2.84 | ремонт светильник корридор у отк |  | 1h | 2026-09-14 09:00 A | 2026-09-14 10:00 A |  | 100% | start no earlier than 2026-09-14 09:00 | Макаревич А | 1h | 1h |
| 1035 | 2.85 | замена квадрат ручка дверь экструдер |  | 1h | 2026-09-14 09:00 A | 2026-09-14 10:00 A |  | 100% | start no earlier than 2026-09-14 09:00 | Макаревич А | 1h | 1h |
| 1036 | 2.86 | **ревизия сливной шланг моечная машинка** |  | 24.25d | 2026-09-14 09:00 A | 2026-10-09 11:00 A |  | 100% |  |  | 3.5h | 3.5h |
| 1037 | 2.86.1 | ревизия / удлинить |  | 1h | 2026-09-14 09:00 A | 2026-09-14 10:00 A |  | 100% | start no earlier than 2026-09-14 09:00 | Тимофеев В | 1h | 1h |
| 1038 | 2.86.2 | заявка |  | 15min | 2026-09-18 09:00 A | 2026-09-18 09:15 A |  | 100% | start no earlier than 2026-09-18 09:00 | Зорькин В | 0.25h | 0.25h |
| 1039 | 2.86.3 | контроль доставки |  | 15min | 2026-10-07 09:00 A | 2026-10-07 09:15 A | 1038FS+5d | 100% | start no earlier than 2026-10-07 09:00 | Зорькин В | 0.25h | 0.25h |
| 1040 | 2.86.4 | монтаж |  | 2h | 2026-10-09 09:00 A | 2026-10-09 11:00 A | 1039FS+1d | 100% | start no earlier than 2026-10-09 09:00 | Тимофеев В | 2h | 2h |
| 1041 | 2.87 | Проверка системы под давлением, при необходимости заменить шланги на пневматические?? |  | 1h | 2026-09-21 09:00 A | 2026-09-21 10:00 A |  | 100% | start no earlier than 2026-09-22 09:00 | Тимофеев В | 1h | 1h |
| 1042 | 2.88 | Установить трубку на жирах, которую сделал викторович |  | 30min | 2026-09-09 09:00 A | 2026-09-09 09:30 A |  | 100% | start no earlier than 2026-09-09 08:00 | Тимофеев В | 0.5h | 0.5h |
| 1043 | 2.89 | **реверс теплоносителя в приточном калорифере** |  | 28.25d | 2026-08-24 09:00 A | 2026-09-24 11:00 A |  | 100% |  |  | 2.5h | 2.5h |
| 1044 | 2.89.1 | заявка |  | 15min | 2026-08-24 09:00 A | 2026-08-24 09:15 A |  | 100% | start no earlier than 2026-08-24 09:00 | Зорькин В | 0.25h | 0.25h |
| 1045 | 2.89.2 | контроль доставки |  | 15min | 2026-09-14 09:05 A | 2026-09-14 09:20 A | 1257FS+5d | 100% | start no earlier than 2026-09-09 09:00 | Зорькин В | 0.25h | 0.25h |
| 1046 | 2.89.3 | монтаж |  | 2h | 2026-09-24 09:00 A | 2026-09-24 11:00 A | 1258FS+1d | 100% | start no earlier than 2026-09-24 09:00 | Дедов В | 2h | 2h |
| 1047 | 2.90 | востановить потерю токов в печи / ревизия . Замена тенов |  | 4h | 2026-09-09 09:00 A | 2026-09-09 13:00 A |  | 100% | start no earlier than 2026-09-09 09:00 | Бобренок В | 4h | 4h |
| 1048 | 2.91 | Смазка подшипников привода охладителя | manual | 1h | 2026-09-09 09:00 A | 2026-09-09 10:00 A |  | 100% |  | Бобренок В | 1h | 1h |
| 1049 | 2.92 | Обрезать пенку пвх на двери в охладителе ,сделать ее ровной |  | 1h | 2026-09-07 09:00 A | 2026-09-07 10:00 A |  | 100% | start no earlier than 2026-09-05 09:00 | Макаревич А | 1h | 1h |
| 1050 | 2.93 | Переборка парогенератора, поиск неисправности (подключили перемычку между реле времени) |  | 4h | 2026-09-02 09:00 A | 2026-09-02 13:00 A |  | 100% | start no earlier than 2026-09-02 09:00 | Бобренок В | 4h | 4h |

| ID | WBS | Task | Type | Duration | Start | Finish | Predecessors | Complete | Constraint | Resources | Work | Actual work |
| --- | --- | --- | --- | --- | --- | --- | --- | --- | --- | --- | --- | --- |
| 1051 | 2.94 | **Подготовить электрическую часть для подключения второго насоса без частотника (продолжаем эту задачу)** |  | 13.25d | 2026-09-03 09:00 A | 2026-09-17 11:00 A |  | 100% |  |  | 4.17h | 4.17h |
| 1052 | 2.94.1 | установить на линию доп насос (резервный) |  | 1h | 2026-09-10 09:00 A | 2026-09-10 10:00 A |  | 100% | start no earlier than 2026-09-10 09:00 | Тимофеев В | 1h | 1h |
| 1053 | 2.94.2 | монтаж |  | 1h | 2026-09-09 09:00 A | 2026-09-09 10:00 A |  | 100% | start no earlier than 2026-09-09 09:00 | Тимофеев В | 1h | 1h |
| 1054 | 2.94.3 | Переместить розетки со стола, смонтировать площадку к раме и закрепить на эту раму |  | 2h | 2026-09-17 09:00 A | 2026-09-17 11:00 A |  | 100% | start no earlier than 2026-09-17 09:00 | Тимофеев В | 2h | 2h |
| 1055 | 2.94.4 | Подумать место установки автомата |  | 10min | 2026-09-03 09:00 A | 2026-09-03 09:10 A |  | 100% | start no earlier than 2026-09-03 09:00 | Тимофеев В | 0.17h | 0.17h |
| 1056 | 2.95 | Ремонт парогенератора, замена реле давления + отвалился контакт + замена мембраны |  | 1h | 2026-09-02 09:00 A | 2026-09-02 10:00 A |  | 100% | start no earlier than 2026-09-02 08:00 | Труфанов А | 1h | 1h |
| 1057 | 2.96 | Замена редуктора на печи |  | 2h | 2026-09-01 09:00 A | 2026-09-01 11:00 A |  | 100% | start no earlier than 2026-09-01 09:00 | Бундин В | 2h | 2h |
| 1058 | 2.97 | проверка котлов на приточку (замена клапана и тена на большую мощность) | manual | 2h | 2026-09-07 09:00 A | 2026-09-07 11:00 A |  | 100% | start no earlier than 2026-09-07 09:00 | Дедов В | 2h | 2h |
| 1059 | 2.98 | проверка всех котлов на отопление по цеху | manual | 4h | 2026-08-30 09:00 A | 2026-08-30 13:00 A |  | 100% | start no earlier than 2026-08-30 09:00 | Дедов В | 4h | 4h |
| 1060 | 2.99 | закрепить коробку двери снизу (возле ШУ приточка 2 этаж) |  | 2h | 2026-08-28 09:00 A | 2026-08-28 11:00 A |  | 100% | start no earlier than 2026-08-28 09:00 | Макаревич А | 2h | 2h |
| 1061 | 2.100 | **заменить фильтры на воду в цехе (проверить мембрану на гидроаккумуляторе)** |  | 1d? | 2026-08-28 09:00 A | 2026-08-28 18:00 A |  | 100% |  | Бобренок В | 16h | 16h |
| 1062 | 2.100.1 | заказать фильтры |  | 1d? | 2026-08-28 09:00 A | 2026-08-28 18:00 A |  | 100% | start no earlier than 2026-08-28 09:00 | Шуранов Ю | 8h | 8h |
| 1063 | 2.101 | монтаж и подключение розетки для кондиционера в кабинет ОТК |  | 2h | 2026-08-26 08:00 A | 2026-08-26 11:00 A |  | 100% | start no earlier than 2026-08-26 08:00 | Бобренок В | 2h | 2h |
| 1064 | 2.102 | сливной шланг от кондиционеров наш кабинет и Шелепова спрятать в кабель канал 30х25 (он на складе) |  | 2h | 2026-08-26 08:00 A | 2026-08-26 11:00 A |  | 100% | start no earlier than 2026-08-26 08:00 | Бобренок В | 2h | 2h |
| 1065 | 2.103 | сливной шланг от кондиционеров кабинет Сапелина спрятать в кабель канал 30х25 (он на складе) с 10 до 11ч |  | 1h | 2026-08-31 09:00 A | 2026-08-31 10:00 A |  | 100% | start no earlier than 2026-08-31 09:00 | Тимофеев В | 1h | 1h |
| 1066 | 2.104 | замерить токи на оборудование (таблица в слесарке) |  | 3h | 2026-08-27 09:00 A | 2026-08-27 12:00 A |  | 100% | start no earlier than 2026-08-27 09:00 | Бобренок В | 3h | 3h |
| 1067 | 2.105 | **дренаж кондиционеров жир и упаковка установить отдельный насос от жиров** |  | 28.06d | 2026-08-24 09:00 A | 2026-09-24 09:30 A |  | 100% |  |  | 122.5h | 122.5h |
| 1068 | 2.105.1 | заявка насос |  | 30min | 2026-08-24 09:00 A | 2026-08-24 09:30 A |  | 100% | start no earlier than 2026-08-24 09:00 | Шуранов Ю | 0.5h | 0.5h |
| 1069 | 2.105.2 | контроль доставка |  | 15d | 2026-09-02 09:30 A | 2026-09-24 09:30 A | 1068FS+7d | 100% | start no earlier than 2026-08-20 09:00 | Зорькин В | 120h | 120h |
| 1070 | 2.105.3 | Разорвать контур от насоса и сделать слив в раковину | manual | 1h | 2026-09-01 09:00 A | 2026-09-01 10:00 A | 1069FS+1d | 100% | start no earlier than 2026-09-01 09:00 | Некрасов А; Тимофеев В | 2h | 2h |
| 1071 | 2.106 | **бетонирование крыльцо вход в 2ц** |  | 0.02d | 2026-08-31 09:00 A | 2026-08-31 09:10 A |  | 100% |  |  | 0.17h | 0.17h |
| 1072 | 2.106.1 | заявка Олегу |  | 10min | 2026-08-31 09:00 A | 2026-08-31 09:10 A |  | 100% | start no earlier than 2026-08-31 09:00 | Шуранов Ю | 0.17h | 0.17h |
| 1073 | 2.107 | течь кондиционер жиры - контроль работы слива |  | 30min | 2026-08-31 09:00 A | 2026-08-31 09:30 A |  | 100% | start no earlier than 2026-08-31 09:00 | Тимофеев В | 0.5h | 0.5h |
| 1074 | 2.108 | контроль замена фитинги или трубки жир, устранить возможность произвольного срыва |  | 30min | 2026-09-01 09:00 A | 2026-09-01 09:30 A |  | 100% | start no earlier than 2026-09-03 09:00 | Некрасов А; Шуранов Ю | 1h | 1h |

| ID | WBS | Task | Type | Duration | Start | Finish | Predecessors | Complete | Remaining | Total slack | Free slack | Constraint | Resources | Work | Actual work |
| --- | --- | --- | --- | --- | --- | --- | --- | --- | --- | --- | --- | --- | --- | --- | --- |
| 1075 | 2.109 | **разгрузка синего накопителя, в реверс шнек + окно** |  | 5.12d | 2026-08-20 09:00 A | 2026-08-27 10:00 A |  | 100% |  |  |  |  |  | 4h | 4h |
| 1076 | 2.109.1 | выполнить люк в шнеке: вырезать окно, крепеж на шарнир + притвор с уплотнением + застежка | milestone | 0h | 2026-08-20 09:00 A | 2026-08-20 09:00 A |  | 100% |  |  |  | start no earlier than 2026-08-20 09:00 | Некрасов А; Тимофеев В |  |  |
| 1077 | 2.109.2 | быстросъемное крепление |  | 1h | 2026-08-27 09:00 A | 2026-08-27 10:00 A |  | 100% |  |  |  | start no earlier than 2026-08-27 09:00 | Тимофеев В | 1h | 1h |
| 1078 | 2.109.3 | изготовление фланца + труба для крепления гофротрубы ф250 |  | 3h | 2026-08-24 09:00 A | 2026-08-24 12:00 A |  | 100% |  |  |  | start no earlier than 2026-08-24 09:00 | Некрасов А | 3h | 3h |
| 1079 | 2.110 | перенос розетка на стену инсекютер корридор у ОТК |  | 1h | 2026-08-15 09:00 A | 2026-08-17 10:00 A |  | 100% |  |  |  | start no earlier than 2026-08-15 09:00 | Бундин В | 1h | 1h |
| 1080 | 2.111 | перенос инсекютер ниже на фасовке, для возможности доступа операторами |  | 1h | 2026-09-24 09:00 A | 2026-09-24 10:00 A |  | 100% |  |  |  | start no earlier than 2026-09-24 09:00 | Бундин В | 1h | 1h |
| 1081 | 2.112 | изготовить лопатку для датчика сырья, что бы было 2-4 лопасти и ниже на 5-10см |  | 2h | 2026-08-13 09:00 A | 2026-08-13 11:00 A |  | 100% |  |  |  | start no earlier than 2026-08-13 09:00 | Макаревич А | 2h | 2h |
| 1082 | 2.113 | прикрепить план увакуации на место (зона отстоя навесок, стенка мойки) |  | 30min | 2026-08-12 09:00 A | 2026-08-12 09:30 A |  | 100% |  |  |  | start no earlier than 2026-08-12 09:00 | Макаревич А | 0.5h | 0.5h |
| 1083 | 2.114 | ремонт ручка в экструдер 2ц |  | 1h | 2026-08-14 09:00 A | 2026-08-14 10:00 A |  | 100% |  |  |  | start no earlier than 2026-08-14 09:00 | Труфанов А | 1h | 1h |
| 1084 | 2.115 | **установить сифон ф110 в линию слива жиров** |  | 60.31d | 2026-08-12 09:00 A | 2026-10-22 11:30 |  | 29% | 43.08d | 103.28d |  |  |  | 3.5h | 1h |
| 1085 | 2.115.1 | заявка на сифон, планирование монтаж |  | 1h | 2026-08-12 09:00 A | 2026-08-12 10:00 A |  | 100% |  |  |  | start no earlier than 2026-08-12 09:00 | Зорькин В | 1h | 1h |
| 1086 | 2.115.2 | возможно ли убрать сифоны ф50, достаточно ли заслонки без гидрозатвора? Как сделать гидрозатвор ф100 |  | 15min | 2026-10-21 09:00 | 2026-10-21 09:15 |  |  |  | 103.28d | 0d | start no earlier than 2026-10-21 09:00 | Труфанов А | 0.25h |  |
| 1087 | 2.115.3 | решение | milestone | 0d | 2026-10-22 09:15 | 2026-10-22 09:15 | 1086FS+1d |  |  | 103.28d | 0d | start no earlier than 2026-09-08 08:00 | Зорькин В |  |  |
| 1088 | 2.115.4 | контроль доставка |  | 15min | 2026-10-22 09:15 | 2026-10-22 09:30 | 1085FS+7d, 1087 |  |  | 103.28d | 0d | start no earlier than 2026-08-31 09:00 | Зорькин В | 0.25h |  |
| 1089 | 2.115.5 | монтаж |  | 2h | 2026-10-22 09:30 | 2026-10-22 11:30 | 1088 |  |  | 103.28d |  | start no earlier than 2026-09-07 09:00 | Бобренок В | 2h |  |
| 1090 | 2.116 | **установить инсекютер дополнительный на экструдер** |  | 22.25d | 2026-08-21 09:00 A | 2026-09-17 11:00 A |  | 100% |  |  |  |  |  | 2.5h | 2.5h |
| 1091 | 2.116.1 | заявка инстекютер |  | 15min | 2026-08-21 09:00 A | 2026-08-21 09:15 A |  | 100% |  |  |  | start no earlier than 2026-08-21 09:00 | Зорькин В | 0.25h | 0.25h |
| 1092 | 2.116.2 | контроль доставки |  | 15min | 2026-09-09 09:00 A | 2026-09-09 09:15 A | 1091FS+7d | 100% |  |  |  | start no earlier than 2026-09-09 09:00 | Зорькин В | 0.25h | 0.25h |
| 1093 | 2.116.3 | монтаж розетка / кабель |  | 2h | 2026-09-17 09:00 A | 2026-09-17 11:00 A | 1092FS+1d | 100% |  |  |  | start no earlier than 2026-09-17 09:00 | Труфанов А | 2h | 2h |
| 1094 | 2.117 | маркировка канистры гидролизата - передать на время гровер нач цеха 2 |  | 20min | 2026-08-11 09:00 A | 2026-08-11 09:20 A |  | 100% |  |  |  | start no earlier than 2026-08-11 09:00 | Бобренок В | 0.33h | 0.33h |
| 1095 | 2.118 | **ограждение мусорного контейнера у 2ц** |  | 15d | 2026-08-31 09:00 A | 2026-09-15 18:00 A |  | 100% |  |  |  |  |  | 34.75h | 34.75h |
| 1096 | 2.118.1 | схема размещения |  | 1h | 2026-08-31 09:00 A | 2026-08-31 10:00 A |  | 100% |  |  |  | start no earlier than 2026-08-31 09:00 | Зорькин В | 1h | 1h |
| 1097 | 2.118.2 | контроль остатков материала - каркас + обшивка стен |  | 30min | 2026-08-31 10:00 A | 2026-08-31 10:30 A | 1096 | 100% |  |  |  | start no earlier than 2026-08-14 09:00 | Зорькин В | 0.5h | 0.5h |
| 1098 | 2.118.3 | заявка материал / лист |  | 1h | 2026-09-01 10:30 A | 2026-09-01 11:30 A | 1097FS+1d | 100% |  |  |  | start no earlier than 2026-08-10 08:00 | Зорькин В | 1h | 1h |
| 1099 | 2.118.4 | контроль поставка |  | 15min | 2026-09-14 11:30 A | 2026-09-14 11:45 A | 1098FS+10d | 100% |  |  |  | start no earlier than 2026-08-10 08:00 | Зорькин В | 0.25h | 0.25h |
| 1100 | 2.118.5 | монтаж каркас + обшивка |  | 2d | 2026-09-14 09:00 A | 2026-09-15 18:00 A | 1099FS+1d | 100% |  |  |  | start no earlier than 2026-08-10 08:00 | Некрасов А; Тимофеев В | 32h | 32h |

| ID | WBS | Task | Type | Duration | Start | Finish | Predecessors | Complete | Remaining | Total slack | Free slack | Constraint | Resources | Work | Actual work |
| --- | --- | --- | --- | --- | --- | --- | --- | --- | --- | --- | --- | --- | --- | --- | --- |
| 1101 | 2.119 | **установить кондиционер контролерам ОТК в 2ц** |  | 7.38d | 2026-08-19 09:00 A | 2026-08-28 12:00 A |  | 100% |  |  |  |  |  | 7.5h | 7.5h |
| 1102 | 2.119.1 | оапата счет контроль |  | 15min | 2026-08-19 09:00 A | 2026-08-19 09:15 A |  | 100% |  |  |  | start no earlier than 2026-08-19 09:00 | Домоводов К | 0.25h | 0.25h |
| 1103 | 2.119.2 | длоставка контроль |  | 15min | 2026-08-24 09:15 A | 2026-08-24 09:30 A | 1102FS+4d | 100% |  |  |  | start no earlier than 2026-08-17 09:00 | Домоводов К | 0.25h | 0.25h |
| 1104 | 2.119.3 | монтаж |  | 4h | 2026-08-24 09:30 A | 2026-08-24 14:30 A | 1103 | 100% |  |  |  | start no earlier than 2026-08-10 08:00 | оплот | 4h | 4h |
| 1105 | 2.119.4 | монтаж крозетка |  | 3h | 2026-08-28 09:00 A | 2026-08-28 12:00 A | 1104FS-1d | 100% |  |  |  | start no earlier than 2026-08-28 09:00 | Бобренок В | 3h | 3h |
| 1106 | 2.120 | **усиление подогрев приточной вентиляции** |  | 89d? | 2026-08-17 09:00 A | 2026-11-30 18:00 |  | 33% | 59.74d? | 71.59d |  |  |  | 18.25h | 6h |
| 1107 | 2.120.1 | планирование мощности для приточная вент до 200 квт + тепл завесы |  | 4h | 2026-08-17 09:00 A | 2026-08-17 13:00 A |  | 100% |  |  |  | start no earlier than 2026-08-17 09:00 | Домоводов К | 4h | 4h |
| 1108 | 2.120.2 | Подключить колорифер в противоток, гибкую подводку получить на складе |  | 2h | 2026-09-24 09:00 A | 2026-09-24 11:00 A |  | 100% |  |  |  | start no earlier than 2026-09-24 08:00 | Дедов В | 2h | 2h |
| 1109 | 2.120.3 | заявка доп котлы + автоматика |  | 4h | 2026-11-09 09:00 | 2026-11-09 13:00 | 1107FS+1d |  |  | 78.06d | 0d | start no earlier than 2026-11-09 09:00 | Домоводов К | 4h |  |
| 1110 | 2.120.4 | контроль поствки |  | 15min | 2026-11-19 14:00 | 2026-11-19 14:15 | 1109FS+10d |  |  | 78.06d | 6.47d | start no earlier than 2026-08-10 08:00 | Зорькин В | 0.25h |  |
| 1111 | 2.120.5 | монтаж |  | 1d? | 2026-11-30 09:00 | 2026-11-30 18:00 | 1110 |  |  | 71.59d |  | start no earlier than 2026-11-30 09:00 | Некрасов А | 8h |  |
| 1112 | 2.121 | собрать 4 стула и тумбочку. Находятся у мастера |  | 4h | 2026-08-10 08:00 A | 2026-08-10 13:00 A |  | 100% |  |  |  | start no earlier than 2026-08-10 08:00 | Бобренок В | 4h | 4h |
| 1113 | 2.122 | кабель к вентилятору печи примыкание гофры к трубе выполнить без пустот фото Фадеевой |  | 1h | 2026-08-11 09:00 A | 2026-08-11 10:00 A |  | 100% |  |  |  | start no earlier than 2026-08-11 09:00 | Бобренок В | 1h | 1h |
| 1114 | 2.123 | закрыить все эл щщитки на ключь |  | 1h | 2026-08-10 08:00 A | 2026-08-10 10:00 A |  | 100% |  |  |  | start no earlier than 2026-08-10 08:00 | Бобренок В | 1h | 1h |
| 1115 | 2.124 | установить отбойник склад навесок, стена мойки |  | 1h | 2026-08-10 08:00 A | 2026-08-10 10:00 A |  | 100% |  |  |  | start no earlier than 2026-08-10 08:00 | Бобренок В | 1h | 1h |
| 1116 | 2.125 | **обеспечить не менее +15 зимой в зоне хранения навесок** |  | 74d? | 2026-08-04 09:00 A | 2026-11-02 18:00 |  | 31% | 51.03d? | 95.59d |  |  |  | 42.25h | 11.25h |
| 1117 | 2.125.1 | **утепление стены** |  | 53.75d | 2026-09-01 09:00 A | 2026-11-02 16:00 |  | 17% | 44.48d | 95.84d |  |  |  | 13.25h | 1.25h |
| 1118 | 2.125.1.1 | расчет количство утеплителя + профлист/саморезы. Заявка |  | 1h | 2026-09-09 09:00 A | 2026-09-09 10:00 A |  | 100% |  |  |  | start no earlier than 2026-09-09 09:00 | Зорькин В | 1h | 1h |
| 1119 | 2.125.1.2 | получить цену / решение о тепловой завесе | milestone | 0d | 2026-09-01 09:00 A | 2026-09-01 09:00 A |  | 100% |  |  |  | start no earlier than 2026-09-01 09:00 | Домоводов К |  |  |
| 1120 | 2.125.1.3 | контроль даты доставки |  | 15min | 2026-09-14 10:00 A | 2026-09-14 10:15 A | 1118FS+5d | 100% |  |  |  | start no earlier than 2026-08-27 08:00 | Зорькин В | 0.25h | 0.25h |
| 1121 | 2.125.1.4 | монтаж пеноплекса на стену |  | 6h | 2026-11-02 09:00 | 2026-11-02 16:00 | 1120FS+1d |  |  | 95.84d |  | start no earlier than 2026-11-02 09:00 | Бобренок В; Труфанов А | 12h |  |
| 1122 | 2.125.1.5 | решение об утеплении стены сравнить с затратами на тепловые завесы | milestone | 0h | 2026-09-01 09:00 | 2026-09-01 09:00 | 1119, 1138 |  |  | 149.59d |  | start no earlier than 2026-08-24 09:00 | Домоводов К |  |  |
| 1123 | 2.125.2 | **кап ремонт стен зона хранения навесок. Промерзают** |  | 5.12d | 2026-08-04 09:00 A | 2026-08-11 10:00 A |  | 100% |  |  |  |  |  | 5h | 5h |
| 1124 | 2.125.2.1 | установить листы на место склад навесо стена с эл щитком |  | 1h | 2026-08-11 09:00 A | 2026-08-11 10:00 A |  | 100% |  |  |  | start no earlier than 2026-08-11 09:00 | Тимофеев В | 1h | 1h |
| 1125 | 2.125.2.2 | вскрытие стен дя составления плана работ. Демонтировать несколько листов в зоне промерзания (гдещиток) |  | 4h | 2026-08-04 09:00 A | 2026-08-04 13:00 A |  | 100% |  |  |  | start no earlier than 2026-08-04 09:00 | Тимофеев В | 4h | 4h |

| ID | WBS | Task | Type | Duration | Start | Finish | Predecessors | Complete | Remaining | Total slack | Free slack | Constraint | Resources | Work | Actual work |
| --- | --- | --- | --- | --- | --- | --- | --- | --- | --- | --- | --- | --- | --- | --- | --- |
| 1126 | 2.125.3 | **тепловые завесы в 2ц зона подачи навесок** |  | 65d? | 2026-08-17 09:00 A | 2026-11-02 18:00 |  | 20% | 52d? | 95.59d |  |  |  | 23.75h | 4.75h |
| 1127 | 2.125.3.1 | **монтаж теплокалориферов** |  | 28d? | 2026-09-28 09:00 A | 2026-11-02 18:00 |  | 26% | 20.84d? | 95.59d |  |  |  | 10.75h | 2.75h |
| 1128 | 2.125.3.1.1 | заявка |  | 2h | 2026-09-28 09:00 A | 2026-09-28 11:00 A | 1122FS+1d | 100% |  |  |  | start no earlier than 2026-09-28 09:00 | Домоводов К | 2h | 2h |
| 1129 | 2.125.3.1.2 | контроль оплаты\ |  | 15min | 2026-09-30 11:00 A | 2026-09-30 11:15 A | 1128FS+2d | 100% |  |  |  | start no earlier than 2026-09-07 09:00 | Зорькин В | 0.25h | 0.25h |
| 1130 | 2.125.3.1.3 | контроль доставки |  | 15min | 2026-10-19 11:15 A | 2026-10-19 11:30 A | 1129FS+15d | 100% |  |  |  | start no earlier than 2026-08-10 08:00 | Зорькин В | 0.25h | 0.25h |
| 1131 | 2.125.3.1.4 | приемка |  | 15min | 2026-10-20 11:30 A | 2026-10-20 11:45 A | 1130FS+1d | 100% |  |  |  | start no earlier than 2026-08-10 08:00 | Зорькин В | 0.25h | 0.25h |
| 1132 | 2.125.3.1.5 | монтаж калориферов |  | 1d? | 2026-11-02 09:00 | 2026-11-02 18:00 | 1131FS+1d |  |  | 95.59d |  | start no earlier than 2026-11-02 09:00 | Некрасов А | 8h |  |
| 1133 | 2.125.3.2 | **монтаж кабель** |  | 55d? | 2026-08-17 09:00 A | 2026-10-19 18:00 |  | 15% | 46.54d? | 105.59d |  |  |  | 13h | 2h |
| 1134 | 2.125.3.2.1 | планирование мощности |  | 2h | 2026-08-17 09:00 A | 2026-08-17 11:00 A |  | 100% |  |  |  | start no earlier than 2026-08-17 09:00 | Домоводов К | 2h | 2h |
| 1135 | 2.125.3.2.2 | заявка кабель /щиток |  | 2h | 2026-10-05 09:00 | 2026-10-05 11:00 | 1134 |  |  | 110.22d | 0d | start no earlier than 2026-10-05 09:00 | Зорькин В | 2h |  |
| 1136 | 2.125.3.2.3 | контроль доставка |  | 1h | 2026-10-12 11:00 | 2026-10-12 12:00 | 1135FS+5d |  |  | 110.22d | 4.62d | start no earlier than 2026-08-10 08:00 | Зорькин В | 1h |  |
| 1137 | 2.125.3.2.4 | монтаж |  | 1d? | 2026-10-19 09:00 | 2026-10-19 18:00 | 1136FS+1d |  |  | 105.59d |  | start no earlier than 2026-10-19 09:00 | Некрасов А | 8h |  |
| 1138 | 2.125.4 | контроль достаточности если не крепить верхние саморезы |  | 15min | 2026-08-13 09:00 A | 2026-08-13 09:15 A |  | 100% |  |  |  | start no earlier than 2026-08-13 09:00 | Домоводов К | 0.25h | 0.25h |
| 1139 | 2.126 | **дверь в мойку сделать герметичный притвор** |  | 1.25d | 2026-08-14 09:00 A | 2026-08-17 11:00 A |  | 100% |  |  |  |  |  | 2.33h | 2.33h |
| 1140 | 2.126.1 | подбор уплотнителя / заказать |  | 20min | 2026-08-14 09:00 A | 2026-08-14 09:20 A |  | 100% |  |  |  | start no earlier than 2026-08-14 09:00 | Домоводов К | 0.33h | 0.33h |
| 1141 | 2.126.2 | монтаж резинки на клей |  | 2h | 2026-08-16 09:00 A | 2026-08-17 11:00 A |  | 100% |  |  |  | start no earlier than 2026-08-16 09:00 | Бобренок В | 2h | 2h |
| 1142 | 2.127 | **пролистыватель с апликтором заказ** |  | 49d? | 2026-08-10 09:00 A | 2026-10-05 18:00 A |  | 100% |  |  |  |  |  | 9.42h | 9.42h |
| 1143 | 2.127.1 | получить договор + счет |  | 1h | 2026-08-10 09:00 A | 2026-08-10 10:00 A |  | 100% |  |  |  | start no earlier than 2026-08-10 08:00 | Зорькин В | 1h | 1h |
| 1144 | 2.127.2 | **согласвоание договор** |  | 3.02d | 2026-08-12 09:00 A | 2026-08-17 09:10 A |  | 100% |  |  |  |  |  | 0.17h | 0.17h |
| 1145 | 2.127.2.1 | подать договор |  | 5min | 2026-08-12 09:00 A | 2026-08-12 09:05 A |  | 100% |  |  |  | start no earlier than 2026-08-12 09:00 | Домоводов К | 0.08h | 0.08h |
| 1146 | 2.127.2.2 | контроль |  | 5min | 2026-08-17 09:05 A | 2026-08-17 09:10 A | 1145FS+5d | 100% |  |  |  | start no earlier than 2026-08-12 09:00 | Домоводов К | 0.08h | 0.08h |
| 1147 | 2.127.3 | оплата подать счет | milestone | 0d | 2026-08-12 09:00 A | 2026-08-12 09:00 A |  | 100% |  |  |  | start no earlier than 2026-08-12 09:00 | Домоводов К |  |  |
| 1148 | 2.127.4 | доставка конетроль |  | 15min | 2026-09-18 09:00 A | 2026-09-18 09:15 A | 1147FS+30d | 100% |  |  |  | start no earlier than 2026-08-10 08:00 | Зорькин В | 0.25h | 0.25h |
| 1149 | 2.127.5 | монтаж |  | 1d? | 2026-10-05 09:00 A | 2026-10-05 18:00 A | 1148FS+1d | 100% |  |  |  | start no earlier than 2026-10-05 09:00 | Тимофеев В | 8h | 8h |

| ID | WBS | Task | Type | Duration | Start | Finish | Predecessors | Complete | Constraint | Resources | Work | Actual work |
| --- | --- | --- | --- | --- | --- | --- | --- | --- | --- | --- | --- | --- |
| 1150 | 2.128 | **вентиляция мойка приточно-вытяжная 1ц 2 линия** |  | 9.19d | 2026-08-13 09:00 A | 2026-08-26 10:30 A |  | 100% |  |  | 20h | 20h |
| 1151 | 2.128.1 | монтаж вытяжной трубы в колектор. После переноса вентиляторов отключен |  | 4h | 2026-08-17 09:00 A | 2026-08-17 13:00 A |  | 100% | start no earlier than 2026-08-16 09:00 | Бобренок В | 4h | 4h |
| 1152 | 2.128.2 | составить проект |  | 4h | 2026-08-13 09:00 A | 2026-08-13 13:00 A |  | 100% | start no earlier than 2026-08-13 09:00 | Домоводов К | 4h | 4h |
| 1153 | 2.128.3 | заявка материалы |  | 1h | 2026-08-24 09:00 A | 2026-08-24 10:00 A | 1152FS+7d | 100% | start no earlier than 2026-08-24 09:00 | Зорькин В | 1h | 1h |
| 1154 | 2.128.4 | контроль поставки |  | 30min | 2026-08-25 10:00 A | 2026-08-25 10:30 A | 1153FS+1d | 100% | start no earlier than 2026-08-10 08:00 | Зорькин В | 0.5h | 0.5h |
| 1155 | 2.128.5 | монтаж |  | 1d | 2026-08-25 10:30 A | 2026-08-26 10:30 A | 1154 | 100% | start no earlier than 2026-08-10 08:00 | Некрасов А; Тимофеев В | 10.5h | 10.5h |
| 1156 | 2.129 | **выполнить обрамление двери в охладитель, что бы скрыть поверхность** |  | 27.25d | 2026-08-14 09:00 A | 2026-09-17 11:00 A |  | 100% |  |  | 4.5h | 4.5h |
| 1157 | 2.129.1 | заказ декоративный уголок |  | 15min | 2026-08-14 09:00 A | 2026-08-14 09:15 A |  | 100% | start no earlier than 2026-08-14 09:00 | Домоводов К | 0.25h | 0.25h |
| 1158 | 2.129.2 | контроль доставки |  | 15min | 2026-09-09 09:00 A | 2026-09-09 09:15 A | 1157FS+5d | 100% | start no earlier than 2026-09-09 09:00 | Зорькин В | 0.25h | 0.25h |
| 1159 | 2.129.3 | обить дверь в охладитель профлистом оцнк |  | 2h | 2026-09-17 09:00 A | 2026-09-17 11:00 A |  | 100% | start no earlier than 2026-09-17 09:00 | Некрасов А | 2h | 2h |
| 1160 | 2.129.4 | монтаж |  | 2h | 2026-09-03 09:00 A | 2026-09-03 11:00 A | 1158FS+1d | 100% | start no earlier than 2026-09-03 09:00 | Труфанов А | 2h | 2h |
| 1161 | 2.130 | **ремонт осушителя компрессора 2ц** |  | 47.31d | 2026-08-09 09:00 A | 2026-10-04 11:30 A |  | 100% |  |  | 13.58h | 13.58h |
| 1162 | 2.130.1 | проверка давления фреона |  | 1h | 2026-09-17 09:00 A | 2026-09-17 10:00 A |  | 100% | start no earlier than 2026-09-17 09:00 | Труфанов А; Некрасов А | 2h | 2h |
| 1163 | 2.130.2 | заявка фреон 134а |  | 15min | 2026-09-25 09:00 A | 2026-09-25 09:15 A | 1162 | 100% | start no earlier than 2026-09-25 09:00 | Зорькин В | 0.25h | 0.25h |
| 1164 | 2.130.3 | доставка контроль |  | 15min | 2026-10-02 09:15 A | 2026-10-02 09:30 A | 1163FS+7d | 100% | start no earlier than 2026-09-18 08:00 | Зорькин В | 0.25h | 0.25h |
| 1165 | 2.130.4 | заправить хладогент |  | 2h | 2026-10-04 09:30 A | 2026-10-04 11:30 A | 1164FS+1d | 100% | start no earlier than 2026-10-01 09:00 | Некрасов А | 2h | 2h |
| 1166 | 2.130.5 | фото шильдик для поиск в продаже |  | 10min | 2026-08-11 09:00 A | 2026-08-11 09:10 A |  | 100% | start no earlier than 2026-08-11 09:00 | Некрасов А | 0.17h | 0.17h |
| 1167 | 2.130.6 | связь с сервисным отделом получить дату |  | 1h | 2026-08-12 09:00 A | 2026-08-12 10:00 A |  | 100% | start no earlier than 2026-08-12 09:00 | Зорькин В | 1h | 1h |
| 1168 | 2.130.7 | фото шильдик для поиск в продаже |  | 1h | 2026-08-12 09:00 A | 2026-08-12 10:00 A |  | 100% | start no earlier than 2026-08-12 09:00 | Зорькин В | 1h | 1h |
| 1169 | 2.130.8 | слить конденсат с компрессора, чистка фильтров | manual | 3h | 2026-08-09 09:00 A | 2026-08-09 12:00 A |  | 100% | start no earlier than 2026-08-09 09:00 | Бобренок В | 3h | 3h |
| 1170 | 2.130.9 | попробовать смазать подшипники вентилятора осушителя |  | 15min | 2026-08-18 09:00 A | 2026-08-18 09:15 A |  | 100% | start no earlier than 2026-08-18 09:00 | Некрасов А | 0.25h | 0.25h |
| 1171 | 2.130.10 | замер размеров вентилятора |  | 15min | 2026-08-18 09:00 A | 2026-08-18 09:15 A |  | 100% | start no earlier than 2026-08-18 09:00 | Зорькин В; Некрасов А | 0.5h | 0.5h |
| 1172 | 2.130.11 | подбор аналога вентилятора погабариту |  | 1h | 2026-08-18 09:15 A | 2026-08-18 10:15 A | 1171 | 100% | start no earlier than 2026-08-14 09:00 | Зорькин В | 1h | 1h |
| 1173 | 2.130.12 | заменить вентилятор на осушителе (от охладителя, лежит на компрессоре). В 6 утра остановка |  | 2h | 2026-08-19 09:00 A | 2026-08-19 11:00 A |  | 100% | start no earlier than 2026-08-19 09:00 | Бобренок В | 2h | 2h |
| 1174 | 2.130.13 | Заявка в сервис не работает осушитель |  | 10min | 2026-08-31 09:00 A | 2026-08-31 09:10 A |  | 100% | start no earlier than 2026-08-31 09:00 | Зорькин В | 0.17h | 0.17h |
| 1175 | 2.131 | установить защитные крышки на клемник вентиляторов охладителя. От 3д печать | manual | 4h | 2026-09-16 09:00 A | 2026-09-16 13:00 A |  | 100% | start no earlier than 2026-09-16 09:00 | Труфанов А | 4h | 4h |
| 1176 | 2.132 | заменить резинки на красном баке (выдать, если будет остановка, поменять) | manual | 1h | 2026-08-31 09:00 A | 2026-08-31 10:00 A |  | 100% | start no earlier than 2026-08-31 09:00 | Бобренок В | 1h | 1h |
| 1177 | 2.133 | на приемной горловине красного смесителя закрутить второй ленточный хомут, чтобы не выпадала мука |  | 1h | 2026-08-06 09:00 A | 2026-08-06 10:00 A |  | 100% | start no earlier than 2026-08-06 08:00 | Труфанов А | 1h | 1h |

| ID | WBS | Task | Type | Duration | Start | Finish | Predecessors | Complete | Actual start | Actual finish | Constraint | Resources | Work | Actual work |
| --- | --- | --- | --- | --- | --- | --- | --- | --- | --- | --- | --- | --- | --- | --- |
| 1178 | 2.134 | **закрутить болты на петлях двери печи** |  | 0.12d | 2026-09-02 09:00 A | 2026-09-02 10:00 A |  | 100% |  |  |  |  | 1h | 1h |
| 1179 | 2.134.1 | попробовать закрутить на винтовые заклепки |  | 1h | 2026-09-02 09:00 A | 2026-09-02 10:00 A |  | 100% |  |  | start no earlier than 2026-09-04 09:00 | Некрасов А | 1h | 1h |
| 1180 | 2.135 | установка фильтров на подачу жира (осн. + резерв) |  | 2h | 2026-08-06 08:00 A | 2026-08-06 11:00 A |  | 100% |  |  | start no earlier than 2026-08-06 08:00 | Тимофеев В | 2h | 2h |
| 1181 | 2.136 | эксперимент с лейкой подача жиров |  | 1h | 2026-08-06 08:00 A | 2026-08-06 10:00 A |  | 100% |  |  | start no earlier than 2026-08-06 08:00 | Тимофеев В | 1h | 1h |
| 1182 | 2.137 | **по аналогии второй линии насверлить сверлом 1 мм отверстия в трубке для жиров** |  | 0.12d | 2026-08-06 09:00 A | 2026-08-06 10:00 A |  | 100% |  |  |  | Макаревич А | 2h | 2h |
| 1183 | 2.137.1 | установка трубки на жиры |  | 1h | 2026-08-06 09:00 A | 2026-08-06 10:00 A |  | 100% |  |  | start no earlier than 2026-08-06 09:00 | Тимофеев В | 1h | 1h |
| 1184 | 2.138 | поломоечная машинка вырезать из силикона шторку захвата воды |  | 2h | 2026-08-03 08:00 A | 2026-08-03 11:00 A |  | 100% |  |  | start no earlier than 2026-08-03 08:00 | Бобренок В | 2h | 2h |
| 1185 | 2.139 | **втулка фторопласт заказать 26х44х5** |  | 1d? | 2026-08-04 09:00 A | 2026-08-04 18:00 A |  | 100% |  |  |  | Шуранов Ю | 8h | 8h |
| 1186 | 2.139.1 | счет доставка |  | 1d? | 2026-08-04 09:00 A | 2026-08-04 18:00 A |  | 100% |  |  | start no earlier than 2026-08-04 08:00 |  |  |  |
| 1187 | 2.140 | **посмотреть вентилятор Сапелина у нас в кабинете (не работает)** |  | 1d? | 2026-08-04 09:00 A | 2026-08-04 18:00 A |  | 100% |  |  |  | Бобренок В | 8h | 8h |
| 1188 | 2.140.1 | сгорел двигатель |  | 1d? | 2026-08-04 09:00 A | 2026-08-04 18:00 A |  | 100% |  |  | start no earlier than 2026-08-04 08:00 |  |  |  |
| 1189 | 2.141 | слить конденсат с компрессора |  | 0.5h | 2026-08-02 09:00 A | 2026-08-03 09:30 A |  | 100% |  |  | start no earlier than 2026-08-02 09:00 | Бобренок В | 0.5h | 0.5h |
| 1190 | 2.142 | **продолжить изготовление приемной горловины по аналогии 3 ц.** |  | 4h? | 2026-08-10 09:00 | 2026-08-10 13:00 |  | 100% | 2026-07-29 09:00 | 2026-09-04 11:00 |  |  | 14.08h | 14.08h |
| 1191 | 2.142.1 | заказать прут нерж. |  | 1d? | 2026-07-29 09:00 A | 2026-07-29 18:00 A |  | 100% |  |  | start no earlier than 2026-07-29 09:00 | Зорькин В | 8h | 8h |
| 1192 | 2.142.2 | контроль доставка |  | 5min | 2026-08-18 09:00 A | 2026-08-18 09:05 A |  | 100% |  |  | start no earlier than 2026-08-18 09:00 | Зорькин В | 0.08h | 0.08h |
| 1193 | 2.142.3 | изготовление / установка |  | 4h | 2026-08-20 09:00 A | 2026-08-20 13:00 A | 1192 | 100% |  |  | start no earlier than 2026-08-20 09:00 | Макаревич А | 4h | 4h |
| 1194 | 2.142.4 | Корректировка горловины, сделать более плотные зазоры, посмотреть по месту |  | 2h | 2026-09-04 09:00 A | 2026-09-04 11:00 A |  | 100% |  |  | start no earlier than 2026-09-04 09:00 | Макаревич А | 2h | 2h |
| 1195 | 2.143 | прикрутить лотки охладителя, чтобы не задевали сетку (лишние отверстия заварить) | manual | 2h | 2026-08-03 09:00 A | 2026-08-03 11:00 A |  | 100% |  |  | start no earlier than 2026-08-03 09:00 | Бобренок В | 2h | 2h |
| 1196 | 2.144 | чистка фильтров кондиционеров | manual | 1h | 2026-08-01 09:00 A | 2026-08-01 10:00 A |  | 100% |  |  | start no earlier than 2026-08-01 09:00 | Бундин В | 1h | 1h |
| 1197 | 2.145 | слить конденсат с компрессора |  | 1h | 2026-07-30 08:00 A | 2026-07-30 10:00 A |  | 100% |  |  | start no earlier than 2026-07-30 08:00 | Дедов В | 1h | 1h |
| 1198 | 2.146 | слив конденсата с кондиционеров прочистить трубу | manual | 2h | 2026-08-01 09:00 A | 2026-08-01 11:00 A |  | 100% |  |  | start no earlier than 2026-08-01 09:00 | Бундин В | 2h | 2h |
| 1199 | 2.147 | Настройка частотника питателя (созвон с Валентином) |  | 1h | 2026-07-31 09:00 A | 2026-07-31 10:00 A |  | 100% |  |  | start no earlier than 2026-07-31 09:00 | Бундин В | 1h | 1h |
| 1200 | 2.148 | дверь металлическая зона выдачи ГП ревизия, плоход закрывается |  | 1h | 2026-07-15 09:00 A | 2026-07-15 10:00 A |  | 100% |  |  | start no earlier than 2026-07-15 09:00 | Бундин В | 1h | 1h |
| 1201 | 2.149 | крепление доводчик дверь входная |  | 1h | 2026-07-15 09:00 A | 2026-07-15 10:00 A |  | 100% |  |  | start no earlier than 2026-07-15 09:00 | Бундин В | 1h | 1h |
| 1202 | 2.150 | снять меющийся, установить новый прайсчекер (лежит у мастеров) |  | 1h | 2026-07-15 09:00 A | 2026-07-15 10:00 A |  | 100% |  |  | start no earlier than 2026-07-15 09:00 | Бундин В | 1h | 1h |
| 1203 | 2.151 | ремонт кронштейна датчик давления |  | 30min | 2026-07-10 09:00 A | 2026-07-10 09:30 A |  | 100% |  |  | start no earlier than 2026-07-10 09:00 | Бобренок В | 0.5h | 0.5h |
| 1204 | 2.152 | замерить демонтированные шнеки, заполнить ьабличку Зорькина |  | 1h | 2026-07-11 09:00 A | 2026-07-13 10:00 A |  | 100% |  |  | start no earlier than 2026-07-11 09:00 | Макаревич А | 1h | 1h |
| 1205 | 2.153 | обшить входной проем п-образным профилем (на складе лежит) | manual | 3h | 2026-07-08 09:00 A | 2026-07-08 12:00 A |  | 100% |  |  | start no earlier than 2026-07-08 09:00 | Некрасов А; Тимофеев В | 6h | 6h |
| 1206 | 2.154 | чистка воздушных клапанов на септике |  | 1d? | 2026-07-02 09:00 A | 2026-07-02 18:00 A |  | 100% |  |  | start no earlier than 2026-07-02 09:00 | Олег | 8h | 8h |
| 1207 | 2.155 | закрепить щиток транспортера у стены на фасовке, малый дозатор) | manual | 1h | 2026-07-04 09:00 A | 2026-07-04 10:00 A |  | 100% |  |  | start no earlier than 2026-07-04 09:00 | Дедов В | 1h | 1h |

| ID | WBS | Task | Type | Duration | Start | Finish | Complete | Constraint | Resources | Work | Actual work |
| --- | --- | --- | --- | --- | --- | --- | --- | --- | --- | --- | --- |
| 1208 | 2.156 | **под экструдером масло- ревизия откуда** |  | 0.12d | 2026-07-03 09:00 A | 2026-07-03 10:00 A | 100% |  |  | 1h | 1h |
| 1209 | 2.156.1 | заменить шланг 20мм (лежит черный на стеллаже справа, где кабель) при остановке- согласовать с мастером |  | 1h | 2026-07-03 09:00 A | 2026-07-03 10:00 A | 100% | start no earlier than 2026-07-03 09:00 | Макаревич А | 1h | 1h |
| 1210 | 2.157 | чистка труб сброса конденсата с кондиционеров |  | 2h | 2026-06-30 09:00 A | 2026-06-30 11:00 A | 100% | start no earlier than 2026-06-30 09:00 | Некрасов А; Тимофеев В | 2h | 2h |
| 1211 | 2.158 | чистка всех фильтров на кондиционеры, разобраться с питанием внутреннего блока |  | 1d? | 2026-06-29 09:00 A | 2026-06-29 18:00 A | 100% | start no earlier than 2026-06-29 09:00 |  |  |  |
| 1212 | 2.159 | ТО бестром |  | 2h | 2026-06-30 09:00 A | 2026-06-30 11:00 A | 100% | start no earlier than 2026-06-30 09:00 | Бундин В | 2h | 2h |
| 1213 | 2.160 | промыть внешние блоки кондиционеров |  | 3h | 2026-06-26 09:00 A | 2026-06-26 12:00 A | 100% | start no earlier than 2026-06-26 09:00 | Тимофеев В; Дедов В | 6h | 6h |
| 1214 | 2.161 | вернуть кожух защиты на прекондиционер (подогнать в размер) на остановке линии |  | 2h | 2026-06-24 09:00 A | 2026-06-24 11:00 A | 100% | start no earlier than 2026-06-24 09:00 | Труфанов А | 2h | 2h |
| 1215 | 2.162 | подключение тепловой защиты на приточке и вытяжке |  | 2h | 2026-06-23 08:00 A | 2026-06-23 11:00 A | 100% | start no earlier than 2026-06-23 08:00 | Тимофеев В; Макаревич А | 4h | 4h |
| 1216 | 2.163 | заменить фильтр приточка 2 этаж и указать кол-во остатка на складе |  | 1h | 2026-06-20 09:00 A | 2026-06-22 10:00 A | 100% | start no earlier than 2026-06-20 09:00 | Дедов В | 1h | 1h |
| 1217 | 2.164 | сделать защиту жировика от холода (изготовить из сенгвич панели на навесках 2ц.) жировик расскажет | manual | 2h | 2026-06-21 09:00 A | 2026-06-21 11:00 A | 100% | start no earlier than 2026-06-21 09:00 | Бундин В | 2h | 2h |
| 1218 | 2.165 | проверка теко 0,4 -пакет запаенный |  | 1h | 2026-06-18 08:00 A | 2026-06-18 10:00 A | 100% | start no earlier than 2026-06-18 08:00 | Дедов В | 1h | 1h |
| 1219 | 2.166 | подключение датчика давления через гидрошланг |  | 1h | 2026-07-09 09:00 A | 2026-07-09 10:00 A | 100% | start no earlier than 2026-07-09 09:00 | Бундин В | 1h | 1h |
| 1220 | 2.167 | чистка парогенератора |  | 2h | 2026-06-18 08:00 A | 2026-06-18 11:00 A | 100% | start no earlier than 2026-06-18 08:00 | Тимофеев В | 2h | 2h |
| 1221 | 2.168 | слив конденсата с компрессора и продуть радиаторы и фильтры |  | 1h | 2026-06-20 09:00 A | 2026-06-22 10:00 A | 100% | start no earlier than 2026-06-20 09:00 | Бобренок В | 1h | 1h |
| 1222 | 2.169 | проверить, есть ли давление во всех гидроаккумуляторах на отоплении по цеху, зафиксировать с порванными мембранами |  | 2h | 2026-06-11 09:00 A | 2026-06-11 11:00 A | 100% | start no earlier than 2026-06-11 09:00 | Дедов В | 2h | 2h |
| 1223 | 2.170 | дверь охладителя и угол - прикрутить наружний уголок 20х50 и 50х50, чтобы не резали руки (уголок на входе напротив ворот в синем складе) |  | 3h | 2026-06-12 09:00 A | 2026-06-12 12:00 A | 100% | start no earlier than 2026-06-12 09:00 | Дедов В | 3h | 3h |
| 1224 | 2.171 | взять на складе специальный п-образный профиль и обшить дверной проем вход в охладитель | manual | 2h | 2026-07-05 09:00 A | 2026-07-05 11:00 A | 100% | start no earlier than 2026-07-05 09:00 |  |  |  |
| 1225 | 2.172 | проверка гидроаккумулятора на водоподготовке |  | 0.5h | 2026-06-11 09:00 A | 2026-06-11 09:30 A | 100% | start no earlier than 2026-06-11 09:00 | Дедов В | 0.5h | 0.5h |
| 1226 | 2.173 | чистка парогенератора |  | 2h | 2026-06-11 09:00 A | 2026-06-11 11:00 A | 100% | start no earlier than 2026-06-11 09:00 | Тимофеев В | 2h | 2h |
| 1227 | 2.174 | **посмотреть на желтом складе шибер, если найдем устанавливаем на аквариум зона экструдера** |  | 0.12d | 2026-06-12 09:00 A | 2026-06-12 10:00 A | 100% |  |  | 1h | 1h |
| 1228 | 2.174.1 | монтаж воздуховод под углом на шибер- настройка с операторами направление обдува |  | 1h | 2026-06-12 09:00 A | 2026-06-12 10:00 A | 100% | start no earlier than 2026-06-12 09:00 | Бундин В | 1h | 1h |
| 1229 | 2.175 | **ворота выход готовой продукции (прикрутить ролик, ролик у нас в кабинете)** |  | 1d? | 2026-06-11 09:00 A | 2026-06-11 18:00 A | 100% |  |  | 8h | 8h |
| 1230 | 2.175.1 | выкл. Ручной режим |  | 1d? | 2026-06-11 09:00 A | 2026-06-11 18:00 A | 100% | start no earlier than 2026-06-11 09:00 | Дедов В | 8h | 8h |
| 1231 | 2.176 | промерить шнеки / гильзы износ. Маркировать |  | 1h | 2026-07-08 09:00 A | 2026-07-08 10:00 A | 100% | start no earlier than 2026-07-08 09:00 | Зорькин В | 1h | 1h |
| 1232 | 2.177 | сверлить сетку от фильеры, сверлом на станке, все отверстия. |  | 4h | 2026-06-06 09:00 A | 2026-06-08 13:00 A | 100% | start no earlier than 2026-06-06 09:00 | Бобренок В | 4h | 4h |

| ID | WBS | Task | Type | Duration | Start | Finish | Predecessors | Complete | Actual start | Actual finish | Constraint | Resources | Work | Actual work |
| --- | --- | --- | --- | --- | --- | --- | --- | --- | --- | --- | --- | --- | --- | --- |
| 1233 | 2.178 | **заменаить сальник редуктора транспортер №3** |  | 0.12d | 2026-06-18 09:00 A | 2026-06-18 10:00 A |  | 100% |  |  |  |  | 2h | 2h |
| 1234 | 2.178.1 | заменаить редутор из зип |  | 1h | 2026-06-18 09:00 A | 2026-06-18 10:00 A |  | 100% |  |  | start no earlier than 2026-06-18 09:00 | Тимофеев В | 1h | 1h |
| 1235 | 2.178.2 | замена сальник на снятом |  | 1h | 2026-06-18 09:00 A | 2026-06-18 10:00 A |  | 100% |  |  | start no earlier than 2026-06-19 09:00 | Тимофеев В | 1h | 1h |
| 1236 | 2.179 | законтрогаить шпильки-ножки запайщиков |  | 1h | 2026-06-06 09:00 A | 2026-06-08 10:00 A |  | 100% |  |  | start no earlier than 2026-06-06 09:00 | Бобренок В | 1h | 1h |
| 1237 | 2.180 | **нория квадропак -устранить просыпание** |  | 1d? | 2026-06-04 09:00 A | 2026-06-04 18:00 A |  | 100% |  |  |  | Тимофеев В | 16h | 16h |
| 1238 | 2.180.1 | добавить частоту частотника до 70 на норию |  | 1d? | 2026-06-04 09:00 A | 2026-06-04 18:00 A |  | 100% |  |  | start no earlier than 2026-06-04 09:00 | Дедов В | 8h | 8h |
| 1239 | 2.181 | Замена шнеков (усиленные) - по уровню |  | 4h | 2026-06-04 09:00 A | 2026-06-04 13:00 A |  | 100% |  |  | start no earlier than 2026-06-04 09:00 | Тимофеев В | 4h | 4h |
| 1240 | 2.182 | монтаж воздуховод приточный в площадку загрузки смесителя |  | 3h | 2026-06-05 09:00 A | 2026-06-05 12:00 A |  | 100% |  |  | start no earlier than 2026-06-05 09:00 | Некрасов А | 3h | 3h |
| 1241 | 2.183 | очистка вентилятора окно экструдер |  | 40min | 2026-06-04 09:00 A | 2026-06-04 09:40 A |  | 100% |  |  | start no earlier than 2026-06-04 09:00 | Некрасов А; Бундин В | 1.33h | 1.33h |
| 1242 | 2.184 | **доп освещение зона охладитель** |  | 4.75d? | 2026-06-09 09:00 | 2026-06-15 16:00 |  | 100% | 2026-06-10 09:00 | 2026-08-06 11:00 |  |  | 12.67h | 12.67h |
| 1243 | 2.184.1 | спланировать монтаж / проверить наличие матералов |  | 20min | 2026-06-25 09:00 A | 2026-06-25 09:20 A |  | 100% |  |  | start no earlier than 2026-06-25 09:00 | Шуранов Ю; Дедов В | 0.67h | 0.67h |
| 1244 | 2.184.2 | заказать |  | 1d? | 2026-06-10 09:00 A | 2026-06-10 18:00 A |  | 100% |  |  | start no earlier than 2026-06-10 09:00 | Шуранов Ю | 8h | 8h |
| 1245 | 2.184.3 | монтаж |  | 2h | 2026-08-06 09:00 A | 2026-08-06 11:00 A | 1243 | 100% |  |  | start no earlier than 2026-08-06 09:00 | Тимофеев В; Бундин В | 4h | 4h |
| 1246 | 2.185 | отключить двигатель зиплока бестром |  | 1h | 2026-06-12 09:00 A | 2026-06-12 10:00 A |  | 100% |  |  | start no earlier than 2026-06-12 09:00 | Бундин В | 1h | 1h |
| 1247 | 2.186 | ж гардероб душ кабина осмотр гидрозатвор - сильный запах |  | 2h | 2026-05-30 09:00 A | 2026-06-01 11:00 A |  | 100% |  |  | start no earlier than 2026-05-30 09:00 | Бобренок В | 2h | 2h |
| 1248 | 2.187 | ремонт кресло , паук находится на складе у Веры |  | 1h | 2026-06-13 09:00 A | 2026-06-15 10:00 A |  | 100% |  |  | start no earlier than 2026-06-13 09:00 | Бобренок В | 1h | 1h |
| 1249 | 2.188 | ревизия нихром запайщик |  | 1h | 2026-05-29 09:00 A | 2026-05-29 10:00 A |  | 100% |  |  | start no earlier than 2026-05-29 08:00 | Бундин В | 1h | 1h |
| 1250 | 2.189 | штабелер 2ц ревизия колес |  | 1h | 2026-06-01 09:00 A | 2026-06-01 10:00 A |  | 100% |  |  | start no earlier than 2026-06-01 09:00 | Макаревич А | 1h | 1h |
| 1251 | 2.190 | **ремонт эл котел №3 охладитель** |  | 79.25d? | 2026-06-05 09:00 A | 2026-09-19 11:00 A |  | 100% |  |  |  |  | 24.25h | 24.25h |
| 1252 | 2.190.1 | заказать плату |  | 1d? | 2026-07-15 09:00 A | 2026-07-15 18:00 A |  | 100% |  |  | start no earlier than 2026-07-15 09:00 | Зорькин В | 8h | 8h |
| 1253 | 2.190.2 | замена силовой платы зота в районе мойки экструдера (плата на складе) -проверка | manual | 2h | 2026-08-09 09:00 A | 2026-08-09 11:00 A |  | 100% |  |  | start no earlier than 2026-08-09 09:00 | Бобренок В | 2h | 2h |
| 1254 | 2.190.3 | котел №3 проверка платы силовой управления тенами (после откл управления перегрелся пошел дым) на складе есть платы 2 шт. для ЗОТА. Слава плату заменил грешит на д температуры |  | 2h | 2026-09-01 09:00 A | 2026-09-01 11:00 A |  | 100% |  |  | start no earlier than 2026-09-01 09:00 | Дедов В | 2h | 2h |
| 1255 | 2.190.4 | Замена силовой платы, где сгорела 1 ТТР |  | 2h | 2026-08-31 08:00 A | 2026-08-31 11:00 A |  | 100% |  |  | start no earlier than 2026-08-31 08:00 | Дедов В | 2h | 2h |
| 1256 | 2.190.5 | Не работает блок тенов, заказать |  | 10min | 2026-09-01 09:00 A | 2026-09-01 09:10 A |  | 100% |  |  | start no earlier than 2026-09-01 08:00 | Зорькин В | 0.17h | 0.17h |
| 1257 | 2.190.6 | Контроль доставки |  | 5min | 2026-09-09 09:00 A | 2026-09-09 09:05 A |  | 100% |  |  | start no earlier than 2026-09-09 09:00 | Зорькин В | 0.08h | 0.08h |
| 1258 | 2.190.7 | замена блок тенов |  | 2h | 2026-09-19 09:00 A | 2026-09-19 11:00 A |  | 100% |  |  | start no earlier than 2026-09-19 09:00 | Дедов В | 2h | 2h |
| 1259 | 2.190.8 | заказать плату управления |  | 1d? | 2026-06-05 09:00 A | 2026-06-05 18:00 A |  | 100% |  |  | start no earlier than 2026-06-05 09:00 | Зорькин В | 8h | 8h |
| 1260 | 2.191 | замена задних подшипников на прекондиционере (посмотреть итальянские на складе) |  | 6h | 2026-05-26 09:00 A | 2026-05-26 16:00 A |  | 100% |  |  | start no earlier than 2026-05-26 09:00 | Тимофеев В; Некрасов А | 12h | 12h |
| 1261 | 2.192 | перемотать трубы скотчем серым и по низу стык улиток "загерметизировать" |  | 2h | 2026-05-25 08:00 A | 2026-05-25 11:00 A |  | 100% |  |  | start no earlier than 2026-05-25 08:00 | Макаревич А | 2h | 2h |

| ID | WBS | Task | Type | Duration | Start | Finish | Complete | Actual finish | Constraint | Resources | Work | Actual work |
| --- | --- | --- | --- | --- | --- | --- | --- | --- | --- | --- | --- | --- |
| 1262 | 2.193 | **изготовить мойка малая из нерж** |  | 0.5d | 2026-06-01 08:00 A | 2026-06-01 13:00 A | 100% |  |  | Макаревич А | 8h | 8h |
| 1263 | 2.193.1 | подключить мойку на месте (по телефону обсудим) |  | 4h | 2026-06-01 08:00 A | 2026-06-01 13:00 A | 100% |  | start no earlier than 2026-06-01 08:00 | Макаревич А | 4h | 4h |
| 1264 | 2.194 | **дополнительное освещение в зоне жиров** |  | 6.5d | 2026-05-26 09:00 A | 2026-06-01 13:00 | 100% | 2026-06-04 09:30 |  |  | 5h | 5h |
| 1265 | 2.194.1 | заказ светильников |  | 1h | 2026-05-26 09:00 A | 2026-05-26 10:00 A | 100% |  | start no earlier than 2026-05-26 09:00 | Шуранов Ю | 1h | 1h |
| 1266 | 2.194.2 | монтаж |  | 4h | 2026-06-01 09:00 A | 2026-06-01 13:00 A | 100% |  | start no earlier than 2026-06-01 09:00 | Макаревич А | 4h | 4h |
| 1267 | 2.194.3 | подключить к автомату на мойке |  | 0.5h | 2026-06-04 09:00 A | 2026-06-04 09:30 A | 100% |  | start no earlier than 2026-06-04 09:00 |  |  |  |
| 1268 | 2.195 | подключить пк мастеров через ИБП (согласовать с мастером 1 цеха) |  | 1h | 2026-05-25 09:00 A | 2026-05-25 10:00 A | 100% |  | start no earlier than 2026-05-25 08:00 | Шуранов Ю | 1h | 1h |
| 1269 | 2.196 | заменить помпу на термопоте в кухне |  | 1h | 2026-05-27 09:00 A | 2026-05-27 10:00 A | 100% |  | start no earlier than 2026-05-27 09:00 | Дедов В | 1h | 1h |
| 1270 | 2.197 | лопнул шланг от насосной станции до редуктора- заменить |  | 1h | 2026-05-25 08:00 A | 2026-05-25 10:00 A | 100% |  | start no earlier than 2026-05-25 08:00 | Макаревич А | 1h | 1h |
| 1271 | 2.198 | установить влагоотделитель на квадропак |  | 1h | 2026-05-25 08:00 A | 2026-05-25 10:00 A | 100% |  | start no earlier than 2026-05-25 08:00 | Дедов В | 1h | 1h |
| 1272 | 2.199 | закрепить монтажную коробку в коридоре до жировика слева, от кондиционера |  | 1h | 2026-05-22 09:00 A | 2026-05-22 10:00 A | 100% |  | start no earlier than 2026-05-22 09:00 | Бобренок В | 1h | 1h |
| 1273 | 2.200 | закрепить на доп. Клипсы трубу-воздух к стене за бестромом |  | 1h | 2026-05-23 09:00 A | 2026-05-25 10:00 A | 100% |  | start no earlier than 2026-05-23 09:00 | Бобренок В | 1h | 1h |
| 1274 | 2.201 | заменить сетку печки (находиться в слесарке) | manual | 3h | 2026-05-24 09:00 A | 2026-05-24 12:00 A | 100% |  | start no earlier than 2026-05-24 09:00 | Макаревич А | 3h | 3h |
| 1275 | 2.202 | уложить красиво и закрепить гофру от нории до красного смесителя | manual | 2h | 2026-05-24 09:00 A | 2026-05-24 11:00 A | 100% |  | start no earlier than 2026-05-24 09:00 | Макаревич А | 2h | 2h |
| 1276 | 2.203 | взять ножевой узел с желтого склада и фильеры, подготовить и передать во второй цех на экструдер |  | 1h | 2026-05-21 09:00 A | 2026-05-21 10:00 A | 100% |  | start no earlier than 2026-05-21 08:00 | Бундин В | 1h | 1h |
| 1277 | 2.204 | проверить все лотки на охладителе, чтобы не задевали сетку- если нужно поднять. |  | 1h | 2026-05-21 09:00 A | 2026-05-21 10:00 A | 100% |  | start no earlier than 2026-05-21 08:00 | Бундин В | 1h | 1h |
| 1278 | 2.205 | чистка парогенератора, если нужно замена электродов |  | 2h | 2026-05-21 08:00 A | 2026-05-21 11:00 A | 100% |  | start no earlier than 2026-05-21 08:00 | Тимофеев В | 2h | 2h |
| 1279 | 2.206 | чистка фильтра редуктора экструдера, проверка уровня масла |  | 1h | 2026-05-21 08:00 A | 2026-05-21 10:00 A | 100% |  | start no earlier than 2026-05-21 08:00 | Тимофеев В | 1h | 1h |
| 1280 | 2.207 | проверить пневмоцилиндры на встряхивателях квадропака |  | 1h | 2026-05-21 08:00 A | 2026-05-21 10:00 A | 100% |  | start no earlier than 2026-05-21 08:00 | Бобренок В | 1h | 1h |
| 1281 | 2.208 | проверка токов на печи, если просадка проверяем перемычки, тены |  | 1h | 2026-05-21 09:00 A | 2026-05-21 10:00 A | 100% |  | start no earlier than 2026-05-21 08:00 | Некрасов А | 1h | 1h |
| 1282 | 2.209 | коротит на баке жиров все проверить |  | 1h | 2026-05-21 09:00 A | 2026-05-21 10:00 A | 100% |  | start no earlier than 2026-05-21 08:00 |  |  |  |
| 1283 | 2.210 | в зоне фасовки сделать конструкцию, чтобы не выпадала макулатура |  | 6h | 2026-08-31 09:00 A | 2026-08-31 16:00 A | 100% |  | start no earlier than 2026-08-31 09:00 | Макаревич А | 6h | 6h |
| 1284 | 2.211 | закрепить доводчик на входной двери |  | 1h | 2026-05-23 09:00 A | 2026-05-25 10:00 A | 100% |  | start no earlier than 2026-05-23 09:00 | Бундин В | 1h | 1h |
| 1285 | 2.212 | установить розетку для палетооботчика на его колону |  | 2h | 2026-05-18 09:00 A | 2026-05-18 11:00 A | 100% |  | start no earlier than 2026-05-18 09:00 | Дедов В | 2h | 2h |

| ID | WBS | Task | Type | Duration | Start | Finish | Predecessors | Complete | Constraint | Resources | Work | Actual work |
| --- | --- | --- | --- | --- | --- | --- | --- | --- | --- | --- | --- | --- |
| 1286 | 2.213 | **ИБП установить на принтер SAVEMA** |  | 5.25d | 2026-05-19 09:00 A | 2026-05-26 11:00 A |  | 100% |  |  | 3.25h | 3.25h |
| 1287 | 2.213.1 | подбор и заявка ИБП |  | 1h | 2026-05-19 09:00 A | 2026-05-19 10:00 A |  | 100% | start no earlier than 2026-05-19 09:00 | Шуранов Ю | 1h | 1h |
| 1288 | 2.213.2 | контроль поставки |  | 15min | 2026-05-26 09:00 A | 2026-05-26 09:15 A |  | 100% | start no earlier than 2026-05-26 09:00 | Шуранов Ю | 0.25h | 0.25h |
| 1289 | 2.213.3 | монтаж и подключение в шкафу | manual | 2h | 2026-05-26 09:00 A | 2026-05-26 11:00 A | 1288 | 100% | start no earlier than 2026-05-26 09:00 | Дедов В | 2h | 2h |
| 1290 | 2.214 | **переместить на склад ЗИП палет сетка, зарядка АКБ штабелера** |  | 0.12d | 2026-06-01 09:00 A | 2026-06-01 10:00 A |  | 100% |  |  | 1h | 1h |
| 1291 | 2.214.1 | зарядку АКБ переместить в контейнер, она находится в мойке зона экструдера | manual | 1h | 2026-06-01 09:00 A | 2026-06-01 10:00 A |  | 100% | start no earlier than 2026-06-01 09:00 | Макаревич А | 1h | 1h |
| 1292 | 2.215 | **бестром замена линейный подшипник прижима красных ремней** |  | 24.5d | 2026-05-15 09:00 A | 2026-06-18 13:00 A |  | 100% |  |  | 5.25h | 5.25h |
| 1293 | 2.215.1 | заявка |  | 1h | 2026-05-15 09:00 A | 2026-05-15 10:00 A |  | 100% | start no earlier than 2026-05-15 09:00 | Зорькин В | 1h | 1h |
| 1294 | 2.215.2 | доставка контроль |  | 15min | 2026-05-27 10:00 A | 2026-05-27 10:15 A | 1293FS+10d | 100% | start no earlier than 2026-05-14 08:00 | Зорькин В | 0.25h | 0.25h |
| 1295 | 2.215.3 | замена |  | 4h | 2026-06-18 09:00 A | 2026-06-18 13:00 A | 1294 | 100% | start no earlier than 2026-06-18 09:00 | Тимофеев В | 4h | 4h |
| 1296 | 2.216 | осмотр цепи муфты редуктора экструдера |  | 1h | 2026-05-14 09:00 A | 2026-05-14 10:00 A |  | 100% | start no earlier than 2026-05-14 09:00 | Тимофеев В | 1h | 1h |
| 1297 | 2.217 | Линия 3 на жирах нужно поменять колеса на транспортёре, который идет на охладитель |  | 1h | 2026-05-14 09:00 A | 2026-05-14 10:00 A |  | 100% | start no earlier than 2026-05-14 09:00 | Макаревич А | 1h | 1h |
| 1298 | 2.218 | осмотр прекондиционер "звон" |  | 30min | 2026-05-14 09:00 A | 2026-05-14 09:30 A |  | 100% | start no earlier than 2026-05-14 09:00 | Тимофеев В | 0.5h | 0.5h |
| 1299 | 2.219 | **заменить гофра унитаз правый отсек** |  | 16.12d | 2026-05-13 09:00 A | 2026-06-04 10:00 A |  | 100% |  |  | 41.25h | 41.25h |
| 1300 | 2.219.1 | заявка гофра |  | 15min | 2026-05-13 09:00 A | 2026-05-13 09:15 A |  | 100% | start no earlier than 2026-05-13 09:00 | Зорькин В | 0.25h | 0.25h |
| 1301 | 2.219.2 | доставка |  | 5d | 2026-05-13 09:15 A | 2026-05-20 09:15 A | 1300 | 100% | start no earlier than 2026-05-12 08:00 | Карабанов | 40h | 40h |
| 1302 | 2.219.3 | замена |  | 1h | 2026-06-04 09:00 A | 2026-06-04 10:00 A | 1301 | 100% | start no earlier than 2026-06-04 09:00 | Бобренок В | 1h | 1h |
| 1303 | 2.220 | замена смазка шприц на экструдере |  | 30min | 2026-05-13 09:00 A | 2026-05-13 09:30 A |  | 100% | start no earlier than 2026-05-13 09:00 | Некрасов А | 0.5h | 0.5h |
| 1304 | 2.221 | замена передний подшипник + набивка прекондиционер |  | 1h | 2026-05-14 09:00 A | 2026-05-14 10:00 A |  | 100% | start no earlier than 2026-05-14 09:00 | Тимофеев В | 1h | 1h |
| 1305 | 2.222 | прикрутить лоток выше на 1 ярусе, задевает сетку со сторону редуктора |  | 1h | 2026-05-08 08:00 A | 2026-05-08 10:00 A |  | 100% | start no earlier than 2026-05-08 08:00 | Макаревич А | 1h | 1h |
| 1306 | 2.223 | взять шайбу у нас в кабинете и шлифануть одну сторону |  | 1h | 2026-05-08 09:00 A | 2026-05-08 10:00 A |  | 100% | start no earlier than 2026-05-08 09:00 | Макаревич А | 1h | 1h |
| 1307 | 2.224 | смотровое окно на загрузке прекондиционера установить |  | 4h | 2026-08-25 09:00 A | 2026-08-25 13:00 A |  | 100% | start no earlier than 2026-08-31 09:00 | Тимофеев В | 4h | 4h |
| 1308 | 2.225 | добавить воду в систему отопления зота охладитель |  | 1h | 2026-05-09 09:00 A | 2026-05-11 10:00 A |  | 100% | start no earlier than 2026-05-09 09:00 | Макаревич А | 1h | 1h |
| 1309 | 2.226 | монтаж сетки на палетообмотчике | manual | 4h | 2026-05-14 09:00 A | 2026-05-14 13:00 A |  | 100% | start no earlier than 2026-05-14 09:00 | Некрасов А; Труфанов А | 8h | 8h |
| 1310 | 2.227 | Собрать стул, находится в кабинете мастеров 2 цех |  | 1h | 2026-05-13 09:00 A | 2026-05-13 10:00 A |  | 100% | start no earlier than 2026-05-13 09:00 | Бундин В | 1h | 1h |

| ID | WBS | Task | Type | Duration | Start | Finish | Complete | Actual start | Actual finish | Constraint | Resources | Work | Actual work |
| --- | --- | --- | --- | --- | --- | --- | --- | --- | --- | --- | --- | --- | --- |
| 1311 | 2.228 | **взять у нас на складе инсектицидные светильники и повесить их во 2 цехе, где нет** |  | 1.12d | 2026-05-12 09:00 A | 2026-05-13 10:00 A | 100% |  |  |  |  | 3h | 3h |
| 1312 | 2.228.1 | ремонт |  | 2h | 2026-05-12 09:00 A | 2026-05-12 11:00 A | 100% |  |  | start no earlier than 2026-05-12 09:00 | Бундин В | 2h | 2h |
| 1313 | 2.228.2 | монтаж ламп / заполнить в журнал мастера |  | 1h | 2026-05-13 09:00 A | 2026-05-13 10:00 A | 100% |  |  | start no earlier than 2026-05-13 09:00 | Бундин В | 1h | 1h |
| 1314 | 2.229 | герметиком замазать гофру на унитазах (запах) | manual | 1h | 2026-05-07 08:00 A | 2026-05-07 09:00 A | 100% |  |  | start no earlier than 2026-05-07 08:00 | Бобренок В | 1h | 1h |
| 1315 | 2.230 | заменить фильтр на приточку 2 этаж |  | 1h | 2026-05-07 08:00 A | 2026-05-07 10:00 A | 100% |  |  | start no earlier than 2026-05-07 08:00 | Тимофеев В | 1h | 1h |
| 1316 | 2.231 | ревизия перемычек, тен на печи - замена |  | 4h | 2026-05-07 09:00 A | 2026-05-07 13:00 A | 100% |  |  | start no earlier than 2026-05-07 08:00 | Труфанов А | 4h | 4h |
| 1317 | 2.232 | **повесить на места светильники инсектицидные (замена ламп)** |  | 1d? | 2026-05-11 09:00 | 2026-05-11 18:00 | 100% | 2026-05-12 09:00 | 2026-05-12 11:00 |  |  | 2h | 2h |
| 1318 | 2.232.1 | **заказать досели** |  | 0.25d | 2026-05-12 09:00 A | 2026-05-12 11:00 A | 100% |  |  |  |  | 2h | 2h |
| 1319 | 2.232.1.1 | ремонт не рабочих светильников |  | 2h | 2026-05-12 09:00 A | 2026-05-12 11:00 A | 100% |  |  | start no earlier than 2026-05-12 09:00 | Бундин В | 2h | 2h |
| 1320 | 2.233 | уложить кабель в гофре вдоль экструдера в лоток |  | 2h | 2026-05-04 09:00 A | 2026-05-04 11:00 A | 100% |  |  | start no earlier than 2026-05-04 08:00 | Бундин В | 2h | 2h |
| 1321 | 2.234 | **подготовить ТРМ для парогенератора цех 2** |  | 0d | 2026-05-16 09:00 A | 2026-05-16 10:00 A | 100% |  |  |  | Дедов В | 1h | 1h |
| 1322 | 2.234.1 | установить на остановке ТРМ (который сняли отдать Дедову для восстановления) восстановить кнопку | manual | 1h | 2026-05-16 09:00 A | 2026-05-16 10:00 A | 100% |  |  | start no earlier than 2026-05-16 09:00 | Дедов В | 1h | 1h |
| 1323 | 2.235 | повесить светильники 3шт. |  | 1h | 2026-05-04 09:00 A | 2026-05-04 10:00 A | 100% |  |  | start no earlier than 2026-05-04 08:00 | Труфанов А | 1h | 1h |
| 1324 | 2.236 | монтаж свет на фасовке |  | 8h | 2026-05-05 09:00 A | 2026-05-05 18:00 A | 100% |  |  | start no earlier than 2026-05-05 09:00 | Тимофеев В; Труфанов А | 15h | 15h |
| 1325 | 2.237 | заменить кулер в ШУ на жирах |  | 1h | 2026-04-29 08:00 A | 2026-04-29 10:00 A | 100% |  |  | start no earlier than 2026-04-29 08:00 | Дедов В | 1h | 1h |
| 1326 | 2.238 | заменить 3х ходовой кран и фитинги с гайкой на жирах |  | 1h | 2026-04-29 09:00 A | 2026-04-29 10:00 A | 100% |  |  | start no earlier than 2026-04-30 09:00 | Дедов В | 1h | 1h |
| 1327 | 2.239 | закрепить на подножке резинку на штабелере зона экструдера (можно на саморез/клепки) |  | 1h | 2026-04-29 08:00 A | 2026-04-29 10:00 A | 100% |  |  | start no earlier than 2026-04-29 08:00 | Дедов В | 1h | 1h |
| 1328 | 2.240 | **заменить сетку для печи из зип** |  | 0.38d | 2026-05-05 09:00 A | 2026-05-05 12:00 A | 100% |  |  |  |  | 5h | 5h |
| 1329 | 2.240.1 | **заменить сетку , которую сняли с печи** |  | 3h | 2026-05-05 09:00 A | 2026-05-05 12:00 A | 100% |  |  |  | Бундин В | 5h | 5h |
| 1330 | 2.240.1.1 | ремонт сетки |  | 2h | 2026-05-05 09:00 A | 2026-05-05 11:00 A | 100% |  |  | start no earlier than 2026-05-05 09:00 | Бобренок В | 2h | 2h |
| 1331 | 2.241 | под норией сыпит сырье устранить |  | 4h | 2026-04-30 09:00 A | 2026-04-30 13:00 A | 100% |  |  | start no earlier than 2026-04-30 09:00 | Труфанов А; Некрасов А | 8h | 8h |
| 1332 | 2.242 | устранить течь, сброс пара под прекондиционером |  | 1h | 2026-05-01 09:00 A | 2026-05-01 10:00 A | 100% |  |  | start no earlier than 2026-05-01 09:00 | Дедов В | 1h | 1h |
| 1333 | 2.243 | устранить течь редуктор прекондиционера |  | 5h | 2026-04-29 09:00 A | 2026-04-29 15:00 A | 100% |  |  | start no earlier than 2026-04-29 08:00 | Некрасов А; Труфанов А | 10h | 10h |
| 1334 | 2.244 | почистить фильтр на поломоечной машинке |  | 1h | 2026-04-29 09:00 A | 2026-04-29 10:00 A | 100% |  |  | start no earlier than 2026-04-29 09:00 | Тимофеев В | 1h | 1h |
| 1335 | 2.245 | Полное ТО квадропак (чистка тен, смазка штоков пневмоцилиндров, шприцевание подшипников) |  | 3h | 2026-04-28 09:00 A | 2026-04-28 12:00 A | 100% |  |  | start no earlier than 2026-04-28 09:00 | Тимофеев В | 3h | 3h |
| 1336 | 2.246 | Полное ТО бестром (чистка тен, смазка штоков пневмоцилиндров, шприцевание подшипников) |  | 2h | 2026-04-28 09:00 A | 2026-04-28 11:00 A | 100% |  |  | start no earlier than 2026-04-28 09:00 | Тимофеев В | 2h | 2h |
| 1337 | 2.247 | демонтаж инсектютерной ламп на очистку / продуть |  | 1h | 2026-04-27 08:00 A | 2026-04-27 10:00 A | 100% |  |  | start no earlier than 2026-04-27 08:00 | Тимофеев В | 1h | 1h |
| 1338 | 2.248 | ремонт инсектецидных ламп взять у Мастера в каб. (проверить контакты соединения самих лам, дросели). 3 исправно/1 сломан дросель |  | 1h | 2026-04-29 09:00 A | 2026-04-29 10:00 A | 100% |  |  | start no earlier than 2026-04-29 09:00 | Дедов В | 1h | 1h |

| ID | WBS | Task | Type | Duration | Start | Finish | Predecessors | Complete | Actual start | Actual finish | Constraint | Resources | Work | Actual work |
| --- | --- | --- | --- | --- | --- | --- | --- | --- | --- | --- | --- | --- | --- | --- |
| 1339 | 2.249 | **замена дроселя инсекцидной лампы** |  | 17.38d | 2026-04-30 09:00 A | 2026-05-25 12:00 A |  | 100% |  |  |  |  | 84.25h | 84.25h |
| 1340 | 2.249.1 | заявка |  | 15min | 2026-04-30 09:00 A | 2026-04-30 09:15 A |  | 100% |  |  | start no earlier than 2026-04-30 08:00 | Шуранов Ю | 0.25h | 0.25h |
| 1341 | 2.249.2 | замена |  | 3h | 2026-05-25 08:00 A | 2026-05-25 12:00 A |  | 100% |  |  | start no earlier than 2026-05-25 08:00 | Дедов В | 3h | 3h |
| 1342 | 2.249.3 | доставка |  | 10d | 2026-05-04 09:00 A | 2026-05-18 18:00 A | 1340 | 100% |  |  | start no earlier than 2026-05-04 09:00 | Карабанов | 80h | 80h |
| 1343 | 2.249.4 | замена |  | 1h | 2026-05-12 09:00 A | 2026-05-12 10:00 A |  | 100% |  |  | start no earlier than 2026-05-12 09:00 | Бундин В | 1h | 1h |
| 1344 | 2.250 | поликарбанат в зоне седла жировика оторвался, ремонт |  | 1h | 2026-04-30 09:00 A | 2026-04-30 10:00 A |  | 100% |  |  | start no earlier than 2026-04-30 09:00 | Бундин В | 1h | 1h |
| 1345 | 2.251 | зачистить и покрасить решетку на входе в 2 ц. |  | 4h | 2026-04-28 09:00 A | 2026-04-28 13:00 A |  | 100% |  |  | start no earlier than 2026-04-28 09:00 | Дворник | 4h | 4h |
| 1346 | 2.252 | поднять лотки на 10 мм на охладителе со стороны фасовки (видео вышлю) |  | 1h | 2026-04-24 09:00 A | 2026-04-24 10:00 A |  | 100% |  |  | start no earlier than 2026-04-24 08:00 | Бундин В | 1h | 1h |
| 1347 | 2.253 | добавить в систему отопления котла в мойке и в охладителе воды | manual | 2h | 2026-04-24 09:00 A | 2026-04-24 11:00 A |  | 100% |  |  | start no earlier than 2026-04-24 09:00 | Бундин В | 2h | 2h |
| 1348 | 2.254 | на углы установить отбойники выход с зоны экструдера |  | 2h | 2026-04-23 09:00 A | 2026-04-23 11:00 A |  | 100% |  |  | start no earlier than 2026-04-23 08:00 | Бундин В | 2h | 2h |
| 1349 | 2.255 | сделать ТО Бестром (чистка тен и т.д.) |  | 2h | 2026-04-22 08:00 A | 2026-04-22 11:00 A |  | 100% |  |  | start no earlier than 2026-04-22 08:00 | Дедов В | 2h | 2h |
| 1350 | 2.256 | собрать кабинку в мужской раздевалке, она там стоит в коробке |  | 1h | 2026-04-23 09:00 A | 2026-04-23 10:00 A |  | 100% |  |  | start no earlier than 2026-04-23 09:00 | Дедов В | 1h | 1h |
| 1351 | 2.257 | заменить датчик переполнения на загрузке с синего бункера, на складе взять |  | 1h | 2026-04-29 09:00 A | 2026-04-29 10:00 A |  | 100% |  |  | start no earlier than 2026-04-29 09:00 | Дедов В | 1h | 1h |
| 1352 | 2.258 | **включить все исектицидные светильники по цеху, проверить есть ли напряжение в розетках** |  | 0.12d | 2026-04-23 09:00 A | 2026-04-23 10:00 A |  | 100% |  |  |  | Дедов В | 2h | 2h |
| 1353 | 2.258.1 | проверить напряжение в розетке светильника на фасовке |  | 1h | 2026-04-23 09:00 A | 2026-04-23 10:00 A |  | 100% |  |  | start no earlier than 2026-04-23 08:00 | Бундин В | 1h | 1h |
| 1354 | 2.259 | **установить кольцо "вентури" в фильеру** |  | 2.38d? | 2026-05-04 09:00 | 2026-05-06 12:00 |  | 100% | 2026-04-27 09:00 | 2026-09-10 10:00 |  |  | 4.5h | 4.5h |
| 1355 | 2.259.1 | определить диаметр отверстия кольца |  | 1h | 2026-04-27 09:00 A | 2026-04-27 10:00 A |  | 100% |  |  | start no earlier than 2026-04-27 09:00 | Зорькин В | 1h | 1h |
| 1356 | 2.259.2 | заявка на изготовление |  | 1h | 2026-04-28 10:00 A | 2026-04-28 11:00 A | 1355FS+1d | 100% |  |  | start no earlier than 2026-04-20 08:00 | Зорькин В | 1h | 1h |
| 1357 | 2.259.3 | контроль |  | 1h | 2026-05-04 09:00 A | 2026-05-04 10:00 A | 1356FS+1d | 100% |  |  | start no earlier than 2026-05-04 09:00 | Зорькин В | 1h | 1h |
| 1358 | 2.259.4 | заявка на выжечь проставку лдя кольца |  | 30min | 2026-07-15 09:00 A | 2026-07-15 09:30 A |  | 100% |  |  | start no earlier than 2026-07-15 09:00 | Зорькин В | 0.5h | 0.5h |
| 1359 | 2.259.5 | контроль доставки | milestone | 0d | 2026-07-22 09:30 A | 2026-07-22 09:30 A | 1358FS+5d | 100% |  |  | start no earlier than 2026-07-15 09:00 | Зорькин В |  |  |
| 1360 | 2.259.6 | провести тест |  | 1h | 2026-09-10 09:00 A | 2026-09-10 10:00 A |  | 100% |  |  | start no earlier than 2026-09-10 09:00 | Зорькин В | 1h | 1h |
| 1361 | 2.260 | замена фильтр вода подача в накопитель |  | 1h | 2026-04-21 09:00 A | 2026-04-21 10:00 A |  | 100% |  |  | start no earlier than 2026-04-21 09:00 | Тимофеев В | 1h | 1h |
| 1362 | 2.261 | замена потускневших ламп в инсекютере. Мастеру сообщить кол-во. б/у складывать в коробку |  | 2h | 2026-05-04 09:00 A | 2026-05-04 11:00 A |  | 100% |  |  | start no earlier than 2026-05-04 09:00 | Макаревич А | 2h | 2h |

| ID | WBS | Task | Type | Duration | Start | Finish | Predecessors | Complete | Actual start | Actual finish | Constraint | Resources | Work | Actual work |
| --- | --- | --- | --- | --- | --- | --- | --- | --- | --- | --- | --- | --- | --- | --- |
| 1363 | 2.262 | **ограждение палетообмотчика** |  | 19.25d | 2026-04-17 08:00 A | 2026-05-14 11:00 A |  | 100% |  |  |  |  | 190.5h | 190.5h |
| 1364 | 2.262.1 | **подготовка и монтаж рамы** |  | 6.75d | 2026-04-17 08:00 A | 2026-04-27 16:00 A |  | 100% |  |  |  |  | 24h | 24h |
| 1365 | 2.262.1.1 | изготовить ограждения для палетообмотчика (размеры обговорим) |  | 10h | 2026-04-17 08:00 A | 2026-04-20 11:00 A |  | 100% |  |  | start no earlier than 2026-04-17 08:00 | Макаревич А | 10h | 10h |
| 1366 | 2.262.1.2 | очистка, покраска рам ограждения. Быстросохн грунт-эмаль по ржавчине 3в1. |  | 4h | 2026-04-20 08:00 A | 2026-04-20 13:00 A |  | 100% |  |  | start no earlier than 2026-04-20 08:00 | Макаревич А | 4h | 4h |
| 1367 | 2.262.1.3 | монтаж рамы ограждения |  | 4h | 2026-04-27 09:00 A | 2026-04-27 13:00 A | 1366 | 100% |  |  | start no earlier than 2026-04-27 09:00 | Тимофеев В | 4h | 4h |
| 1368 | 2.262.1.4 | приварить пластины под стойки ограждения и закрепить к полу, чтобы оператор был вне зоны опасности) |  | 6h | 2026-04-25 09:00 A | 2026-04-27 16:00 A |  | 100% |  |  | start no earlier than 2026-04-25 09:00 | Макаревич А | 6h | 6h |
| 1369 | 2.262.2 | **обклеить рамы лентой** |  | 17.25d | 2026-04-21 09:00 A | 2026-05-14 11:00 A |  | 100% |  |  |  |  | 82.25h | 82.25h |
| 1370 | 2.262.2.1 | заявка клейка лента сигнальная черно-желтая / негабарит |  | 15min | 2026-04-21 09:00 A | 2026-04-21 09:15 A |  | 100% |  |  | start no earlier than 2026-04-21 09:00 | Зорькин В | 0.25h | 0.25h |
| 1371 | 2.262.2.2 | доставка |  | 10d | 2026-04-21 09:15 A | 2026-05-05 09:15 A | 1370 | 100% |  |  | start no earlier than 2026-04-20 08:00 | Карабанов | 80h | 80h |
| 1372 | 2.262.2.3 | монтаж ленты черно-желтой |  | 2h | 2026-05-14 09:00 A | 2026-05-14 11:00 A | 1371 | 100% |  |  | start no earlier than 2026-05-14 09:00 | Бобренок В | 2h | 2h |
| 1373 | 2.262.3 | **монтаж сетки на раму** |  | 10.03d | 2026-04-21 09:00 A | 2026-05-05 09:15 A |  | 100% |  |  |  |  | 84.25h | 84.25h |
| 1374 | 2.262.3.1 | заявка сетка для ограждения |  | 15min | 2026-04-21 09:00 A | 2026-04-21 09:15 A |  | 100% |  |  | start no earlier than 2026-04-21 09:00 | Зорькин В | 0.25h | 0.25h |
| 1375 | 2.262.3.2 | доставка сетка |  | 10d | 2026-04-21 09:15 A | 2026-05-05 09:15 A | 1374 | 100% |  |  | start no earlier than 2026-04-20 08:00 | Карабанов | 80h | 80h |
| 1376 | 2.262.3.3 | монтаж сетка |  | 4h | 2026-05-04 09:15 A | 2026-05-04 14:15 A | 1375 | 100% |  |  | start no earlier than 2026-04-20 08:00 | Некрасов А | 4h | 4h |
| 1377 | 2.263 | воздухозабоник циклона отпилить и вернуть как было раньше |  | 1h | 2026-04-28 09:00 A | 2026-04-28 10:00 A |  | 100% |  |  | start no earlier than 2026-04-28 09:00 | Тимофеев В | 1h | 1h |
| 1378 | 2.264 | проверка всех гидроаккумуляторов парогенератор, в вент комнате и отопительные |  | 2h | 2026-04-17 09:00 A | 2026-04-17 11:00 A |  | 100% |  |  | start no earlier than 2026-04-17 08:00 |  |  |  |
| 1379 | 2.265 | сборка полетообмотчика на фасовке |  | 1h | 2026-04-16 09:00 A | 2026-04-16 10:00 A |  | 100% |  |  | start no earlier than 2026-04-16 09:00 | Бобренок В | 1h | 1h |
| 1380 | 2.266 | заменить ремень на охладителе |  | 1h | 2026-04-15 09:00 A | 2026-04-15 10:00 A |  | 100% |  |  | start no earlier than 2026-04-15 08:00 | Некрасов А | 1h | 1h |
| 1381 | 2.267 | оторвался контроллер мониторинга на ШУ экструдера |  | 1h | 2026-04-15 09:00 A | 2026-04-15 10:00 A |  | 100% |  |  | start no earlier than 2026-04-15 08:00 | Некрасов А | 1h | 1h |
| 1382 | 2.268 | **сделать горловину на быстросъемах прекондиционер** |  | 3.88d? | 2026-04-16 09:00 | 2026-04-21 17:00 |  | 100% | 2026-08-20 09:00 | 2026-09-14 12:00 |  |  | 23h | 23h |
| 1383 | 2.268.1 | заказать защелки |  | 1d? | 2026-08-31 09:00 A | 2026-08-31 18:00 A |  | 100% |  |  | start no earlier than 2026-08-31 09:00 | Шуранов Ю | 8h | 8h |
| 1384 | 2.268.2 | Удлинить носик, чтоб можно было вешать мешок, куда будет ссыпаться мука |  | 3h | 2026-09-14 09:00 A | 2026-09-14 12:00 A |  | 100% |  |  | start no earlier than 2026-09-14 08:00 | Макаревич А | 3h | 3h |
| 1385 | 2.268.3 | изготовить установить люк для чистки с обр стороны как в 3ц (шапочка) |  | 4h | 2026-09-12 09:00 A | 2026-09-12 13:00 A |  | 100% |  |  | start no earlier than 2026-09-12 09:00 | Макаревич А | 4h | 4h |
| 1386 | 2.268.4 | установка |  | 1d? | 2026-08-20 09:00 A | 2026-08-20 18:00 A |  | 100% |  |  | start no earlier than 2026-09-02 09:00 | Тимофеев В | 8h | 8h |
| 1387 | 2.269 | перенести светильник квадропака (на край мезонина) |  | 2h | 2026-04-13 09:00 A | 2026-04-13 11:00 A |  | 100% |  |  | start no earlier than 2026-04-13 09:00 | Труфанов А | 2h | 2h |
| 1388 | 2.270 | сделать или мусоросборник на лотке выхода экструдера, или обратный лоток в сторону охдадителя (обсудим по телефону) |  | 4h | 2026-08-31 09:00 A | 2026-08-31 13:00 A |  | 100% |  |  | start no earlier than 2026-08-31 09:00 | Макаревич А | 4h | 4h |
| 1389 | 2.271 | слить конденсат с компрессора, продуть радиаторы, чистка фильтров | manual | 2h | 2026-04-12 09:00 A | 2026-04-12 11:00 A |  | 100% |  |  | start no earlier than 2026-04-12 09:00 | Труфанов А | 2h | 2h |
| 1390 | 2.272 | добавить в систему отопления воды (зона экструдера, вход в мойку) | manual | 2h | 2026-04-12 09:00 A | 2026-04-12 11:00 A |  | 100% |  |  | start no earlier than 2026-04-12 09:00 | Труфанов А | 2h | 2h |
| 1391 | 2.273 | починить стул Шелепову (выстучать середину и посадить на хомут) |  | 1h | 2026-04-11 09:00 A | 2026-04-13 10:00 A |  | 100% |  |  | start no earlier than 2026-04-11 09:00 | Труфанов А | 1h | 1h |
| 1392 | 2.274 | не работает вентилятор третий справа, плохой контакт- прикрутить |  | 1h | 2026-04-10 08:00 A | 2026-04-10 10:00 A |  | 100% |  |  | start no earlier than 2026-04-10 08:00 | Бобренок В | 1h | 1h |
| 1393 | 2.275 | взять канистру со склада и сделать подачу снизу, взять сгон с канистры 2 линии (канистру я видел в гидрализатной 1 ц.) |  | 1h | 2026-04-26 09:00 A | 2026-04-27 10:00 A |  | 100% |  |  | start no earlier than 2026-04-26 09:00 | Макаревич А | 1h | 1h |
| 1394 | 2.276 | сделать лоток под канистру рыбий жир - подача в прекондиционер |  | 3h | 2026-04-11 09:00 A | 2026-04-13 12:00 A |  | 100% |  |  | start no earlier than 2026-04-11 09:00 | Макаревич А | 3h | 3h |
| 1395 | 2.277 | перескочила цепь на 2ом ярусе охладителя -поправить |  | 1h | 2026-04-10 08:00 A | 2026-04-10 10:00 A |  | 100% |  |  | start no earlier than 2026-04-10 08:00 | Макаревич А | 1h | 1h |

| ID | WBS | Task | Type | Duration | Start | Finish | Predecessors | Complete | Remaining | Total slack | Constraint | Resources | Work | Actual work |
| --- | --- | --- | --- | --- | --- | --- | --- | --- | --- | --- | --- | --- | --- | --- |
| 1396 | 2.278 | **установка фосунок - подача жира 2 линия** |  | 5d | 2026-04-24 09:00 A | 2026-04-30 18:00 A |  | 100% |  |  |  |  | 8.42h | 8.42h |
| 1397 | 2.278.1 | заявка краны 1/2 |  | 15min | 2026-04-24 09:00 A | 2026-04-24 09:15 A |  | 100% |  |  | start no earlier than 2026-04-24 08:00 | Зорькин В | 0.25h | 0.25h |
| 1398 | 2.278.2 | доставка контроль |  | 10min | 2026-04-30 09:15 A | 2026-04-30 09:25 A | 1397FS+5d | 100% |  |  | start no earlier than 2026-04-24 08:00 | Зорькин В | 0.17h | 0.17h |
| 1399 | 2.278.3 | сборка кронштейн для фильтров + счетчик |  | 4h | 2026-04-30 09:25 A | 2026-04-30 14:25 A | 1398 | 100% |  |  | start no earlier than 2026-04-24 08:00 | Тимофеев В | 4h | 4h |
| 1400 | 2.278.4 | монтаж на линию фильтры + кронштейн + форсунка |  | 4h | 2026-04-30 13:25 A | 2026-04-30 18:00 A | 1399 | 100% |  |  | start no earlier than 2026-04-24 08:00 | Тимофеев В | 4h | 4h |
| 1401 | 2.279 | вывести на синий склад старые цепи от печи зона навесок |  | 2h | 2026-05-22 09:00 A | 2026-05-22 11:00 A |  | 100% |  |  | start no earlier than 2026-04-09 08:00 | Тимофеев В | 2h | 2h |
| 1402 | 2.280 | прикрутить уголок снизу выхода охладителя, забивается кормом (фото скину) |  | 1h | 2026-04-08 09:00 A | 2026-04-08 10:00 A |  | 100% |  |  | start no earlier than 2026-04-08 08:00 | Бундин В | 1h | 1h |
| 1403 | 2.281 | закрыть шибер кондиционера над жировиком |  | 1h | 2026-04-09 09:00 A | 2026-04-09 10:00 A |  | 100% |  |  | start no earlier than 2026-04-09 09:00 | Бобренок В | 1h | 1h |
| 1404 | 2.282 | прикрутить оргстекло в аквариуме где забрасывают навески в смеситель |  | 1h | 2026-04-08 09:00 A | 2026-04-08 10:00 A |  | 100% |  |  | start no earlier than 2026-04-08 09:00 | Бундин В | 1h | 1h |
| 1405 | 2.283 | ревизия двигатель, контакты ножевого узла |  | 1h | 2026-04-09 09:00 A | 2026-04-09 10:00 A |  | 100% |  |  | start no earlier than 2026-04-09 09:00 | Тимофеев В | 1h | 1h |
| 1406 | 2.284 | земена сеток печи |  | 2h | 2026-05-04 09:00 A | 2026-05-04 11:00 A |  | 100% |  |  | start no earlier than 2026-05-04 09:00 | Макаревич А; Некрасов А; Тимофеев В | 4h | 4h |
| 1407 | 2.285 | получить метал-лоток 100х50, закрепить слева от двери выхода с зоны экструдера и уложить все провода | manual | 2h | 2026-04-11 09:00 A | 2026-04-11 11:00 A |  | 100% |  |  |  | Труфанов А | 2h | 2h |
| 1408 | 2.286 | получить аллюминевый скотч- замотать стыки циклона, улитки печек, место рычага шибера улитки | manual | 2h | 2026-04-05 09:00 A | 2026-04-05 11:00 A |  | 100% |  |  | start no earlier than 2026-04-05 09:00 | Труфанов А | 2h | 2h |
| 1409 | 2.287 | **установить водоподготовку на парогенератор** |  | 141d? | 2026-04-08 09:00 A | 2026-10-09 18:00 |  | 3% | 137.19d? | 112.59d |  |  | 17.25h | 0.25h |
| 1410 | 2.287.1 | планирование монтажа |  | 1h | 2026-10-05 09:00 | 2026-10-05 10:00 |  |  |  | 117.47d | start no earlier than 2026-10-05 09:00 | Домоводов К | 1h |  |
| 1411 | 2.287.2 | запрос КП | milestone | 0min | 2026-04-08 09:00 A | 2026-04-08 09:00 A |  | 100% |  |  | start no earlier than 2026-04-08 09:00 | Зорькин В |  |  |
| 1412 | 2.287.3 | решение о покупке | milestone | 0d | 2026-04-08 18:00 A | 2026-04-08 18:00 A | 1411FS+1d | 100% |  |  | start no earlier than 2026-04-03 08:00 | Домоводов К |  |  |
| 1413 | 2.287.4 | контроль поставки |  | 15min | 2026-04-27 09:00 A | 2026-04-27 09:15 A |  | 100% |  |  | start no earlier than 2026-04-27 09:00 | Зорькин В | 0.25h | 0.25h |
| 1414 | 2.287.5 | монтаж (установка) |  | 1d? | 2026-10-09 09:00 | 2026-10-09 18:00 |  |  |  | 112.59d | start no earlier than 2026-10-09 09:00 | Тимофеев В; Некрасов А | 16h |  |
| 1415 | 2.288 | **изготовить сетку перед фильерой экструдера от костей** |  | 11d | 2026-04-17 09:00 A | 2026-05-01 18:00 A |  | 100% |  |  |  |  | 83.25h | 83.25h |
| 1416 | 2.288.1 | составить чертеж |  | 2h | 2026-04-17 09:00 A | 2026-04-17 11:00 A |  | 100% |  |  | start no earlier than 2026-04-17 09:00 | Зорькин В | 2h | 2h |
| 1417 | 2.288.2 | разместить заказ |  | 1h | 2026-04-18 11:00 A | 2026-04-20 10:00 A | 1416FS+1d | 100% |  |  | start no earlier than 2026-04-03 08:00 | Зорькин В | 1h | 1h |
| 1418 | 2.288.3 | изготовление |  | 10d | 2026-04-18 12:00 A | 2026-05-01 18:00 A | 1417 | 100% |  |  | start no earlier than 2026-04-03 08:00 | Подрядчик | 80h | 80h |
| 1419 | 2.288.4 | контроль | milestone | 0d | 2026-04-30 12:00 A | 2026-04-30 12:00 A | 1418 | 100% |  |  | start no earlier than 2026-04-03 08:00 | Зорькин В |  |  |
| 1420 | 2.288.5 | орг забрать |  | 15min | 2026-05-01 12:00 A | 2026-05-01 12:15 A | 1419FS+1d | 100% |  |  | start no earlier than 2026-04-03 08:00 | Зорькин В | 0.25h | 0.25h |

| ID | WBS | Task | Type | Duration | Start | Finish | Predecessors | Complete | Actual start | Actual finish | Constraint | Resources | Work | Actual work |
| --- | --- | --- | --- | --- | --- | --- | --- | --- | --- | --- | --- | --- | --- | --- |
| 1421 | 2.289 | **вешалка для дамских сумочек в тамбур при надевании бахил** |  | 13.25d | 2026-05-04 09:00 | 2026-05-18 11:00 |  | 100% | 2026-04-17 09:00 | 2026-06-15 10:00 |  |  | 82h | 82h |
| 1422 | 2.289.1 | заявка |  | 1h | 2026-04-17 09:00 A | 2026-04-17 10:00 A |  | 100% |  |  | start no earlier than 2026-04-17 09:00 | Зорькин В | 1h | 1h |
| 1423 | 2.289.2 | доставка |  | 10d | 2026-04-17 10:00 A | 2026-05-01 10:00 A | 1422 | 100% |  |  | start no earlier than 2026-04-02 08:00 | Карабанов | 80h | 80h |
| 1424 | 2.289.3 | монтаж |  | 1h | 2026-06-13 09:00 A | 2026-06-15 10:00 A | 1423 | 100% |  |  | start no earlier than 2026-06-13 09:00 | Бобренок В | 1h | 1h |
| 1425 | 2.290 | Врезка фитинга 1/2х12мм в дверку прекондиционера 2 цех (созвон с Зорькиным) |  | 30min | 2026-04-09 09:00 A | 2026-04-09 09:30 A |  | 100% |  |  | start no earlier than 2026-04-09 09:00 | Тимофеев В | 0.5h | 0.5h |
| 1426 | 2.291 | проверить контур управления насосом ПГ |  | 1h | 2026-04-02 09:00 A | 2026-04-02 10:00 A |  | 100% |  |  | start no earlier than 2026-04-02 09:00 | Тимофеев В | 1h | 1h |
| 1427 | 2.292 | замена электродной группы или чистка до металла электродов |  | 1h | 2026-04-16 09:00 A | 2026-04-16 10:00 A |  | 100% |  |  | start no earlier than 2026-04-16 09:00 | Макаревич А | 1h | 1h |
| 1428 | 2.293 | закрепить шкаф управления приточной вентиляцией |  | 30min | 2026-04-01 08:00 A | 2026-04-01 09:30 A |  | 100% |  |  | start no earlier than 2026-04-01 08:00 | Бобренок В | 0.5h | 0.5h |
| 1429 | 2.294 | установить пневмо пистолеты на охладители с длинным носиком (у мастеров) |  | 1h | 2026-04-01 08:00 A | 2026-04-01 10:00 A |  | 100% |  |  | start no earlier than 2026-04-01 08:00 | Бобренок В | 1h | 1h |
| 1430 | 2.295 | утечка группа безопасности котел склад навесок устранить |  | 30min | 2026-03-31 08:00 A | 2026-03-31 09:30 A |  | 100% |  |  | start no earlier than 2026-03-31 08:00 | Бобренок В | 0.5h | 0.5h |
| 1431 | 2.296 | закрепить две трубы подачи воздуха в охладителе, пневмо шланг подачи в улитку крепим к стене |  | 2h | 2026-03-27 09:00 A | 2026-03-27 11:00 A |  | 100% |  |  | start no earlier than 2026-03-27 08:00 | Труфанов А | 2h | 2h |
| 1432 | 2.297 | изготовить 2 лотка 700х400х50 мм из нерж под транспортерную ленту транспортер №1 и №2 |  | 6h | 2026-04-04 09:00 A | 2026-04-06 16:00 A |  | 100% |  |  | start no earlier than 2026-04-04 09:00 | Макаревич А | 6h | 6h |
| 1433 | 2.298 | открутить вилку-розетку возле насоса подачи жиров в экструдер |  | 1h | 2026-04-01 09:00 A | 2026-04-01 10:00 A |  | 100% |  |  | start no earlier than 2026-04-01 09:00 | Бобренок В | 1h | 1h |
| 1434 | 2.299 | прикруть кусок металлопрофиля ,чтобы заделать отверстие куда проходит труба отопления (зона где привозят навески) фото скину | manual | 1h | 2026-03-29 09:00 A | 2026-03-29 10:00 A |  | 100% |  |  | start no earlier than 2026-03-29 09:00 | Бундин В | 1h | 1h |
| 1435 | 2.300 | **замена ленты нория** |  | 4.5d | 2026-03-27 08:00 A | 2026-04-02 13:00 A |  | 100% |  |  |  |  | 39.5h | 39.5h |
| 1436 | 2.300.1 | получить материал весь | manual | 30min | 2026-03-29 09:00 A | 2026-03-29 09:30 A |  | 100% |  |  | start no earlier than 2026-03-29 09:00 | Тимофеев В | 0.5h | 0.5h |
| 1437 | 2.300.2 | подготовка кондуктора |  | 2h | 2026-03-27 08:00 A | 2026-03-27 11:00 A |  | 100% |  |  | start no earlier than 2026-03-27 08:00 | Некрасов А; Тимофеев В | 4h | 4h |
| 1438 | 2.300.3 | подготовить к установке норийную ленту, ковши, болты |  | 15h | 2026-03-28 09:00 A | 2026-03-31 17:00 A |  | 100% |  |  | start no earlier than 2026-03-28 09:00 | Дедов В | 15h | 15h |
| 1439 | 2.300.4 | подготовка крепления лебедки для затягивания ленты |  | 4h | 2026-03-31 09:00 A | 2026-03-31 13:00 A |  | 100% |  |  | start no earlier than 2026-03-31 09:00 | Труфанов А; Некрасов А | 8h | 8h |
| 1440 | 2.300.5 | замена ленты |  | 4h | 2026-04-02 09:00 A | 2026-04-02 13:00 A |  | 100% |  |  | start no earlier than 2026-04-02 09:00 | Некрасов А; Макаревич А; Тимофеев В | 12h | 12h |
| 1441 | 2.301 | закрепить гофру на трос -рефрежераторы на территории |  | 1h | 2026-03-27 09:00 A | 2026-03-27 10:00 A |  | 100% |  |  | start no earlier than 2026-03-27 09:00 | Некрасов А | 1h | 1h |
| 1442 | 2.302 | монтаж розетки до канистры с жиром для подачи в экструдер (подключение весов) |  | 2h | 2026-03-26 09:00 A | 2026-03-26 11:00 A |  | 100% |  |  | start no earlier than 2026-03-26 09:00 | Дедов В | 2h | 2h |
| 1443 | 2.303 | заделать щели / маршпуты крыс . Зона хранения навесок (закрутить профлист и запенить отверстие под трубу) |  | 1h | 2026-03-26 09:00 A | 2026-03-26 10:00 A |  | 100% |  |  | start no earlier than 2026-03-26 09:00 | Некрасов А | 1h | 1h |
| 1444 | 2.304 | оперативная замена шнеков |  | 6h | 2026-03-23 09:00 A | 2026-03-23 16:00 A |  | 100% |  |  | start no earlier than 2026-03-23 09:00 | Бобренок В; Бундин В | 12h | 12h |
| 1445 | 2.305 | выдать шланг для продувки бестрома |  | 1h | 2026-03-23 09:00 A | 2026-03-23 10:00 A |  | 100% |  |  | start no earlier than 2026-03-23 09:00 | Бундин В | 1h | 1h |
| 1446 | 2.306 | приварить уголок на лотке в охладитель (фото скину) |  | 2h | 2026-03-24 09:00 A | 2026-03-24 11:00 A |  | 100% |  |  | start no earlier than 2026-03-24 09:00 | Бобренок В | 2h | 2h |
| 1447 | 2.307 | на транспортере с охладителя отрезать концы саморезов на оргстекле (зарапают руки) |  | 1h | 2026-03-23 09:00 A | 2026-03-23 10:00 A |  | 100% |  |  | start no earlier than 2026-03-23 08:00 | Бундин В | 1h | 1h |
| 1448 | 2.308 | насосная станция включить и проверить на кз (выбивало автомат) |  | 2h | 2026-03-31 09:00 A | 2026-03-31 11:00 A |  | 100% |  |  | start no earlier than 2026-03-31 09:00 | Тимофеев В | 2h | 2h |
| 1449 | 2.309 | закрепить трубу РР к стене в районе хранения кубов гидролизат |  | 1h | 2026-03-26 09:00 A | 2026-03-26 10:00 A |  | 100% |  |  | start no earlier than 2026-03-26 09:00 | Тимофеев В | 1h | 1h |
| 1450 | 2.310 | настройка продувка ПГ ч/з 30 мин |  | 30min | 2026-04-02 09:00 A | 2026-04-02 09:30 A |  | 100% |  |  | start no earlier than 2026-04-02 09:00 | Шуранов Ю | 0.5h | 0.5h |
| 1451 | 2.311 | на красном смесителе закусывает ручку шибера - разобраться |  | 2h | 2026-03-26 09:00 A | 2026-03-26 11:00 A |  | 100% |  |  | start no earlier than 2026-03-26 09:00 | Тимофеев В | 2h | 2h |
| 1452 | 2.312 | посмотреть эл. магнит на двери вход ц.2 |  | 1h | 2026-03-27 09:00 A | 2026-03-27 10:00 A |  | 100% |  |  | start no earlier than 2026-03-27 09:00 | Тимофеев В | 1h | 1h |
| 1453 | 2.313 | ящик возле нашего кабинета- прибить или прикрутить дно |  | 1h | 2026-03-22 09:00 A | 2026-03-23 10:00 A |  | 100% |  |  | start no earlier than 2026-03-22 09:00 | Бобренок В | 1h | 1h |
| 1454 | 2.314 | слить конденсат, почистить фильтры и продуть радиаторы |  | 1h | 2026-03-21 09:00 A | 2026-03-23 10:00 A |  | 100% |  |  | start no earlier than 2026-03-21 09:00 | Дедов В | 1h | 1h |
| 1455 | 2.315 | забрать кресло Сапелина на ремонт в слесарку с каб. Шелепова |  | 2h | 2026-03-23 09:00 A | 2026-03-23 11:00 A |  | 100% |  |  | start no earlier than 2026-03-23 09:00 | Тимофеев В | 2h | 2h |
| 1456 | 2.316 | закрепить кабель в гофре на клипсы от розетки слева от ворот жировика |  | 1h | 2026-03-26 09:00 A | 2026-03-26 10:00 A |  | 100% |  |  | start no earlier than 2026-03-26 09:00 | Труфанов А | 1h | 1h |
| 1457 | 2.317 | уложить выше подиума и красиво закрепить на клипсы кабель в гофре от ворот справа (фото вышлю) |  | 1h | 2026-04-16 09:00 A | 2026-04-16 10:00 A |  | 100% |  |  | start no earlier than 2026-04-10 09:00 | Тимофеев В | 1h | 1h |
| 1458 | 2.318 | монтаж отбойников по периметру |  | 4h | 2026-03-25 09:00 A | 2026-03-25 13:00 A |  | 100% |  |  | start no earlier than 2026-03-25 09:00 | Бундин В | 4h | 4h |
| 1459 | 2.319 | перенос отбойник ГП с стороны эл щита, что бы не входл палет |  | 2h | 2026-03-19 08:00 A | 2026-03-19 11:00 A |  | 100% |  |  | start no earlier than 2026-03-19 08:00 | Бобренок В | 2h | 2h |
| 1460 | 2.320 | установить лист сендвич панель на стену жир/экструдер с стороны мойки |  | 3h | 2026-04-07 09:00 A | 2026-04-07 12:00 A |  | 100% |  |  | start no earlier than 2026-04-07 09:00 | Некрасов А; Труфанов А | 6h | 6h |
| 1461 | 2.321 | подлючить пневмоулитку к воздуху в охладителе |  | 1h | 2026-03-31 09:00 A | 2026-03-31 10:00 A |  | 100% |  |  | start no earlier than 2026-03-31 09:00 | Бобренок В | 1h | 1h |
| 1462 | 2.322 | выдать уплотнение на крышки прекондиционера |  | 30min | 2026-03-19 08:00 A | 2026-03-19 09:30 A |  | 100% |  |  | start no earlier than 2026-03-19 08:00 | Бобренок В | 0.5h | 0.5h |

| ID | WBS | Task | Type | Duration | Start | Finish | Predecessors | Complete | Actual start | Actual finish | Constraint | Resources | Work | Actual work |
| --- | --- | --- | --- | --- | --- | --- | --- | --- | --- | --- | --- | --- | --- | --- |
| 1463 | 2.323 | **ворота фасовка** |  | 0.12d | 2026-03-26 09:00 A | 2026-03-26 10:00 A |  | 100% |  |  |  |  | 1h | 1h |
| 1464 | 2.323.1 | закрепить гофру до розетки слева от ворот и закрыть монтажную коробку |  | 1h | 2026-03-26 09:00 A | 2026-03-26 10:00 A |  | 100% |  |  | start no earlier than 2026-03-26 09:00 | Некрасов А | 1h | 1h |
| 1465 | 2.324 | **забивает лоток прекондиционер/экструдер, передалать** |  | 1.62d | 2026-08-31 09:00 A | 2026-09-01 15:00 A |  | 100% |  |  |  |  | 5h | 5h |
| 1466 | 2.324.1 | изготовить чертежи лекалы для воронки |  | 1h | 2026-08-31 09:00 A | 2026-08-31 10:00 A |  | 100% |  |  | start no earlier than 2026-08-31 09:00 | Шуранов Ю | 1h | 1h |
| 1467 | 2.324.2 | изготовление воронки |  | 4h | 2026-09-01 10:00 A | 2026-09-01 15:00 A | 1466FS+1d | 100% |  |  | start no earlier than 2026-09-01 09:00 | Макаревич А | 4h | 4h |
| 1468 | 2.325 | уложить в лоток пучек управления заслонками, отвязать от батареи |  | 1h | 2026-03-17 08:00 A | 2026-03-17 10:00 A |  | 100% |  |  | start no earlier than 2026-03-17 08:00 | Бобренок В | 1h | 1h |
| 1469 | 2.326 | распред коробка подкл вентилятора которого уже нет (кондиционер №3 жиры) - облогородить |  | 30min | 2026-03-17 08:00 A | 2026-03-17 09:30 A |  | 100% |  |  | start no earlier than 2026-03-17 08:00 | Бобренок В | 0.5h | 0.5h |
| 1470 | 2.327 | удалить лотаки с барана |  | 2h | 2026-03-19 09:00 A | 2026-03-19 11:00 A |  | 100% |  |  | start no earlier than 2026-03-19 08:00 | Труфанов А; Некрасов А | 4h | 4h |
| 1471 | 2.328 | упорядочить проводку регистратора данных - стянуть в пучек |  | 1h | 2026-03-20 09:00 A | 2026-03-20 10:00 A |  | 100% |  |  | start no earlier than 2026-03-20 09:00 | Дедов В | 1h | 1h |
| 1472 | 2.329 | **открыть люк у бестрома / ревизяия / закрыть на герметик** |  | 0.12d | 2026-03-19 09:00 A | 2026-03-19 10:00 A |  | 100% |  |  |  | Труфанов А | 2h | 2h |
| 1473 | 2.329.1 | хим. Лаборатория устранить течь с оборудования |  | 1h | 2026-03-19 09:00 A | 2026-03-19 10:00 A |  | 100% |  |  | start no earlier than 2026-03-19 08:00 | Труфанов А | 1h | 1h |
| 1474 | 2.330 | **изготовить 2 лотка из нерж. в зоне жиров по аналогии с первым цехом под транспортером тип 1 и тип 2** |  | 0.25d | 2026-03-16 09:00 A | 2026-03-16 11:00 A |  | 100% |  |  |  | Макаревич А | 4h | 4h |
| 1475 | 2.330.1 | установить отбойник в зону ХХХ, брать в 5А |  | 2h | 2026-03-16 09:00 A | 2026-03-16 11:00 A |  | 100% |  |  | start no earlier than 2026-03-16 09:00 | Бобренок В | 2h | 2h |
| 1476 | 2.331 | **сточить острый край лотка загрузки в охладитель** |  | 0.12d | 2026-03-15 09:00 A | 2026-03-16 10:00 A |  | 100% |  |  |  | Некрасов А | 3h | 3h |
| 1477 | 2.331.1 | вывезти люльку, вывезти бойлер, провода на жирах спрятать в коробку |  | 1h | 2026-03-15 09:00 A | 2026-03-16 10:00 A |  | 100% |  |  | start no earlier than 2026-03-15 09:00 | Бобренок В | 1h | 1h |
| 1478 | 2.331.2 | бойлер в душе - установить трубку на клапан сброса и смонтировать её по стене до канализ трубы |  | 1h | 2026-03-16 09:00 A | 2026-03-16 10:00 A |  | 100% |  |  | start no earlier than 2026-03-16 09:00 | Макаревич А | 1h | 1h |
| 1479 | 2.332 | облогородить кабельный пучек, сделать аккуратно/закрыить крышкой. Слева от двери экструдер/тамбур под лестницей |  | 6h | 2026-04-09 09:00 A | 2026-04-09 16:00 A |  | 100% |  |  | start no earlier than 2026-04-11 09:00 | Труфанов А | 6h | 6h |
| 1480 | 2.333 | **изготовить сетку после барабана по аналогии с сущ 10мм** |  | 2.5d | 2026-03-12 09:00 A | 2026-03-16 13:00 A |  | 100% |  |  |  | Макаревич А | 25.5h | 25.5h |
| 1481 | 2.333.1 | на лоток загрузки в охладитель - установить доп борт с левой стороны, такой же как с правой (съемный) |  | 4h | 2026-03-15 09:00 A | 2026-03-16 13:00 A |  | 100% |  |  | start no earlier than 2026-03-15 09:00 | Бобренок В | 4h | 4h |
| 1482 | 2.333.2 | квадропак стол подачи пакетов устновить кайки с барашком/приварить. + зафиксировать от бокового смещения |  | 1h | 2026-03-16 09:00 A | 2026-03-16 10:00 A |  | 100% |  |  | start no earlier than 2026-03-16 09:00 | Тимофеев В | 1h | 1h |
| 1483 | 2.333.3 | изменить время разгон/торожение привод барабана |  | 30min | 2026-03-12 09:00 A | 2026-03-12 09:30 A |  | 100% |  |  | start no earlier than 2026-03-13 09:00 | Дедов В | 0.5h | 0.5h |
| 1484 | 2.334 | изготовить кожух на шестерни прекондиционера |  | 6h | 2026-04-03 09:00 A | 2026-04-03 16:00 A |  | 100% |  |  | start no earlier than 2026-04-03 09:00 | Макаревич А | 6h | 6h |
| 1485 | 2.335 | **ремонт датчик давления линия 3** |  | 30.25d | 2026-03-26 09:00 | 2026-04-30 11:00 |  | 100% | 2026-05-14 09:00 | 2026-06-11 12:00 |  |  | 124.75h | 124.75h |
| 1486 | 2.335.1 | заявка переходник G1/4 /M20*1.5 токарю |  | 15min | 2026-05-14 09:00 A | 2026-05-14 09:15 A |  | 100% |  |  | start no earlier than 2026-05-14 09:00 | Зорькин В | 0.25h | 0.25h |
| 1487 | 2.335.2 | контроль изг/орг доставка | milestone | 0d | 2026-05-14 09:15 A | 2026-05-14 09:15 A | 1486 | 100% |  |  | start no earlier than 2026-03-20 08:00 |  |  |  |
| 1488 | 2.335.3 | заказ замена + в ЗИП |  | 15min | 2026-05-14 09:15 A | 2026-05-14 09:30 A | 1487 | 100% |  |  | start no earlier than 2026-03-13 09:00 | Зорькин В | 0.25h | 0.25h |
| 1489 | 2.335.4 | заявка на РВД удлинитель |  | 15min | 2026-05-14 09:30 A | 2026-05-14 09:45 A | 1488 | 100% |  |  | start no earlier than 2026-03-12 08:00 | Зорькин В | 0.25h | 0.25h |
| 1490 | 2.335.5 | доставка |  | 15d | 2026-05-14 09:45 A | 2026-06-04 09:45 A | 1489 | 100% |  |  | start no earlier than 2026-03-12 08:00 | Карабанов | 120h | 120h |
| 1491 | 2.335.6 | монтаж |  | 1h | 2026-06-04 09:00 A | 2026-06-04 10:00 A |  | 100% |  |  | start no earlier than 2026-06-04 09:00 | Тимофеев В | 1h | 1h |
| 1492 | 2.335.7 | датчик давления экструдера проверка подключения |  | 3h | 2026-06-11 09:00 A | 2026-06-11 12:00 A |  | 100% |  |  | start no earlier than 2026-06-11 09:00 | Дедов В | 3h | 3h |

| ID | WBS | Task | Duration | Start | Finish | Predecessors | Complete | Constraint | Resources | Work | Actual work |
| --- | --- | --- | --- | --- | --- | --- | --- | --- | --- | --- | --- |
| 1493 | 2.336 | **установить сирену при отключении автомата ПГ** | 28.12d | 2026-03-13 09:00 A | 2026-04-22 10:00 A |  | 100% |  |  | 81.5h | 81.5h |
| 1494 | 2.336.1 | заявка на реле / сирена | 30min | 2026-03-13 09:00 A | 2026-03-13 09:30 A |  | 100% | start no earlier than 2026-03-13 09:00 | Шуранов Ю | 0.5h | 0.5h |
| 1495 | 2.336.2 | доставка | 10d | 2026-03-13 09:30 A | 2026-03-27 09:30 A | 1494 | 100% | start no earlier than 2026-03-12 08:00 | Карабанов | 80h | 80h |
| 1496 | 2.336.3 | монтаж в схему (проверить почему не срабатывает) | 1h | 2026-04-22 09:00 A | 2026-04-22 10:00 A | 1495 | 100% | start no earlier than 2026-04-22 09:00 | Дедов В | 1h | 1h |
| 1497 | 2.337 | **установить сирену на отключение автоматов в печи** | 16d | 2026-03-11 09:00 A | 2026-04-01 18:00 A |  | 100% |  |  | 44.25h | 44.25h |
| 1498 | 2.337.1 | заявка сирена | 15min | 2026-03-13 09:30 A | 2026-03-13 09:45 A | 1494 | 100% | start no earlier than 2026-03-12 08:00 | Шуранов Ю | 0.25h | 0.25h |
| 1499 | 2.337.2 | доставка | 5d | 2026-03-13 09:45 A | 2026-03-20 09:45 A | 1498 | 100% | start no earlier than 2026-03-12 08:00 | Карабанов | 40h | 40h |
| 1500 | 2.337.3 | монтаж | 2h | 2026-03-19 09:00 A | 2026-03-19 11:00 A | 1499 | 100% | start no earlier than 2026-03-19 09:00 | Дедов В | 2h | 2h |
| 1501 | 2.337.4 | доставка сирены | 10d | 2026-03-19 09:00 A | 2026-04-01 18:00 A |  | 100% | start no earlier than 2026-03-19 08:00 |  |  |  |
| 1502 | 2.337.5 | монтаж сирены | 1h | 2026-03-31 09:00 A | 2026-03-31 10:00 A | 1501 | 100% | start no earlier than 2026-03-31 09:00 | Дедов В | 1h | 1h |
| 1503 | 2.337.6 | настройка доводчика дверь вход в зону экструдера | 1h | 2026-03-11 09:00 A | 2026-03-11 10:00 A |  | 100% | start no earlier than 2026-03-11 09:00 | Макаревич А | 1h | 1h |
| 1504 | 2.338 | **выпадает фильера с матрицы - делать стпор** | 0.5d | 2026-04-27 09:00 A | 2026-04-27 13:00 A |  | 100% |  |  | 4.5h | 4.5h |
| 1505 | 2.338.1 | подготовка сверла / метчика | 30min | 2026-04-27 09:00 A | 2026-04-27 09:30 A |  | 100% | start no earlier than 2026-04-27 09:00 | Шуранов Ю | 0.5h | 0.5h |
| 1506 | 2.338.2 | сверлить и резать резьбу для фикс болта | 4h | 2026-04-27 09:00 A | 2026-04-27 13:00 A |  | 100% | start no earlier than 2026-04-27 09:00 | Подрядчик | 4h | 4h |
| 1507 | 2.339 | **замена поликарбанат на перегородках металопрофилем** | 68.75d | 2026-03-11 09:00 A | 2026-06-15 16:00 A |  | 100% |  |  | 114h | 114h |
| 1508 | 2.339.1 | расчет материал стена охладитель | 1h | 2026-03-19 09:00 A | 2026-03-19 10:00 A |  | 100% | start no earlier than 2026-03-19 09:00 | Шуранов Ю | 1h | 1h |
| 1509 | 2.339.2 | заявка | 1h | 2026-03-19 10:00 A | 2026-03-19 11:00 A | 1508 | 100% | start no earlier than 2026-03-12 08:00 | Шуранов Ю | 1h | 1h |
| 1510 | 2.339.3 | доставка | 10d | 2026-03-19 11:00 A | 2026-04-02 11:00 A | 1509 | 100% | start no earlier than 2026-03-12 08:00 | Карабанов | 80h | 80h |
| 1511 | 2.339.4 | из металлопрофиля 3м. Обшиваем охладитель внутри и снаружи + утеплитель | 5h | 2026-05-29 09:00 A | 2026-05-29 15:00 A |  | 100% | start no earlier than 2026-05-29 09:00 | Некрасов А; Бобренок В | 10h | 10h |
| 1512 | 2.339.5 | продолжить монтаж (со стороны охладителя и со стороны жиров) | 6h | 2026-06-15 09:00 A | 2026-06-15 16:00 A | 1510 | 100% | start no earlier than 2026-06-15 09:00 | Некрасов А; Бундин В | 12h | 12h |
| 1513 | 2.339.6 | замена шланг реле давление и настройка. фильтр приточная офис | 1h | 2026-03-12 09:00 A | 2026-03-12 10:00 A |  | 100% | start no earlier than 2026-03-13 09:00 | Дедов В | 1h | 1h |
| 1514 | 2.339.7 | замена насос гидролизата | 1h | 2026-03-12 08:00 A | 2026-03-12 10:00 A |  | 100% | start no earlier than 2026-03-12 08:00 | Бундин В; Тимофеев В | 2h | 2h |
| 1515 | 2.339.8 | замена подшипник прекондиционер | 1h | 2026-03-12 09:00 A | 2026-03-12 10:00 A |  | 100% | start no earlier than 2026-03-12 08:00 | Бундин В | 1h | 1h |
| 1516 | 2.339.9 | ремонт вал охладитель | 4h | 2026-03-12 09:00 A | 2026-03-12 13:00 A |  | 100% | start no earlier than 2026-03-19 09:00 | Тимофеев В | 4h | 4h |
| 1517 | 2.339.10 | плохо закр дверь на фасовку. заменить личинку двери / выравнить напильником в коробке. | 1h | 2026-03-11 09:00 A | 2026-03-11 10:00 A |  | 100% | start no earlier than 2026-03-11 09:00 | Макаревич А | 1h | 1h |
| 1518 | 2.339.11 | крепить поликарбанат стена печь/жир длинная часть | 1h | 2026-03-11 09:00 A | 2026-03-11 10:00 A |  | 100% | start no earlier than 2026-03-11 09:00 | Макаревич А | 1h | 1h |
| 1519 | 2.340 | сетку на выходе барабана жир закрепить. Устр вспомогактельные крепжи операторам | 1h | 2026-03-19 09:00 A | 2026-03-19 10:00 A |  | 100% | start no earlier than 2026-03-19 09:00 | Тимофеев В | 1h | 1h |

| ID | WBS | Task | Duration | Start | Finish | Predecessors | Complete | Constraint | Resources | Work | Actual work |
| --- | --- | --- | --- | --- | --- | --- | --- | --- | --- | --- | --- |
| 1520 | 2.341 | **установить / снять трубу от ПГ для чистки сетки** | 0.25d | 2026-03-12 09:00 A | 2026-03-12 11:00 A |  | 100% |  | Тимофеев В | 7h | 7h |
| 1521 | 2.341.1 | чистка циклон снаружи от копоти. Средство для чистки выдаст Шелепов К | 2h | 2026-03-12 09:00 A | 2026-03-12 11:00 A |  | 100% | start no earlier than 2026-03-12 09:00 | Тимофеев В; Бундин В | 4h | 4h |
| 1522 | 2.341.2 | замена датчик расхода пара | 1h | 2026-03-12 09:00 A | 2026-03-12 10:00 A |  | 100% | start no earlier than 2026-03-12 09:00 | Некрасов А | 1h | 1h |
| 1523 | 2.342 | **замениь фитинги на жир** | 0.25d | 2026-03-10 09:00 A | 2026-03-10 11:00 A | 729 | 100% |  | Некрасов А | 4h | 4h |
| 1524 | 2.342.1 | замена бойлер в мойке экструдера на бойлер который весит за экструдером | 2h | 2026-03-10 09:00 A | 2026-03-10 11:00 A |  | 100% | start no earlier than 2026-03-10 09:00 | Дедов В | 2h | 2h |
| 1525 | 2.343 | **переключить освещение на автолномный выключатель, запитанный от системы освещения, а не от оборудования.** | 15.38d | 2026-03-05 09:00 A | 2026-03-26 12:00 A |  | 100% |  |  | 13h | 13h |
| 1526 | 2.343.1 | ножевой узел | 1.5h | 2026-03-26 09:00 A | 2026-03-26 10:30 A |  | 100% | start no earlier than 2026-03-26 09:00 | Дедов В; Некрасов А | 3h | 3h |
| 1527 | 2.343.2 | бестром | 1.5h | 2026-03-26 09:00 A | 2026-03-26 10:30 A |  | 100% | start no earlier than 2026-03-26 09:00 | Некрасов А; Дедов В | 3h | 3h |
| 1528 | 2.343.3 | выход с охладителя | 1.5h | 2026-03-26 10:30 A | 2026-03-26 12:00 A | 1526 | 100% | start no earlier than 2026-03-26 09:00 | Дедов В; Некрасов А | 3h | 3h |
| 1529 | 2.343.4 | переключить норию квадропака стационрно, без розетки | 2h | 2026-03-05 09:00 A | 2026-03-05 11:00 A |  | 100% | start no earlier than 2026-03-05 09:00 | Дедов В | 2h | 2h |
| 1530 | 2.343.5 | перемонтаж провода заземления нории квадропак эстетично и удобно для прохода и уборщицы | 2h | 2026-03-05 09:00 A | 2026-03-05 11:00 A |  | 100% | start no earlier than 2026-03-05 09:00 | Дедов В | 2h | 2h |
| 1531 | 2.344 | **сетки на дно печи в зип изготовить** | 10.5d | 2026-03-10 09:00 A | 2026-03-24 13:00 A |  | 100% |  |  | 85h | 85h |
| 1532 | 2.344.1 | заявка сетка уголки | 1h | 2026-03-10 09:00 A | 2026-03-10 10:00 A |  | 100% | start no earlier than 2026-03-10 09:00 | Шуранов Ю | 1h | 1h |
| 1533 | 2.344.2 | доставка | 10d | 2026-03-10 10:00 A | 2026-03-24 10:00 A | 1532 | 100% | start no earlier than 2026-03-06 08:00 | Карабанов | 80h | 80h |
| 1534 | 2.344.3 | изготовление | 4h | 2026-03-24 09:00 A | 2026-03-24 13:00 A | 1533 | 100% | start no earlier than 2026-03-24 09:00 | Тимофеев В | 4h | 4h |
| 1535 | 2.345 | закрепить лоток для совка с спиртом. Изготовить усилит косынку | 2h | 2026-03-07 09:00 A | 2026-03-09 11:00 A |  | 100% | start no earlier than 2026-03-07 09:00 | Бундин В | 2h | 2h |
| 1536 | 2.346 | **установить монтажную коробку квадропак. Инструктаж Шуранов по тлф** | 0.12d | 2026-03-06 08:00 A | 2026-03-06 10:00 A |  | 100% |  | Бундин В | 2h | 2h |
| 1537 | 2.346.1 | Не уходит вода в душевой кабине, посмотреть, устранить. | 1h | 2026-03-06 08:00 A | 2026-03-06 10:00 A |  | 100% | start no earlier than 2026-03-06 08:00 | Бобренок В | 1h | 1h |
| 1538 | 2.347 | ревизия вентиляторов охладителя, не закрываются крышки | 30min | 2026-03-05 09:00 A | 2026-03-05 09:30 A |  | 100% | start no earlier than 2026-03-05 09:00 | Тимофеев В | 0.5h | 0.5h |
| 1539 | 2.348 | **Квадропак** | 0.38d | 2026-03-05 09:00 A | 2026-03-05 12:00 A |  | 100% |  |  | 3h | 3h |
| 1540 | 2.348.1 | Уложить красиво провода на лестнице квадропака цех 2 (созвон с Шурановым) | 3h | 2026-03-05 09:00 A | 2026-03-05 12:00 A |  | 100% | start no earlier than 2026-03-05 09:00 | Дедов В | 3h | 3h |
| 1541 | 2.349 | **Сброс ошибо Н4 и Е9 на кондиционерах** | 0.08d | 2026-03-04 09:00 A | 2026-03-04 09:40 A |  | 100% |  |  | 0.67h | 0.67h |
| 1542 | 2.349.1 | Договориться с оплотом по решению | 30min | 2026-03-04 09:00 A | 2026-03-04 09:30 A |  | 100% | start no earlier than 2026-03-04 09:00 | Зорькин В | 0.5h | 0.5h |
| 1543 | 2.349.2 | устранить ошибки | 10min | 2026-03-04 09:30 A | 2026-03-04 09:40 A | 1542 | 100% | start no earlier than 2026-03-03 08:00 | Зорькин В | 0.17h | 0.17h |
| 1544 | 2.350 | закреить поликарбанат по периметру | 4h | 2026-03-08 09:00 A | 2026-03-09 13:00 A |  | 100% | start no earlier than 2026-03-08 09:00 | Макаревич А | 4h | 4h |
| 1545 | 2.351 | смазать ручки и шарниры дверей | 1h | 2026-03-08 09:00 A | 2026-03-09 10:00 A |  | 100% | start no earlier than 2026-03-08 09:00 | Макаревич А | 1h | 1h |

| ID | WBS | Task | Duration | Start | Finish | Predecessors | Complete | Constraint | Resources | Work | Actual work |
| --- | --- | --- | --- | --- | --- | --- | --- | --- | --- | --- | --- |
| 1546 | 2.352 | **сделать ровным порог вход в мойку экструдера** | 23.5d | 2026-03-03 09:00 A | 2026-04-03 13:00 A |  | 100% |  |  | 86.25h | 86.25h |
| 1547 | 2.352.1 | Показать Олегу порог | 30min | 2026-03-03 09:00 A | 2026-03-03 09:30 A |  | 100% | start no earlier than 2026-03-03 08:00 | Зорькин В; Олег лукас | 1h | 1h |
| 1548 | 2.352.2 | составить план ремонта | 15min | 2026-03-03 09:00 A | 2026-03-03 09:15 A |  | 100% | start no earlier than 2026-03-03 09:00 | Зорькин В; Некрасов А; Труфанов А | 0.75h | 0.75h |
| 1549 | 2.352.3 | составить заявку на материал | 30min | 2026-03-04 09:00 A | 2026-03-04 09:30 A | 1548 | 100% | start no earlier than 2026-03-04 09:00 | Зорькин В | 0.5h | 0.5h |
| 1550 | 2.352.4 | доставка | 10d | 2026-03-04 09:30 A | 2026-03-18 09:30 A | 1549 | 100% | start no earlier than 2026-03-03 08:00 | Карабанов | 80h | 80h |
| 1551 | 2.352.5 | реализация | 4h | 2026-04-03 09:00 A | 2026-04-03 13:00 A | 1550 | 100% | start no earlier than 2026-04-03 09:00 | Олег | 4h | 4h |
| 1552 | 2.353 | востановить профлист. Проход навески экструдер. Обрезками с 3ц, цвет любой | 5h | 2026-03-08 09:00 A | 2026-03-09 15:00 A |  | 100% | start no earlier than 2026-03-08 09:00 | Макаревич А | 5h | 5h |
| 1553 | 2.354 | установить отбойники в проход и углы проезд навесок. Барть с 5а | 4h | 2026-03-09 09:00 A | 2026-03-09 13:00 A |  | 100% | start no earlier than 2026-03-09 09:00 | Макаревич А | 4h | 4h |
| 1554 | 2.355 | **установить отбойники в углы проезд навесок** | 24.25d | 2026-03-13 09:00 A | 2026-04-16 11:00 A |  | 100% |  |  | 82.17h | 82.17h |
| 1555 | 2.355.1 | заявка 2 отбойника | 10min | 2026-03-13 09:00 A | 2026-03-13 09:10 A |  | 100% | start no earlier than 2026-03-13 09:00 | Зорькин В | 0.17h | 0.17h |
| 1556 | 2.355.2 | доставка | 10d | 2026-03-13 09:10 A | 2026-03-27 09:10 A | 1555 | 100% | start no earlier than 2026-03-12 08:00 | Карабанов | 80h | 80h |
| 1557 | 2.355.3 | монтаж | 2h | 2026-04-16 09:00 A | 2026-04-16 11:00 A | 1556 | 100% | start no earlier than 2026-04-16 09:00 | Бундин В | 2h | 2h |
| 1558 | 2.356 | **наростить ножки на бестроме бункер, вместо деревянной** | 3.38d | 2026-03-05 09:00 A | 2026-03-10 12:00 A |  | 100% |  | Макаревич А | 39h | 39h |
| 1559 | 2.356.1 | **мойка** | 0.38d | 2026-03-05 09:00 A | 2026-03-05 12:00 A |  | 100% |  |  | 6h | 6h |
| 1560 | 2.356.1.1 | ревизия вытяжка принудительная из печи (нерж вентилятор), очистка | 3h | 2026-03-05 09:00 A | 2026-03-05 12:00 A |  | 100% | start no earlier than 2026-03-05 09:00 | Некрасов А; Труфанов А | 6h | 6h |
| 1561 | 2.356.2 | ремонт колесо штабелер/замена подшипник | 3h | 2026-03-10 09:00 A | 2026-03-10 12:00 A |  | 100% | start no earlier than 2026-03-10 09:00 | Тимофеев В; Дедов В | 6h | 6h |
| 1562 | 2.357 | **увеличить освещение в зоне квадропака** | 41.88d | 2026-03-02 09:00 A | 2026-04-28 17:00 A |  | 100% |  |  | 101h | 101h |
| 1563 | 2.357.1 | составить список мматериал для монтажа | 30min | 2026-03-02 09:00 A | 2026-03-02 09:30 A |  | 100% | start no earlier than 2026-03-02 09:00 | Труфанов А; Некрасов А; Зорькин В | 1.5h | 1.5h |
| 1564 | 2.357.2 | заявка светильники | 30min | 2026-03-02 09:30 A | 2026-03-02 10:00 A | 1563 | 100% | start no earlier than 2026-02-27 08:00 | Зорькин В | 0.5h | 0.5h |
| 1565 | 2.357.3 | доставка | 10d | 2026-03-02 10:00 A | 2026-03-16 10:00 A | 1564 | 100% | start no earlier than 2026-02-27 08:00 | Карабанов | 80h | 80h |
| 1566 | 2.357.4 | монтаж светильников зона фасовки 8 светильников, операторы помогут | 15h | 2026-04-25 09:00 A | 2026-04-28 17:00 A |  | 100% | start no earlier than 2026-04-25 09:00 | Бобренок В | 15h | 15h |
| 1567 | 2.357.5 | монтаж светильников зона квадропак 1шт - перевесить светильник | 1h | 2026-04-16 09:00 A | 2026-04-16 10:00 A |  | 100% | start no earlier than 2026-04-16 09:00 | Тимофеев В | 1h | 1h |
| 1568 | 2.357.6 | монтаж | 2h | 2026-03-06 09:00 A | 2026-03-06 11:00 A |  | 100% | start no earlier than 2026-03-06 09:00 | Бобренок В | 2h | 2h |
| 1569 | 2.357.7 | **замена сетка печи на мелкую** | 0.12d | 2026-03-02 09:00 A | 2026-03-02 10:00 A |  | 100% |  |  | 1h | 1h |
| 1570 | 2.357.7.1 | согласовать спецификацию / оплата счет | 1h | 2026-03-02 09:00 A | 2026-03-02 10:00 A |  | 100% | start no earlier than 2026-03-02 09:00 | Домоводов К | 1h | 1h |

| ID | WBS | Task | Duration | Start | Finish | Predecessors | Complete | Remaining | Total slack | Free slack | Constraint | Resources | Work | Actual work |
| --- | --- | --- | --- | --- | --- | --- | --- | --- | --- | --- | --- | --- | --- | --- |
| 1571 | 2.358 | **монтаж дозации жира в экструдер** | 34.25d? | 2026-02-27 09:00 A | 2026-04-16 11:00 |  | 38% | 21.26d? | 247.34d |  |  |  | 25h | 15h |
| 1572 | 2.358.1 | монтаж частотного привода | 2h | 2026-02-27 09:00 A | 2026-02-27 11:00 A |  | 100% |  |  |  | start no earlier than 2026-02-27 09:00 | Тимофеев В | 2h | 2h |
| 1573 | 2.358.2 | монтаж трассы гидравлической | 2h | 2026-03-02 09:00 A | 2026-03-02 11:00 A | 1572 | 100% |  |  |  | start no earlier than 2026-03-02 09:00 | Тимофеев В | 2h | 2h |
| 1574 | 2.358.3 | сборка канистры с фитингом | 1h | 2026-03-02 11:00 A | 2026-03-02 12:00 A | 1573 | 100% |  |  |  | start no earlier than 2026-02-26 08:00 | Тимофеев В | 1h | 1h |
| 1575 | 2.358.4 | калибровка на нужный расход | 1h | 2026-03-03 09:00 A | 2026-03-03 10:00 A |  | 100% |  |  |  | start no earlier than 2026-03-03 09:00 | Зорькин В; Тимофеев В | 2h | 2h |
| 1576 | 2.358.5 | испытание | 1h | 2026-03-04 09:00 A | 2026-03-04 10:00 A |  | 100% |  |  |  | start no earlier than 2026-03-04 09:00 | Зорькин В | 1h | 1h |
| 1577 | 2.358.6 | подключить управление насосом синхронно с запуском ножей экструдера. Проложить кабель, изучить параметары, передать по смене что подключать | 4h | 2026-03-04 09:00 | 2026-03-04 13:00 |  |  |  | 278.09d |  | start no earlier than 2026-03-04 09:00 | Дедов В | 4h |  |
| 1578 | 2.358.7 | подключить кабель/ неастроить параметры, что передаст Дедов | 1h | 2026-03-05 09:00 | 2026-03-05 10:00 |  |  |  | 277.47d |  | start no earlier than 2026-03-05 09:00 | Труфанов А | 1h |  |
| 1579 | 2.358.8 | поставка контрллра | 1d? | 2026-03-11 09:00 | 2026-03-11 18:00 |  |  |  | 272.34d | 25d | start no earlier than 2026-03-11 09:00 |  |  |  |
| 1580 | 2.358.9 | подключить контрллера расходомер | 2h | 2026-04-16 09:00 | 2026-04-16 11:00 | 1579 |  |  | 247.34d |  | start no earlier than 2026-04-16 09:00 | Тимофеев В | 2h |  |
| 1581 | 2.358.10 | Прокинуть интерфейсный кабель от черной коробочки до нового частотника на синем бункере (проложить так чтоб ни где ничего не торчало) | 3h | 2026-03-05 09:00 | 2026-03-05 12:00 |  |  |  | 277.22d |  | start no earlier than 2026-03-05 08:00 | Дедов В | 3h |  |
| 1582 | 2.358.11 | сделать регулировку угла наклона приемная воронка конв в охладитель после жира | 3h | 2026-03-05 09:00 A | 2026-03-05 12:00 A |  | 100% |  |  |  | start no earlier than 2026-03-05 09:00 | Некрасов А; Труфанов А | 6h | 6h |
| 1583 | 2.358.12 | сборка и монтаж полка для дез раствора на охладитель | 1h | 2026-03-02 09:00 A | 2026-03-02 10:00 A |  | 100% |  |  |  | start no earlier than 2026-03-02 09:00 | Тимофеев В | 1h | 1h |
| 1584 | 2.359 | **настройка блокировок отключения котла, если отключена приточка** | 130.25d | 2026-03-03 09:00 A | 2026-09-01 11:00 |  | 7% | 120.93d | 149.34d |  |  |  | 86.17h | 6.17h |
| 1585 | 2.359.1 | внести в схему котла блокировку либо от трм 33 либо от частотника | 4h | 2026-03-03 09:00 A | 2026-03-03 13:00 A |  | 100% |  |  |  | start no earlier than 2026-03-03 09:00 | Дедов В | 4h | 4h |
| 1586 | 2.359.2 | Заявка на реле протока воды | 10min | 2026-03-10 09:00 A | 2026-03-10 09:10 A |  | 100% |  |  |  | start no earlier than 2026-03-10 09:00 | Зорькин В | 0.17h | 0.17h |
| 1587 | 2.359.3 | Доставка | 10d | 2026-03-10 09:10 | 2026-03-24 09:10 | 1586 |  |  | 264.57d |  | start no earlier than 2026-03-02 09:00 | Карабанов | 80h |  |
| 1588 | 2.359.4 | Замена | 2h | 2026-09-01 09:00 A | 2026-09-01 11:00 A | 1587 | 100% |  |  |  | start no earlier than 2026-09-01 09:00 | Дедов В | 2h | 2h |
| 1589 | 2.360 | Запрет работы вентилятора если низкая температура калорифера | 2h | 2026-03-12 09:00 A | 2026-03-12 11:00 A |  | 100% |  |  |  | start no earlier than 2026-03-12 09:00 | Дедов В | 2h | 2h |
| 1590 | 2.361 | **установить на охладитель ролики + скольжение трубы** | 33d? | 2026-09-01 09:00 | 2026-10-05 18:00 |  |  |  | 116.59d |  |  |  | 10h |  |
| 1591 | 2.361.1 | печать кронштейнов | 2h | 2026-09-01 09:00 | 2026-09-01 11:00 |  |  |  | 149.34d |  | start no earlier than 2026-09-01 09:00 | Домоводов К | 2h |  |
| 1592 | 2.361.2 | установить держатели труб | 1d? | 2026-10-05 09:00 | 2026-10-05 18:00 |  |  |  | 116.59d |  | start no earlier than 2026-10-05 09:00 | Тимофеев В | 8h |  |
| 1593 | 2.362 | **установить паровопровод для очистки сетки печи на мойке парогенератором** | 8.75d | 2026-03-02 09:00 A | 2026-03-12 16:00 A |  | 100% |  |  |  |  |  | 18.5h | 18.5h |
| 1594 | 2.362.1 | проверка фитингов | 30min | 2026-03-02 09:00 A | 2026-03-02 09:30 A |  | 100% |  |  |  | start no earlier than 2026-03-02 09:00 | Зорькин В | 0.5h | 0.5h |
| 1595 | 2.362.2 | монтаж | 2h | 2026-03-05 09:00 A | 2026-03-05 11:00 A | 1594 | 100% |  |  |  | start no earlier than 2026-03-05 09:00 | Тимофеев В | 2h | 2h |

| ID | WBS | Task | Type | Duration | Start | Finish | Predecessors | Complete | Remaining | Total slack | Constraint | Resources | Work | Actual work |
| --- | --- | --- | --- | --- | --- | --- | --- | --- | --- | --- | --- | --- | --- | --- |
| 1596 | 2.362.3 | **лоток с транспортера в барабан. Большой** |  | 2.75d | 2026-03-10 09:00 A | 2026-03-12 16:00 A |  | 100% |  |  |  |  | 16h | 16h |
| 1597 | 2.362.3.1 | изготовить из листа лоток. Заготовку 612*965 с пропилами для сгиба по чертежу |  | 4h | 2026-03-10 09:00 A | 2026-03-10 13:00 A |  | 100% |  |  | start no earlier than 2026-03-10 09:00 | Макаревич А | 4h | 4h |
| 1598 | 2.362.3.2 | подготовить раму крепежа |  | 4h | 2026-03-12 09:00 A | 2026-03-12 13:00 A | 1597 | 100% |  |  | start no earlier than 2026-03-12 09:00 | Некрасов А; Труфанов А | 8h | 8h |
| 1599 | 2.362.3.3 | монтаж |  | 2h | 2026-03-12 14:00 A | 2026-03-12 16:00 A | 1598 | 100% |  |  | start no earlier than 2026-02-27 08:00 | Некрасов А; Труфанов А | 4h | 4h |
| 1600 | 2.363 | **установка ворот шлюз в проходе вент камеры** |  | 119d? | 2026-02-24 09:00 A | 2026-08-09 13:00 A |  | 100% |  |  |  |  | 163.5h | 163.5h |
| 1601 | 2.363.1 | изготовить и установить шпингалеты |  | 4h | 2026-02-27 09:00 A | 2026-02-27 13:00 A |  | 100% |  |  | start no earlier than 2026-02-27 09:00 | Некрасов А; Бобренок В | 8h | 8h |
| 1602 | 2.363.2 | установка петель, транспортировка, монтаж |  | 1d? | 2026-02-24 09:00 A | 2026-02-24 18:00 A |  | 100% |  |  | start no earlier than 2026-02-24 09:00 | Труфанов А; Некрасов А | 16h | 16h |
| 1603 | 2.363.3 | установить полосу притвора |  | 3h | 2026-02-27 09:00 A | 2026-02-27 12:00 A |  | 100% |  |  | start no earlier than 2026-02-28 09:00 | Бобренок В | 3h | 3h |
| 1604 | 2.363.4 | установить силиконовые уплотнители на пол |  | 2h | 2026-02-26 09:00 A | 2026-02-26 11:00 A |  | 100% |  |  | start no earlier than 2026-02-26 08:00 | Некрасов А | 2h | 2h |
| 1605 | 2.363.5 | заявка доводчики, шпингалеты |  | 30min | 2026-03-02 09:00 A | 2026-03-02 09:30 A |  | 100% |  |  | start no earlier than 2026-03-02 09:00 | Зорькин В | 0.5h | 0.5h |
| 1606 | 2.363.6 | доставка |  | 10d | 2026-03-02 09:30 A | 2026-03-16 09:30 A | 1605 | 100% |  |  | start no earlier than 2026-02-27 08:00 | Карабанов | 80h | 80h |
| 1607 | 2.363.7 | монтаж шпингалетов |  | 2h | 2026-03-25 09:00 A | 2026-03-25 11:00 A | 1606 | 100% |  |  | start no earlier than 2026-03-25 09:00 | Бобренок В | 2h | 2h |
| 1608 | 2.363.8 | **установить концевики блокировки открывания роль ворот, если не закрыты шлюз** |  | 109d | 2026-03-10 09:00 A | 2026-08-09 13:00 A |  | 100% |  |  |  |  | 52h | 52h |
| 1609 | 2.363.8.1 | **установить доводчики на ворота в зоне навесок** |  | 0.25d | 2026-06-14 09:00 A | 2026-06-15 11:00 A |  | 100% |  |  |  |  | 2h | 2h |
| 1610 | 2.363.8.1.1 | пробурить для задвижек ворот в полу отверстия -фиксация для проезда штабелера |  | 2h | 2026-06-14 09:00 A | 2026-06-15 11:00 A |  | 100% |  |  | start no earlier than 2026-06-14 09:00 | Бобренок В | 2h | 2h |
| 1611 | 2.363.8.2 | составить список материалов |  | 30min | 2026-03-10 09:00 A | 2026-03-10 09:30 A |  | 100% |  |  | start no earlier than 2026-03-10 09:00 | Дедов В | 0.5h | 0.5h |
| 1612 | 2.363.8.3 | заявка |  | 30min | 2026-03-10 09:30 A | 2026-03-10 10:00 A | 1611 | 100% |  |  | start no earlier than 2026-03-03 09:00 | Зорькин В | 0.5h | 0.5h |
| 1613 | 2.363.8.4 | доставка |  | 5d | 2026-03-10 10:00 A | 2026-03-17 10:00 A | 1612 | 100% |  |  | start no earlier than 2026-02-27 08:00 | Карабанов | 40h | 40h |
| 1614 | 2.363.8.5 | монтаж датчиков на двери / доводчиков. | manual | 4h | 2026-08-09 09:00 A | 2026-08-09 13:00 A | 1613 | 100% |  |  | start no earlier than 2026-08-09 09:00 | Бундин В | 4h | 4h |
| 1615 | 2.363.8.6 | монтаж кабеля от датчиков до блока рольворот, не подключать | manual | 4h | 2026-08-09 09:00 A | 2026-08-09 13:00 A | 1614 | 100% |  |  | start no earlier than 2026-08-09 09:00 | Бундин В | 4h | 4h |
| 1616 | 2.363.8.7 | установить концевики на ворота - установить закладные под них | manual | 1h | 2026-08-08 09:00 A | 2026-08-08 10:00 A |  | 100% |  |  | start no earlier than 2026-08-08 09:00 | Бундин В | 1h | 1h |
| 1617 | 2.364 | **схема блокировки роль ворот при открытым шлюзе + авт закрытие + датчик препятствия** |  | 25.25d | 2026-11-02 09:00 A | 2026-12-01 11:00 |  | 75% | 6.31d | 71.34d |  |  | 30h | 24h |
| 1618 | 2.364.1 | Приварить пластину для электрозамка |  | 2h | 2026-11-26 09:00 A | 2026-11-26 11:00 A |  | 100% |  |  | start no earlier than 2026-11-26 09:00 | Некрасов А; Макаревич А | 4h | 4h |
| 1619 | 2.364.2 | подготорвка схемы |  | 5h | 2026-11-24 09:00 A | 2026-11-24 15:00 A |  | 100% |  |  | start no earlier than 2026-11-24 08:00 | Дедов В | 5h | 5h |
| 1620 | 2.364.3 | Протяжка провода для электромагнита по стене | manual | 2h | 2026-12-01 09:00 | 2026-12-01 11:00 |  |  |  |  | start no earlier than 2026-12-01 09:00 | Бундин В | 2h |  |
| 1621 | 2.364.4 | Установка электромагнита на двери |  | 5h | 2026-11-26 09:00 A | 2026-11-26 15:00 A |  | 100% |  |  | start no earlier than 2026-11-26 09:00 | Дедов В | 5h | 5h |
| 1622 | 2.364.5 | Монтаж концевика, кнопок |  | 2h | 2026-11-26 09:00 A | 2026-11-26 11:00 A |  | 100% |  |  | start no earlier than 2026-11-26 09:00 | Дедов В | 2h | 2h |
| 1623 | 2.364.6 | разработка схемы |  | 4h | 2026-11-02 09:00 A | 2026-11-02 13:00 A |  | 100% |  |  | start no earlier than 2026-11-02 09:00 | Домоводов К; Дедов В | 8h | 8h |
| 1624 | 2.364.7 | монтаж |  | 4h | 2026-11-30 09:00 | 2026-11-30 13:00 | 1623FS+1d |  |  | 72.09d | start no earlier than 2026-11-30 09:00 | Труфанов А | 4h |  |
| 1625 | 2.365 | ремонт нижних сеток печи просева гранулы |  | 4h | 2025-01-23 09:00 A | 2025-01-23 13:00 A |  | 100% |  |  | start no earlier than 2025-01-23 09:00 | Черепанов И | 4h | 4h |

| ID | WBS | Task | Type | Duration | Start | Finish | Predecessors | Complete | Remaining | Total slack | Free slack | Constraint | Resources | Work | Actual work |
| --- | --- | --- | --- | --- | --- | --- | --- | --- | --- | --- | --- | --- | --- | --- | --- |
| 1626 | 2.366 | **замена реле безопасности бойлер ж** |  | 91.12d | 2024-10-16 09:00 A | 2025-02-20 10:00 A |  | 100% |  |  |  |  |  | 82h | 82h |
| 1627 | 2.366.1 | заЯВка |  | 1h | 2024-10-16 09:00 A | 2024-10-16 10:00 A |  | 100% |  |  |  | start no earlier than 2024-10-16 09:00 | Зорькин В | 1h | 1h |
| 1628 | 2.366.2 | доставка |  | 10d | 2024-10-16 10:00 A | 2024-10-30 10:00 A | 1627 | 100% |  |  |  | start no earlier than 2024-10-16 09:00 | Мультан | 80h | 80h |
| 1629 | 2.366.3 | замена |  | 1h | 2025-02-20 09:00 A | 2025-02-20 10:00 A | 1628 | 100% |  |  |  | start no earlier than 2025-02-20 09:00 | Некрасов А | 1h | 1h |
| 1630 | 2.367 | **установить пульты на регулировку шибиров вентиляции** |  | 49d? | 2026-08-31 09:00 | 2026-10-23 18:00 |  |  |  | 101.59d |  |  |  | 90h |  |
| 1631 | 2.367.1 | заявка на блок питания, шкаф управления, кабель |  | 2h | 2026-08-31 09:00 | 2026-08-31 11:00 |  |  |  | 139.34d | 0d | start no earlier than 2026-08-31 09:00 | Домоводов К | 2h |  |
| 1632 | 2.367.2 | доставка |  | 10d | 2026-08-31 11:00 | 2026-09-11 11:00 | 1631 |  |  | 139.34d | 37.75d | start no earlier than 2024-05-08 08:00 | Мультан | 80h |  |
| 1633 | 2.367.3 | монтаж |  | 1d? | 2026-10-23 09:00 | 2026-10-23 18:00 | 1632 |  |  | 101.59d |  | start no earlier than 2026-10-23 09:00 | Некрасов А | 8h |  |
| 1634 | 2.368 | заменить местами 2 зеркала маленький и большой бункер |  | 4h | 2024-10-03 09:00 | 2024-10-03 13:00 |  |  |  | 647.09d |  | start no earlier than 2024-10-03 09:00 | Черепанов И | 4h |  |
| 1635 | 2.369 | установить провод заземления на дверь шкафа упр сушки |  | 1h | 2024-01-08 09:00 | 2024-01-08 10:00 |  |  |  | 840.47d |  | start no earlier than 2024-01-06 09:00 | Тимофеев В | 1h |  |
| 1636 | 2.370 | **Палетообмотчик** |  | 50.06d | 2026-05-19 09:00 A | 2026-07-28 09:30 A |  | 100% |  |  |  |  |  | 80.67h | 80.67h |
| 1637 | 2.370.1 | заказать цепь |  | 10min | 2026-05-19 09:00 A | 2026-05-19 09:10 A |  | 100% |  |  |  | start no earlier than 2026-05-19 08:00 | Зорькин В | 0.17h | 0.17h |
| 1638 | 2.370.2 | доставка |  | 10d | 2026-05-29 09:00 A | 2026-06-11 18:00 A |  | 100% |  |  |  | start no earlier than 2026-05-29 09:00 | Карабанов | 80h | 80h |
| 1639 | 2.370.3 | замена цепи на вход в зону палетирования на складе взять 10М оцинкованная 3мм | manual | 30min | 2026-07-28 09:00 A | 2026-07-28 09:30 A |  | 100% |  |  |  | start no earlier than 2026-07-28 09:00 | Макаревич А | 0.5h | 0.5h |
| 1640 | 2.371 | Изготовить полочки из нержавейки по образцу на 18 баночек еще 2 шт |  | 3h | 2026-07-24 09:00 A | 2026-07-24 12:00 A |  | 100% |  |  |  | start no earlier than 2026-07-24 09:00 | Бундин В | 3h | 3h |
| 1641 | 2.372 | **отмена** |  | 102.31d? | 2026-08-11 09:00 A | 2026-12-14 11:30 |  | 5% | 97.66d? | 62.28d |  |  |  | 11h | 0.5h |
| 1642 | 2.372.1 | **найти места утечки тепла под потолком- перемерзает труба подачи воды в 3 цех** |  | 102.31d? | 2026-08-11 09:00 A | 2026-12-14 11:30 |  | 5% | 97.66d? | 62.28d |  |  |  | 11h | 0.5h |
| 1643 | 2.372.1.1 | вспомнить из-за чего холод под потолком? Какие нужны мероприятия?- никто не помнит |  | 15min | 2026-08-11 09:00 A | 2026-08-11 09:15 A |  | 100% |  |  |  | start no earlier than 2026-08-11 09:00 | Некрасов А | 0.25h | 0.25h |
| 1644 | 2.372.1.2 | подать олегу заявку |  | 15min | 2026-08-31 09:00 A | 2026-08-31 09:15 A |  | 100% |  |  |  | start no earlier than 2026-08-31 09:00 | Зорькин В | 0.25h | 0.25h |
| 1645 | 2.372.1.3 | проверка пирометром / тепловизором |  | 2h | 2026-11-27 09:00 | 2026-11-27 11:00 |  |  |  | 62.28d | 0d | start no earlier than 2026-11-27 09:00 | Бундин В | 2h |  |
| 1646 | 2.372.1.4 | заявка (подумать материал) |  | 15min | 2026-11-27 11:00 | 2026-11-27 11:15 | 1645 |  |  | 62.28d | 0d | start no earlier than 2026-08-13 09:00 | Зорькин В | 0.25h |  |
| 1647 | 2.372.1.5 | доставка- контроль |  | 15min | 2026-12-11 11:15 | 2026-12-11 11:30 | 1646FS+10d |  |  | 62.28d | 0d | start no earlier than 2026-08-12 09:00 | Зорькин В | 0.25h |  |
| 1648 | 2.372.1.6 | монтаж |  | 1d? | 2026-12-11 11:30 | 2026-12-14 11:30 | 1647 |  |  | 62.28d |  | start no earlier than 2026-08-11 09:00 | Тимофеев В | 8h |  |
| 1649 | 2.373 | **вентиляция** |  | 11.25d | 2026-08-13 09:00 A | 2026-08-28 11:00 A |  | 100% |  |  |  |  |  | 4h | 4h |
| 1650 | 2.373.1 | Монтаж частотников на ШУ | manual | 2h | 2026-08-13 09:00 A | 2026-08-13 11:00 A |  | 100% |  |  |  | start no earlier than 2026-08-13 09:00 | Труфанов А | 2h | 2h |
| 1651 | 2.373.2 | В ШУ вырезать окна для частотников в двери, закрыть оргстеклом. Желательно на шарниры. |  | 2h | 2026-08-28 09:00 A | 2026-08-28 11:00 A |  | 100% |  |  |  | start no earlier than 2026-08-31 09:00 | Бундин В | 2h | 2h |

| ID | WBS | Task | Type | Duration | Start | Finish | Predecessors | Complete | Remaining | Total slack | Constraint | Resources | Work | Actual work |
| --- | --- | --- | --- | --- | --- | --- | --- | --- | --- | --- | --- | --- | --- | --- |
| 1652 | 2.374 | **Синий бункер** |  | 0.25d | 2026-07-30 09:00 A | 2026-07-30 11:00 A |  | 100% |  |  |  |  | 4h | 4h |
| 1653 | 2.374.1 | Ремонт синего бункера в зоне вибратора |  | 2h | 2026-07-30 09:00 A | 2026-07-30 11:00 A |  | 100% |  |  | start no earlier than 2026-07-30 09:00 | Труфанов А; Бундин В | 4h | 4h |
| 1654 | 2.375 | **Охладитель** |  | 0.38d | 2026-07-30 09:00 A | 2026-07-30 12:00 A |  | 100% |  |  |  |  | 3h | 3h |
| 1655 | 2.375.1 | Установка защиты сетки на полозья/направляющие, спросить Зорькина |  | 3h | 2026-07-30 09:00 A | 2026-07-30 12:00 A |  | 100% |  |  | start no earlier than 2026-07-30 09:00 | Тимофеев В | 3h | 3h |
| 1656 | 2.376 | Осмотреть/устранить течь раковины возле туалета |  | 1h | 2026-07-29 08:00 A | 2026-07-29 10:00 A |  | 100% |  |  | start no earlier than 2026-07-29 08:00 | Дедов В | 1h | 1h |
| 1657 | 3 | **3 цех** |  | 340.25d? | 2025-09-01 09:00 A | 2026-12-02 11:00 |  | 91% | 29.82d? | 70.34d |  |  | 4070.5h | 3850.93h |
| 1658 | 3.1 | Продолжаем мыть сетку на охладителе, отмыть грязхный кусок, спросить у валентина, ему показывали видео, где он находится | manual | 3h | 2026-11-28 09:00 | 2026-11-28 12:00 |  |  |  |  | start no earlier than 2026-11-28 09:00 | Тимофеев В | 3h |  |
| 1659 | 3.2 | Доработать лоток с которого ссыпается в полибок с охладителя, при подъеме втыкается в сетку | manual | 2h | 2026-11-28 09:00 | 2026-11-28 11:00 |  |  |  |  | start no earlier than 2026-11-28 09:00 | Тимофеев В | 2h |  |
| 1660 | 3.3 | изготовление сеток для дражжировки и охладителя по образцу (сетка которая с ручками) | manual | 6h | 2026-11-28 09:00 | 2026-11-28 16:00 |  |  |  |  | start no earlier than 2026-11-28 09:00 | Бундин В | 6h |  |
| 1661 | 3.4 | поднять силиконовые резинки так, что бы они не касались сетки охладителя |  | 2h | 2026-11-25 09:00 A | 2026-11-25 11:00 A |  | 100% |  |  | start no earlier than 2026-11-25 09:00 | Тимофеев В | 2h | 2h |
| 1662 | 3.5 | Сделать отверстия по краям охладителя в месте ссыпания гранулы, чтоб то что шло с цепей, падало мимо полибокса |  | 2h | 2026-11-25 09:00 A | 2026-11-25 11:00 A |  | 100% |  |  | start no earlier than 2026-11-25 09:00 | Тимофеев В | 2h | 2h |
| 1663 | 3.6 | Протираем цепи и сетку на охладителе повторно, так же прогоняем под цепями |  | 6h | 2026-11-23 09:00 A | 2026-11-23 16:00 A |  | 100% |  |  | start no earlier than 2026-11-23 08:00 | Бундин В | 6h | 6h |
| 1664 | 3.7 | Не работает шторка на охладителе, исправить |  | 1h | 2026-11-20 09:00 A | 2026-11-20 10:00 A |  | 100% |  |  | start no earlier than 2026-11-20 08:00 | Бундин В | 1h | 1h |
| 1665 | 3.8 | Активное дежурство | manual | 1d | 2026-11-22 09:00 A | 2026-11-22 18:00 A | 1667 | 100% |  |  |  | Дедов В | 8h | 8h |
| 1666 | 3.9 | Активное дежурство | manual | 1d | 2026-11-22 09:00 A | 2026-11-22 18:00 A |  | 100% |  |  | start no earlier than 2026-11-22 09:00 | Николаев | 8h | 8h |
| 1667 | 3.10 | Активное дежурство | manual | 1d | 2026-11-21 09:00 A | 2026-11-21 18:00 A | 1668 | 100% |  |  |  | Тимофеев В | 8h | 8h |
| 1668 | 3.11 | Активное дежурство |  | 1d? | 2026-11-20 09:00 A | 2026-11-20 18:00 A |  | 100% |  |  | start no earlier than 2026-11-20 08:00 | Бундин В | 8h | 8h |
| 1669 | 3.12 | Усиление рамы смесителей, делаем крест со стороны которую качает (пока готовим, на остановке делаем на выключенном смесителе) |  | 4h | 2026-11-24 09:00 A | 2026-11-24 13:00 A |  | 100% |  |  | start no earlier than 2026-11-24 09:00 | Тимофеев В | 4h | 4h |
| 1670 | 3.13 | Чистка форсунок в прекондиционере (на остановке) |  | 2h | 2026-11-20 09:00 A | 2026-11-20 11:00 A |  | 100% |  |  | start no earlier than 2026-11-20 08:00 | Бундин В | 2h | 2h |
| 1671 | 3.14 | Подключить кабель от тепловой пушки, которая стоит в гидрализатной 1 цеха и саму пушку в тамбуре, где будет вывоз готовой продукции, там ворота стоят. (Если Валентин не подключит, всю информацию получить у него) |  | 1h | 2026-11-19 09:00 A | 2026-11-19 10:00 A |  | 100% |  |  | start no earlier than 2026-11-19 08:00 | Дедов В | 1h | 1h |
| 1672 | 3.15 | Сделать отвод воздуха, при засыпке муки летит в лицо все |  | 1h | 2026-11-19 09:00 A | 2026-11-19 10:00 A |  | 100% |  |  | start no earlier than 2026-11-19 09:00 | Труфанов А; Некрасов А | 2h | 2h |
| 1673 | 3.16 | Составить список что нужно закупить для подключения батареи между охладителем и фасовкой |  | 1h | 2026-11-18 09:00 A | 2026-11-18 10:00 A |  | 100% |  |  | start no earlier than 2026-11-18 08:00 | Труфанов А; Некрасов А | 2h | 2h |
| 1674 | 3.17 | Оперативные работы по 3 цеху |  | 1d? | 2026-11-18 09:00 A | 2026-11-18 18:00 A |  | 100% |  |  | start no earlier than 2026-11-18 09:00 | Тимофеев В | 8h | 8h |
| 1675 | 3.18 | Установить частотник на вращение барабанов 3 цех |  | 1h | 2026-11-17 09:00 A | 2026-11-17 10:00 A |  | 100% |  |  | start no earlier than 2026-11-17 09:00 | Дедов В | 1h | 1h |
| 1676 | 3.19 | Тест оборудование перед запуском |  | 2h | 2026-11-18 09:00 A | 2026-11-18 11:00 A |  | 100% |  |  | start no earlier than 2026-11-18 09:00 | Тимофеев В | 2h | 2h |
| 1677 | 3.20 | Тест печки с кормом, на поток гранулы, попадает ли к цепям или нет, как работает модернизация. |  | 2h | 2026-11-16 09:00 A | 2026-11-16 11:00 A |  | 100% |  |  | start no earlier than 2026-11-16 08:00 | Макаревич А; Николаев | 4h | 4h |
| 1678 | 3.21 | Установить на место ссыпную воронку после печи, сделать упоры? |  | 1h | 2026-11-16 09:00 A | 2026-11-16 10:00 A |  | 100% |  |  | start no earlier than 2026-11-16 08:00 | Труфанов А; Некрасов А | 2h | 2h |
| 1679 | 3.22 | доработаь рукоятку переключения брака после ножейчто бы фиксировалась в закрытом положении. Времянку убрать |  | 1h | 2026-11-14 09:00 A | 2026-11-14 10:00 A |  | 100% |  |  | start no earlier than 2026-11-14 09:00 | Макаревич А | 1h | 1h |
| 1680 | 3.23 | удалить смазку с цепи сетки печи. Спирт получить на складе/развести по инструкции. Все этажи. Уголок попробывать закрепить тряпку к цепи. |  | 6h | 2026-11-14 09:00 A | 2026-11-14 16:00 A |  | 100% |  |  | start no earlier than 2026-11-14 09:00 | Бундин В | 6h | 6h |
| 1681 | 3.24 | смазка цепей печи пищевой смазкой. Не борщить. |  | 6h | 2026-11-15 09:00 A | 2026-11-15 16:00 A |  | 100% |  |  | start no earlier than 2026-11-15 09:00 | Бундин В | 6h | 6h |
| 1682 | 3.25 | доработать ловушки гранулы между этажами, что бы не разлеталась - образец от Тимофеева + удлинить 20-30см по ходу сетки. Все этажи |  | 8h | 2026-11-16 09:00 A | 2026-11-16 18:00 A |  | 100% |  |  | start no earlier than 2026-11-16 09:00 | Николаев; Макаревич А | 16h | 16h |
| 1683 | 3.26 | вырезть окна в лотке после печи для сброса в ведро/мешок гранулы 10см от цепи привода сетки. Крепление для ведра/мешка |  | 4h | 2026-11-15 09:00 A | 2026-11-15 13:00 A |  | 100% |  |  | start no earlier than 2026-11-15 09:00 | Макаревич А; Николаев | 8h | 8h |
| 1684 | 3.27 | монтаж светильник над раковина жиры |  | 2h | 2026-11-13 09:00 A | 2026-11-13 11:00 A |  | 100% |  |  | start no earlier than 2026-11-13 08:00 | Бундин В | 2h | 2h |
| 1685 | 3.28 | установить розетку для весов гидролизата |  | 1h | 2026-11-18 09:00 A | 2026-11-18 10:00 A |  | 100% |  |  | start no earlier than 2026-11-18 09:00 | Дедов В | 1h | 1h |
| 1686 | 3.29 | (сначало поменять кран на полнопроходной вместо золотникового) полку для канистры гидролизата нарастить на 20 см, проверить что бы вошли весы |  | 1h | 2026-11-19 09:00 A | 2026-11-19 10:00 A |  | 100% |  |  | start no earlier than 2026-11-19 09:00 | Дедов В | 1h | 1h |

| ID | WBS | Task | Duration | Start | Finish | Predecessors | Complete | Remaining | Total slack | Constraint | Resources | Work | Actual work |
| --- | --- | --- | --- | --- | --- | --- | --- | --- | --- | --- | --- | --- | --- |
| 1687 | 3.30 | **Установить частотный преобразователь на барабан этра** | 24.03d | 2026-11-02 09:00 A | 2026-11-30 09:15 A |  | 100% |  |  |  |  | 82.25h | 82.25h |
| 1688 | 3.30.1 | заявка частотники | 15min | 2026-11-16 09:00 A | 2026-11-16 09:15 A |  | 100% |  |  | start no earlier than 2026-11-16 09:00 | Зорькин В | 0.25h | 0.25h |
| 1689 | 3.30.2 | доставка конроль | 10d | 2026-11-16 09:15 A | 2026-11-30 09:15 A | 1688 | 100% |  |  | start no earlier than 2026-11-13 08:00 | Зорькин В | 80h | 80h |
| 1690 | 3.30.3 | монтаж | 2h | 2026-11-02 09:00 A | 2026-11-02 11:00 A | 1689 | 100% |  |  | start no earlier than 2026-11-13 08:00 | Тимофеев В | 2h | 2h |
| 1691 | 3.31 | Найти кабель от щитка вентиляции 2 этаж бытовой комплекс (позвонить косте) распред щиток 1 этаж 3 колонна справа | 1h | 2026-11-12 09:00 A | 2026-11-12 10:00 A |  | 100% |  |  | start no earlier than 2026-11-12 08:00 | Бундин В | 1h | 1h |
| 1692 | 3.32 | Герметизация слива в душах (герметиком санитарным) | 2h | 2026-11-15 09:00 A | 2026-11-15 11:00 A |  | 100% |  |  | start no earlier than 2026-11-15 09:00 | Макаревич А; Николаев | 4h | 4h |
| 1693 | 3.33 | **Врезать вентилятор в курилку и подключить** | 10.06d | 2026-11-13 09:00 A | 2026-11-25 09:30 |  | 1% | 9.93d | 75.53d |  |  | 57.25h | 1.25h |
| 1694 | 3.33.1 | заявка вентилятор | 15min | 2026-11-13 09:00 A | 2026-11-13 09:15 A |  | 100% |  |  | start no earlier than 2026-11-13 08:00 | Домоводов К | 0.25h | 0.25h |
| 1695 | 3.33.2 | заявка обратный клапан/тройник/дифузоры на вентилятор ВК200Б | 30min | 2026-11-25 09:00 A | 2026-11-25 09:30 A |  | 100% |  |  | start no earlier than 2026-11-25 09:00 | Зорькин В; Труфанов А | 1h | 1h |
| 1696 | 3.33.3 | доставка контроль | 7d | 2026-11-13 09:00 | 2026-11-19 18:00 |  |  |  | 78.59d | start no earlier than 2026-11-13 08:00 | Зорькин В | 56h |  |
| 1697 | 3.34 | **площадка для гидролизата** | 3.25d | 2026-11-27 09:00 A | 2026-12-02 11:00 |  | 33% | 2.17d | 70.34d |  |  | 20h | 8h |
| 1698 | 3.34.1 | Очистка и помывка площадки, подготовка к покраске | 2h | 2026-11-27 09:00 | 2026-11-27 11:00 |  |  |  | 73.34d | start no earlier than 2026-11-27 08:00 | Уборщица | 2h |  |
| 1699 | 3.34.2 | Покраска | 2h | 2026-12-02 09:00 | 2026-12-02 11:00 |  |  |  | 70.34d | start no earlier than 2026-12-02 09:00 | Николаев | 2h |  |
| 1700 | 3.34.3 | Изготовить площадку для засыпки сухого гидролизата, за основу взять раму у 5 цеха. Покрасить | 4h | 2026-11-27 09:00 | 2026-11-27 13:00 |  |  |  | 73.09d | start no earlier than 2026-11-27 08:00 | Труфанов А; Некрасов А | 8h |  |
| 1701 | 3.34.4 | монтаж вентилятор состыковка с олегом | 4h | 2026-11-27 09:00 A | 2026-11-27 13:00 A | 1696 | 100% |  |  | start no earlier than 2026-11-27 09:00 | Тимофеев В; Бундин В | 8h | 8h |
| 1702 | 3.35 | Срезать перемычки на загрузке жиров, мешают паллетам (на остановке) | 1h | 2026-11-20 09:00 A | 2026-11-20 10:00 A |  | 100% |  |  | start no earlier than 2026-11-20 09:00 | Бундин В | 1h | 1h |
| 1703 | 3.36 | Посмотреть работу нотиса возле стены, который долго запускался, сыпит без остановки, не срабатывает по весу (буду звонить производителям потом если не справимся сами) | 2h | 2026-11-14 09:00 A | 2026-11-14 11:00 A |  | 100% |  |  | start no earlier than 2026-11-14 09:00 | Макаревич А; Николаев | 4h | 4h |
| 1704 | 3.37 | Доработать конвейер на нотисах, много сыпит вниз в щели | 4h | 2026-11-15 09:00 A | 2026-11-15 13:00 A |  | 100% |  |  | start no earlier than 2026-11-15 09:00 | Макаревич А; Николаев | 8h | 8h |
| 1705 | 3.38 | Сделать свет на выходе из охладителя, над полибоксом | 2h | 2026-11-13 09:00 A | 2026-11-13 11:00 A |  | 100% |  |  | start no earlier than 2026-11-13 09:00 | Бундин В | 2h | 2h |
| 1706 | 3.39 | Сделать доп свет на экструдере, повешать на козырек центральный, между печкой и прекондером, повесить на край ближе к стене | 4h | 2026-11-14 09:00 A | 2026-11-14 13:00 A |  | 100% |  |  | start no earlier than 2026-11-14 09:00 | Макаревич А; Николаев | 8h | 8h |
| 1707 | 3.40 | Ремонт насоса гидролизата, выяснить причину отсутствия вращения шнека/восстановить. Вслучае отсутствия возможности восстановить, получить на складе и установить насос НШГ, подключить его к канистре | 4h | 2026-11-11 09:00 A | 2026-11-11 13:00 A |  | 100% |  |  | start no earlier than 2026-11-11 08:00 | Дедов В | 4h | 4h |
| 1708 | 3.41 | **Освещение дражжировки** | 0.38d | 2026-11-11 09:00 A | 2026-11-11 12:00 A |  | 100% |  |  |  |  | 4h | 4h |
| 1709 | 3.41.1 | Повесить светильники на зонтики, взять любые длинные | 3h | 2026-11-11 09:00 A | 2026-11-11 12:00 A |  | 100% |  |  | start no earlier than 2026-11-11 08:00 | Дедов В | 3h | 3h |
| 1710 | 3.41.2 | Повесить светильник со стороны входа в барабан (не видно, как льется жир) | 1h | 2026-11-11 09:00 A | 2026-11-11 10:00 A |  | 100% |  |  | start no earlier than 2026-11-11 08:00 | Бундин В | 1h | 1h |

| ID | WBS | Task | Type | Duration | Start | Finish | Complete | Constraint | Resources | Work | Actual work |
| --- | --- | --- | --- | --- | --- | --- | --- | --- | --- | --- | --- |
| 1711 | 3.42 | **Поставить продувку на парогенераторе каждые 2ч интервал продувки 2 секунды.** |  | 7.12d | 2026-11-06 09:00 A | 2026-11-13 10:00 A | 100% |  | Дедов В | 124.75h | 124.75h |
| 1712 | 3.42.1 | Поставить 2 светильника в туалеты 2 этаж |  | 1h | 2026-11-13 09:00 A | 2026-11-13 10:00 A | 100% | start no earlier than 2026-11-13 09:00 | Бундин В | 1h | 1h |
| 1713 | 3.42.2 | Сделать колесики на площадку для чистки прикондера |  | 2h | 2026-11-11 09:00 A | 2026-11-11 11:00 A | 100% | start no earlier than 2026-11-11 09:00 | Труфанов А; Некрасов А | 4h | 4h |
| 1714 | 3.42.3 | Поставить запайщики, подключить педаль, по местам, проверить работоспособность |  | 1h | 2026-11-10 09:00 A | 2026-11-10 10:00 A | 100% | start no earlier than 2026-11-10 08:00 | Дедов В | 1h | 1h |
| 1715 | 3.42.4 | Проверить нотисы, восстановить разъемы, восстановить снабжение сжатого воздуха |  | 1h | 2026-11-10 09:00 A | 2026-11-10 10:00 A | 100% | start no earlier than 2026-11-10 08:00 | Дедов В | 1h | 1h |
| 1716 | 3.42.5 | отключить кабель нории, убрать с пола / консервация |  | 1h | 2026-11-10 09:00 A | 2026-11-10 10:00 A | 100% | start no earlier than 2026-11-10 09:00 | Бундин В | 1h | 1h |
| 1717 | 3.42.6 | перемещение нории |  | 1h | 2026-11-10 09:00 A | 2026-11-10 10:00 A | 100% | start no earlier than 2026-11-10 09:00 | Некрасов А; Тимофеев В; Труфанов А | 3h | 3h |
| 1718 | 3.42.7 | закрыть 2 щели из 3х на шнеке сухой гидролизат |  | 1h | 2026-11-10 09:00 A | 2026-11-10 10:00 A | 100% | start no earlier than 2026-11-10 09:00 | Тимофеев В | 1h | 1h |
| 1719 | 3.42.8 | уборка железо на пандусе. Весь мсор / зип с цеха. Перемещение по складам |  | 2h | 2026-11-10 09:00 A | 2026-11-10 11:00 A | 100% | start no earlier than 2026-11-10 09:00 | Некрасов А; Труфанов А | 4h | 4h |
| 1720 | 3.42.9 | Собрать кухонный гарнитур | manual | 4h | 2026-11-08 09:00 A | 2026-11-08 13:00 A | 100% | start no earlier than 2026-11-08 09:00 | Макаревич А; Николаев | 8h | 8h |
| 1721 | 3.42.10 | монтаж раковина покупка за нал всесь комплект с курьером |  | 5h | 2026-11-09 09:00 A | 2026-11-09 15:00 A | 100% | start no earlier than 2026-11-09 08:00 | Тимофеев В | 5h | 5h |
| 1722 | 3.42.11 | переложить шланг слива давления масла, что бы был хороший поток (Дедов обнаружил плохой слив) |  | 2h | 2026-11-09 09:00 A | 2026-11-09 11:00 A | 100% | start no earlier than 2026-11-09 08:00 | Макаревич А | 2h | 2h |
| 1723 | 3.42.12 | **Маслонасосная станция** |  | 1.25d | 2026-11-09 09:00 A | 2026-11-10 11:00 A | 100% |  |  | 8h | 8h |
| 1724 | 3.42.12.1 | Тест маслонасосной станции с открытой крышкой редуктора . Доделать схему, решение о гистерезисе на реле времени | manual | 4h | 2026-11-09 09:00 A | 2026-11-09 13:00 A | 100% | start no earlier than 2026-11-09 09:00 | Дедов В | 4h | 4h |
| 1725 | 3.42.12.2 | Поменять геркон на маслонасосной станции и запускать контактор через промежуточное реле (от катушки пускателя геркон сгорел) |  | 2h | 2026-11-10 09:00 A | 2026-11-10 11:00 A | 100% | start no earlier than 2026-11-10 09:00 | Дедов В | 2h | 2h |
| 1726 | 3.42.12.3 | Разработка и установка схемы сигнализации маслонасосной станции экструдера |  | 2h | 2026-11-10 09:00 A | 2026-11-10 11:00 A | 100% | start no earlier than 2026-11-10 09:00 | Дедов В | 2h | 2h |
| 1727 | 3.42.13 | Тест печей (на просадку температур) 3 и 4 зона, сначало нагреть, потом отключить первые контуры постоянного нагрева | manual | 2h | 2026-11-08 09:00 A | 2026-11-08 11:00 A | 100% | start no earlier than 2026-11-08 09:00 | Тимофеев В; Дедов В | 4h | 4h |
| 1728 | 3.42.14 | Пусконаладка подогрева приточной вентиляции |  | 4h | 2026-11-06 09:00 A | 2026-11-06 13:00 A | 100% | start no earlier than 2026-11-06 09:00 | Труфанов А; Некрасов А | 8h | 8h |
| 1729 | 3.42.15 | устанговить датчик температуры от котла ZOTA. Тест |  | 2h | 2026-11-09 09:00 A | 2026-11-09 11:00 A | 100% | start no earlier than 2026-11-09 08:00 | Труфанов А | 2h | 2h |
| 1730 | 3.42.16 | Отвод пара трубой ближе к всасывающему отверстию зонтика на прекондиционере | manual | 2h | 2026-11-09 09:00 A | 2026-11-09 11:00 A | 100% | start no earlier than 2026-11-09 09:00 | Некрасов А; Труфанов А | 4h | 4h |
| 1731 | 3.42.17 | Наклеить надписи на шкафу управления смесителями |  | 1h | 2026-11-10 09:00 A | 2026-11-10 10:00 A | 100% | start no earlier than 2026-11-10 09:00 | Зорькин В; Тимофеев В | 2h | 2h |
| 1732 | 3.42.18 | Тест парогенератора (слить воду с бачка, зафиксировать уровень в нем, погонять несколько часов, проверить бачок, если вода увеличилась, скорее всего вырубался) | manual | 3h | 2026-11-08 09:00 A | 2026-11-08 12:00 A | 100% | start no earlier than 2026-11-08 09:00 | Дедов В | 3h | 3h |
| 1733 | 3.42.19 | **парогенератор скидывает давление до 0 на продувке** |  | 0.25d | 2026-11-09 09:00 A | 2026-11-09 11:00 A | 100% |  |  | 5.25h | 5.25h |
| 1734 | 3.42.19.1 | настройка продувки парогенератора что бы не сдувался до 0 |  | 2h | 2026-11-09 09:00 A | 2026-11-09 11:00 A | 100% | start no earlier than 2026-11-09 08:00 | Дедов В; Зорькин В | 4h | 4h |
| 1735 | 3.42.19.2 | запрос программы |  | 15min | 2026-11-09 09:00 A | 2026-11-09 09:15 A | 100% | start no earlier than 2026-11-09 08:00 | Зорькин В | 0.25h | 0.25h |
| 1736 | 3.42.19.3 | тест работы ПГ с откл краном сброса давления / продувки |  | 1h | 2026-11-09 09:00 A | 2026-11-09 10:00 A | 100% | start no earlier than 2026-11-10 09:00 | Дедов В | 1h | 1h |
| 1737 | 3.42.20 | Ревизия редуктора шнека, проверить масло, шнек подачи сырья в прекондиционер |  | 30min | 2026-11-10 09:00 A | 2026-11-10 09:30 A | 100% | start no earlier than 2026-11-10 09:00 | Труфанов А | 0.5h | 0.5h |

| ID | WBS | Task | Type | Duration | Start | Finish | Predecessors | Complete | Remaining | Total slack | Constraint | Resources | Work | Actual work |
| --- | --- | --- | --- | --- | --- | --- | --- | --- | --- | --- | --- | --- | --- | --- |
| 1738 | 3.43 | **Поставить вибратор на приемную воронку после смесителя, шнек подачи сырья в прекондиционер** |  | 319.5d? | 2025-09-01 09:00 A | 2026-11-07 13:00 |  | 96% | 11.45d? | 91.09d |  | Бундин В | 3627.25h | 3486.68h |
| 1739 | 3.43.1 | Поставить розетку рядом с мойкой на жирах для насоса |  | 1h | 2026-11-05 09:00 A | 2026-11-05 10:00 A |  | 100% |  |  | start no earlier than 2026-11-05 08:00 | Бобренок В | 1h | 1h |
| 1740 | 3.43.2 | Изготовить козырек на выходе эктрудера (доработать откидную лопатку) |  | 4h | 2026-11-07 09:00 A | 2026-11-07 13:00 A |  | 100% |  |  | start no earlier than 2026-11-07 09:00 | Макаревич А; Николаев | 8h | 8h |
| 1741 | 3.43.3 | Установка 2-х бойлеров по 100л, на женскую раздевалку и мужскую, определить контуры магистрали воды, определить где находится закладная |  | 3h | 2026-11-06 09:00 A | 2026-11-06 12:00 A |  | 100% |  |  | start no earlier than 2026-11-06 09:00 | Бобренок В | 3h | 3h |
| 1742 | 3.43.4 | В зоне фасовке, ВРУ куда подключен квадропак и нории, автомат QF4 при включении искрит - устранить | manual | 1h | 2026-10-31 09:00 A | 2026-10-31 10:00 A |  | 100% |  |  | start no earlier than 2026-10-31 09:00 | Дедов В | 1h | 1h |
| 1743 | 3.43.5 | Поставить на зарядку штабелер, который стоит на жирах |  | 30min | 2026-10-14 09:00 A | 2026-10-14 09:30 A |  | 100% |  |  | start no earlier than 2026-10-14 08:00 | Бобренок В | 0.5h | 0.5h |
| 1744 | 3.43.6 | Закрыть на ключ все двери, ключи взять в кабинете оги |  | 1h | 2026-10-13 09:00 A | 2026-10-13 10:00 A |  | 100% |  |  | start no earlier than 2026-10-13 08:00 | Бобренок В | 1h | 1h |
| 1745 | 3.43.7 | Подписать на шкафу управления нории обозначения кнопок (на малярный скотч) |  | 1h | 2026-10-09 09:00 A | 2026-10-09 10:00 A |  | 100% |  |  | start no earlier than 2026-10-09 08:00 | Дедов В | 1h | 1h |
| 1746 | 3.43.8 | Закрыть все входа в производственную зону. Со стороны склада, гидролизата, со стороны фасовки, со стороны пандуса. Ключи взять у нас в кабинете в ящике. Ключи подписать | manual | 2h | 2026-10-03 09:00 A | 2026-10-03 11:00 A |  | 100% |  |  | start no earlier than 2026-10-03 09:00 | Бобренок В | 2h | 2h |
| 1747 | 3.43.9 | Сделать перила на лестницу между фасовкой и жирами, высота по образцу лестницы, которая на загрузке смесителей в 3 цеху. Делать минимальный габарит, чтоб рука пролазила между стеной и при этом сильно не сужало пространство. Делаем из 40 уголка | manual | 5h | 2026-10-09 09:00 A | 2026-10-09 15:00 A |  | 100% |  |  | start no earlier than 2026-10-09 09:00 | Бундин В | 5h | 5h |
| 1748 | 3.43.10 | Сделать окно из орг стекла монолитного, на жирах сверху, чтоб было видно печку. Размер примерно 300х200 | manual | 2h | 2026-10-07 09:00 A | 2026-10-07 11:00 A |  | 100% |  |  | start no earlier than 2026-10-07 09:00 | Бундин В | 2h | 2h |
| 1749 | 3.43.11 | Доделать закрепление окна из орг стекла, на жирах на заклепки вытяжные м6 | manual | 1h | 2026-10-10 09:00 A | 2026-10-10 10:00 A |  | 100% |  |  | start no earlier than 2026-10-10 09:00 | Бундин В | 1h | 1h |
| 1750 | 3.43.12 | **Установить насос с ножами в 3 цех под раковину мойки на жирах** |  | 11.5d | 2026-10-13 09:00 A | 2026-10-27 13:00 A |  | 100% |  |  |  |  | 9.17h | 9.17h |
| 1751 | 3.43.12.1 | Заказать необходимые комплектующие, переходники |  | 1h | 2026-10-13 09:00 A | 2026-10-13 10:00 A |  | 100% |  |  | start no earlier than 2026-10-13 09:00 | Зорькин В | 1h | 1h |
| 1752 | 3.43.12.2 | контроль |  | 10min | 2026-10-22 09:00 A | 2026-10-22 09:10 A |  | 100% |  |  | start no earlier than 2026-10-22 09:00 | Зорькин В | 0.17h | 0.17h |
| 1753 | 3.43.12.3 | Установить насос с ножами в 3 цех под раковину мойки на жирах | manual | 4h | 2026-10-27 09:00 A | 2026-10-27 13:00 A |  | 100% |  |  | start no earlier than 2026-10-27 09:00 | Труфанов А; Некрасов А | 8h | 8h |
| 1754 | 3.43.13 | сопряжение круглой входной воронки в экструдер с квадратом выхода прекондиционера как в 2ц |  | 5h | 2026-09-29 09:00 A | 2026-09-29 15:00 A |  | 100% |  |  | start no earlier than 2026-09-29 09:00 | Бундин В | 5h | 5h |
| 1755 | 3.43.14 | **обеспечить быстрое переключение продукта из барабана годен/брак - охладитель/тазик** |  | 3.06d | 2026-09-19 09:00 A | 2026-09-22 09:30 A |  | 100% |  |  |  |  | 21h | 21h |
| 1756 | 3.43.14.1 | Модернизация лотка для удаления брака из барабанов, а именно: | milestone | 0h | 2026-09-19 09:00 A | 2026-09-19 09:00 A |  | 100% |  |  | start no earlier than 2026-09-19 09:00 | Макаревич А |  |  |
| 1757 | 3.43.14.2 | демонтировать отбойник, направляющий продукт в центр |  | 2h | 2026-09-19 09:00 A | 2026-09-19 11:00 A |  | 100% |  |  | start no earlier than 2026-09-19 09:00 | Макаревич А | 2h | 2h |
| 1758 | 3.43.14.3 | сделать торцевую стенку на шарнире с наклоном под барабан. Шарнир на высоте кронштейнов сетки. Шарнир дверной / как от печей |  | 4h | 2026-09-19 11:00 A | 2026-09-19 16:00 A | 1757 | 100% |  |  | start no earlier than 2026-09-18 08:00 | Макаревич А | 4h | 4h |
| 1759 | 3.43.14.4 | сделать фиксатор стенки в положении закрыто в виде щеколды. Безопасный быстрый |  | 2h | 2026-09-20 09:00 A | 2026-09-20 11:00 A | 1758 | 100% |  |  | start no earlier than 2026-09-20 09:00 | Макаревич А | 2h | 2h |
| 1760 | 3.43.14.5 | сделать "притвор", закрывающий щель после разрезания стенки. Все края защита от пореза либо зачистить либо лента |  | 4h | 2026-09-20 11:00 A | 2026-09-20 16:00 A | 1759 | 100% |  |  | start no earlier than 2026-09-18 08:00 | Макаревич А | 4h | 4h |
| 1761 | 3.43.14.6 | изготовить новый отбойник, направляющий продукт в центр, ниже опущенной стенки на сброс, не широкий, что бы удобно былоо менять сетку |  | 2h | 2026-09-20 16:00 A | 2026-09-20 18:00 A | 1760 | 100% |  |  | start no earlier than 2026-09-18 08:00 | Макаревич А | 2h | 2h |
| 1762 | 3.43.14.7 | Доработка короба после барабанов для ссыпки в емкость, установка ограничителей, язычка. Подробности у Труфанова |  | 6h | 2026-09-21 09:00 A | 2026-09-21 16:00 A |  | 100% |  |  | start no earlier than 2026-09-21 08:00 | Макаревич А | 6h | 6h |
| 1763 | 3.43.14.8 | установить на место, испытание |  | 30min | 2026-09-22 09:00 A | 2026-09-22 09:30 A |  | 100% |  |  | start no earlier than 2026-09-22 09:00 | Некрасов А; Труфанов А | 1h | 1h |

| ID | WBS | Task | Type | Duration | Start | Finish | Predecessors | Complete | Total slack | Constraint | Resources | Work | Actual work |
| --- | --- | --- | --- | --- | --- | --- | --- | --- | --- | --- | --- | --- | --- |
| 1764 | 3.43.15 | **Дражжировка** |  | 13.25d | 2026-09-17 09:00 A | 2026-09-30 11:00 A |  | 100% |  |  |  | 14h | 14h |
| 1765 | 3.43.15.1 | Повесить мощную цепь, за которую можно опускать и поднимать защиту |  | 1h | 2026-09-18 09:00 A | 2026-09-18 10:00 A |  | 100% |  | start no earlier than 2026-09-18 09:00 | Бундин В | 1h | 1h |
| 1766 | 3.43.15.2 | Сделать ограничитель, когда опускаешь защиту на себя, на уровне перил |  | 1h | 2026-09-17 09:00 A | 2026-09-17 10:00 A |  | 100% |  | start no earlier than 2026-09-17 08:00 | Бундин В | 1h | 1h |
| 1767 | 3.43.15.3 | Сделать из отбойников рессор уаз отбойники на защите паллет, чтоб не било когда падает (позвони, обьясню) |  | 2h | 2026-09-17 09:00 A | 2026-09-17 11:00 A |  | 100% |  | start no earlier than 2026-09-17 08:00 | Бундин В | 2h | 2h |
| 1768 | 3.43.15.4 | Перенести частотник со стены ближе к барабанам, смонтировать на раму барабанов |  | 2h | 2026-09-30 09:00 A | 2026-09-30 11:00 A |  | 100% |  | start no earlier than 2026-09-30 09:00 | Дедов В | 2h | 2h |
| 1769 | 3.43.15.5 | на коневейер циклон-барабан установить полосу сбоку ленты не дающую грануле скатываться обратно, примеры посмотреть в 1 цеху |  | 1h | 2026-09-22 09:00 A | 2026-09-22 10:00 A |  | 100% |  | start no earlier than 2026-09-22 09:00 | Тимофеев В | 1h | 1h |
| 1770 | 3.43.15.6 | Изготовить и установить уши на конце конвейера в барабан (чтоб гранула не попадала внутрь ленты) |  | 2h | 2026-09-21 09:00 A | 2026-09-21 11:00 A |  | 100% |  | start no earlier than 2026-09-21 09:00 | Тимофеев В | 2h | 2h |
| 1771 | 3.43.15.7 | Доделать и установить язык между барабанами |  | 1h | 2026-09-21 09:00 A | 2026-09-21 10:00 A |  | 100% |  | start no earlier than 2026-09-21 09:00 | Тимофеев В | 1h | 1h |
| 1772 | 3.43.15.8 | Увеличить «язычек» между барабанами на жирах (просыпается много гранулы |  | 4h | 2026-09-17 09:00 A | 2026-09-17 13:00 A |  | 100% |  | start no earlier than 2026-09-17 09:00 | Тимофеев В | 4h | 4h |
| 1773 | 3.43.16 | **Разобрать регулировку ножевого узла, достать вал на котором установлен штурвал** |  | 18d | 2026-09-21 09:00 A | 2026-10-11 11:00 A |  | 100% |  |  |  | 3.5h | 3.5h |
| 1774 | 3.43.16.1 | Снять вал, передать Зорькину |  | 1h | 2026-09-22 09:00 A | 2026-09-22 10:00 A |  | 100% |  | start no earlier than 2026-09-22 09:00 | Тимофеев В | 1h | 1h |
| 1775 | 3.43.16.2 | Заявка по образцу |  | 20min | 2026-09-21 09:00 A | 2026-09-21 09:20 A |  | 100% |  | start no earlier than 2026-09-21 09:00 | Зорькин В | 0.33h | 0.33h |
| 1776 | 3.43.16.3 | контроль |  | 10min | 2026-09-28 09:00 A | 2026-09-28 09:10 A | 1775SF+7d | 100% |  | start no earlier than 2026-09-28 09:00 | Зорькин В | 0.17h | 0.17h |
| 1777 | 3.43.16.4 | установка, получить на складе, лежат 2 вала один новый, другой образец, забрать оба | manual | 2h | 2026-10-11 09:00 A | 2026-10-11 11:00 A | 1776FS+1d | 100% |  | start no earlier than 2026-10-11 09:00 | Бобренок В | 2h | 2h |
| 1778 | 3.43.17 | Между шлюзовым питателем и конвейером на жирах сделать ограничение, чтоб не разлеталась гранула и не мешало двигать конвейер |  | 3h | 2026-09-15 09:00 A | 2026-09-15 12:00 A |  | 100% |  | start no earlier than 2026-09-15 09:00 | Тимофеев В | 3h | 3h |
| 1779 | 3.43.18 | **Найти и установить жироуловитель с синего склада на жирах мойка** |  | 15.12d | 2026-09-16 09:00 A | 2026-10-01 10:00 A |  | 100% |  |  |  | 3.33h | 3.33h |
| 1780 | 3.43.18.1 | Составить список необходимых материлов для подключения (передать зорькину) |  | 1h | 2026-09-16 09:00 A | 2026-09-16 10:00 A |  | 100% |  | start no earlier than 2026-09-16 08:00 | Тимофеев В; Зорькин В | 2h | 2h |
| 1781 | 3.43.18.2 | Заявка |  | 15min | 2026-09-16 10:00 A | 2026-09-16 10:15 A | 1780 | 100% |  | start no earlier than 2026-09-16 08:00 | Зорькин В | 0.25h | 0.25h |
| 1782 | 3.43.18.3 | Контроль |  | 5min | 2026-09-24 09:00 A | 2026-09-24 09:05 A | 1781FS+7d | 100% |  | start no earlier than 2026-09-24 09:00 | Зорькин В | 0.08h | 0.08h |
| 1783 | 3.43.18.4 | Монтаж |  | 1h | 2026-10-01 09:00 A | 2026-10-01 10:00 A | 1782 | 100% |  | start no earlier than 2026-10-01 09:00 | Тимофеев В | 1h | 1h |
| 1784 | 3.43.19 | монтаж оконечные кожухи на конвейер после охладителя, что бы гранула не разлеталась при перевороте ленты |  | 4h | 2026-09-21 09:00 A | 2026-09-21 13:00 A |  | 100% |  | start no earlier than 2026-09-22 09:00 | Тимофеев В | 4h | 4h |
| 1785 | 3.43.20 | Перенести регулировку подачи жира, ближе к барабанам. Перенос частотник на раму барабанов |  | 4h | 2026-10-06 09:00 | 2026-10-06 13:00 |  |  | 116.09d | start no earlier than 2026-10-06 09:00 | Тимофеев В | 4h |  |
| 1786 | 3.43.21 | Проблема с закрыванием дверцы привода ножей (шарнир с мотором ножей при закрывании теряет соосность, сделать упор) |  | 1h | 2026-09-15 09:00 A | 2026-09-15 10:00 A |  | 100% |  | start no earlier than 2026-09-15 09:00 | Тимофеев В | 1h | 1h |
| 1787 | 3.43.22 | Разобраться почему закусывает резьбу прижима ножей к фильере (испытывать после установки штурвала) |  | 1h | 2026-09-15 09:00 A | 2026-09-15 10:00 A |  | 100% |  | start no earlier than 2026-09-15 09:00 | Тимофеев В | 1h | 1h |
| 1788 | 3.43.23 | Регулировка ножей на экструдере — сделать «штурвал»; |  | 2h | 2026-09-15 09:00 A | 2026-09-15 11:00 A |  | 100% |  | start no earlier than 2026-09-15 09:00 | Тимофеев В | 2h | 2h |

| ID | WBS | Task | Type | Duration | Start | Finish | Predecessors | Complete | Actual finish | Constraint | Resources | Work | Actual work |
| --- | --- | --- | --- | --- | --- | --- | --- | --- | --- | --- | --- | --- | --- |
| 1789 | 3.43.24 | **Гранулы выходили из печи со следами смазки** |  | 0.5d | 2026-10-01 09:00 A | 2026-10-01 13:00 A |  | 100% |  |  |  | 4h | 4h |
| 1790 | 3.43.24.1 | (сделать направляющие в печи); |  | 4h | 2026-10-01 09:00 A | 2026-10-01 13:00 A |  | 100% |  | start no earlier than 2026-10-02 09:00 | Тимофеев В | 4h | 4h |
| 1791 | 3.43.25 | **С двигателя экструдера выдавило много масла;** |  | 33.5d | 2026-09-18 09:00 A | 2026-10-27 13:00 |  | 100% | 2026-11-06 16:00 |  |  | 11.25h | 11.25h |
| 1792 | 3.43.25.1 | установить поплавок на верхний уровень для блокировки насоса- осмотр |  | 4h | 2026-09-18 09:00 A | 2026-09-18 13:00 A |  | 100% |  | start no earlier than 2026-09-18 09:00 | Бобренок В | 4h | 4h |
| 1793 | 3.43.25.2 | заявка на датчики |  | 1h | 2026-09-18 14:00 A | 2026-09-18 15:00 A | 1792 | 100% |  | start no earlier than 2026-09-18 08:00 | Зорькин В | 1h | 1h |
| 1794 | 3.43.25.3 | контроль достачки |  | 15min | 2026-09-25 15:00 A | 2026-09-25 15:15 A | 1793FS+7d | 100% |  | start no earlier than 2026-09-18 08:00 | Зорькин В | 0.25h | 0.25h |
| 1795 | 3.43.25.4 | монтаж датчик в редуктор |  | 2h | 2026-11-05 09:00 A | 2026-11-05 11:00 A | 1794FS+1d | 100% |  | start no earlier than 2026-11-05 09:00 | Дедов В | 2h | 2h |
| 1796 | 3.43.25.5 | подключение датчика в схему - блокировка по уровню |  | 4h | 2026-11-06 11:00 A | 2026-11-06 16:00 A | 1795FS+1d | 100% |  | start no earlier than 2026-11-05 09:00 | Тимофеев В | 4h | 4h |
| 1797 | 3.43.26 | Заменить кран подачи воды (второй слева) на втором предкондиционере — |  | 1h | 2026-09-14 09:00 A | 2026-09-14 10:00 A |  | 100% |  | start no earlier than 2026-09-14 09:00 | Тимофеев В | 1h | 1h |
| 1798 | 3.43.27 | **По схемам Труфанова разобраться с автоматикой шкафа и подключить 3 датчика уровня и подписать, где и что находится +кнопки и переключатели на шкафу тоже подписать** |  | 1.06d | 2026-09-07 09:00 A | 2026-09-08 09:30 A |  | 100% |  |  |  | 8.5h | 8.5h |
| 1799 | 3.43.27.1 | изучение схему |  | 8h | 2026-09-07 09:00 A | 2026-09-07 18:00 A |  | 100% |  | start no earlier than 2026-09-07 09:00 | Дедов В | 8h | 8h |
| 1800 | 3.43.27.2 | подкл 2я нория по датчику уровня |  | 30min | 2026-09-08 09:00 A | 2026-09-08 09:30 A |  | 100% |  | start no earlier than 2026-09-08 08:00 | Дедов В | 0.5h | 0.5h |
| 1801 | 3.43.28 | **установить ограничитель на дверь что бы попадала под движение рольворот** |  | 24.12d | 2026-09-22 09:00 A | 2026-10-20 10:00 A |  | 100% |  |  |  | 2.5h | 2.5h |
| 1802 | 3.43.28.1 | заявка |  | 15min | 2026-09-22 09:00 A | 2026-09-22 09:15 A |  | 100% |  | start no earlier than 2026-09-22 09:00 | Зорькин В | 0.25h | 0.25h |
| 1803 | 3.43.28.2 | контроль доставки |  | 15min | 2026-09-28 09:00 A | 2026-09-28 09:15 A | 1802FS+5d | 100% |  | start no earlier than 2026-09-28 09:00 | Зорькин В | 0.25h | 0.25h |
| 1804 | 3.43.28.3 | монтаж |  | 1h | 2026-10-20 09:00 A | 2026-10-20 10:00 A | 1803FS+1d | 100% |  | start no earlier than 2026-10-20 09:00 | Тимофеев В; Николаев | 2h | 2h |
| 1805 | 3.43.29 | приварить к люку сливной ямы вспомогательную ручку (ручка весит на стеллаже в слесарке) | manual | 2h | 2026-08-30 09:00 | 2026-08-30 11:00 |  |  |  | start no earlier than 2026-08-30 09:00 | Бундин В | 2h |  |
| 1806 | 3.43.30 | **монтаж унитаз, получить на складе** |  | 0d | 2026-08-17 09:00 A | 2026-08-17 09:00 A |  | 100% |  |  |  |  |  |
| 1807 | 3.43.30.1 | крышка бачка лопнувшая- поменять по гарантии | milestone | 0d | 2026-08-17 09:00 A | 2026-08-17 09:00 A |  | 100% |  | start no earlier than 2026-08-17 09:00 | Зорькин В |  |  |
| 1808 | 3.43.31 | закрыить металлом 1.5мм щель стена / площадка загрузки муки. Между рольворотой и стеной с окнами |  | 2h | 2026-08-15 09:00 A | 2026-08-17 11:00 A |  | 100% |  | start no earlier than 2026-08-15 09:00 | Бундин В | 2h | 2h |
| 1809 | 3.43.32 | закрыть щель битумной лентой стык площадка-профлист стенка. Полоску клеить из нутри, обезжирить. |  | 2h | 2026-08-16 09:00 A | 2026-08-17 11:00 A |  | 100% |  | start no earlier than 2026-08-16 09:00 | Бундин В | 2h | 2h |
| 1810 | 3.43.33 | монтаж светильник в корридор / лестница на площадку жиров |  | 3h | 2026-08-16 09:00 A | 2026-08-17 12:00 A |  | 100% |  | start no earlier than 2026-08-16 09:00 | Бундин В | 3h | 3h |
| 1811 | 3.43.34 | **ломает гранулу после печи** |  | 17.12d? | 2026-08-18 09:00 A | 2026-09-09 10:00 A |  | 100% |  |  |  | 18.5h | 18.5h |
| 1812 | 3.43.34.1 | тест на ручной загрузке |  | 2h | 2026-08-18 09:00 A | 2026-08-18 11:00 A |  | 100% |  | start no earlier than 2026-08-18 09:00 | Шуранов Ю | 2h | 2h |
| 1813 | 3.43.34.2 | полная раборка трассы на ревизию острых граней? |  | 2h | 2026-08-19 09:00 A | 2026-08-19 11:00 A |  | 100% |  | start no earlier than 2026-08-19 09:00 | Тимофеев В | 2h | 2h |
| 1814 | 3.43.34.3 | определить параметры нории для запроса цены |  | 2h | 2026-08-18 09:00 A | 2026-08-18 11:00 A |  | 100% |  | start no earlier than 2026-08-18 09:00 | Шуранов Ю | 2h | 2h |
| 1815 | 3.43.34.4 | контроль отвта |  | 15min | 2026-09-03 09:00 A | 2026-09-03 09:15 A | 1814FS+5d | 100% |  | start no earlier than 2026-09-03 09:00 | Зорькин В | 0.25h | 0.25h |
| 1816 | 3.43.34.5 | изготовить новый отвод 90 с фланцем, учесть степеньку |  | 1h | 2026-09-02 09:00 A | 2026-09-02 10:00 A |  | 100% |  | start no earlier than 2026-09-09 09:00 | Макаревич А | 1h | 1h |
| 1817 | 3.43.34.6 | тест |  | 1h | 2026-08-19 09:00 A | 2026-08-19 10:00 A |  | 100% |  | start no earlier than 2026-08-19 09:00 | Тимофеев В; Шуранов Ю | 2h | 2h |
| 1818 | 3.43.34.7 | переварить фланец на угловом соединении (объясню по телефону). То же самое | milestone | 0h | 2026-09-04 09:00 A | 2026-09-04 09:00 A |  | 100% |  | start no earlier than 2026-09-04 09:00 | Макаревич А |  |  |
| 1819 | 3.43.34.8 | печать переходника на 3д принтере |  | 1d? | 2026-08-31 09:00 A | 2026-08-31 18:00 A |  | 100% |  | start no earlier than 2026-08-31 09:00 | Домоводов К | 8h | 8h |
| 1820 | 3.43.34.9 | проверка размещения нории от квадропака |  | 15min | 2026-08-18 09:00 A | 2026-08-18 09:15 A |  | 100% |  | start no earlier than 2026-08-18 09:00 | Шуранов Ю | 0.25h | 0.25h |
| 1821 | 3.43.34.10 | установить угловой фланец на пневмотрассу |  | 1h | 2026-09-09 09:00 A | 2026-09-09 10:00 A |  | 100% |  | start no earlier than 2026-09-09 09:00 | Тимофеев В | 1h | 1h |
| 1822 | 3.43.35 | сделать перемычку на нижней части системы загрузки палет подачи жиров и гидрализата | manual | 3h | 2026-08-15 09:00 A | 2026-08-15 12:00 A |  | 100% |  | start no earlier than 2026-08-15 09:00 | Бундин В | 3h | 3h |

| ID | WBS | Task | Type | Duration | Start | Finish | Predecessors | Complete | Remaining | Total slack | Constraint | Resources | Work | Actual work |
| --- | --- | --- | --- | --- | --- | --- | --- | --- | --- | --- | --- | --- | --- | --- |
| 1823 | 3.43.36 | **сборка квадропака 3 цех** |  | 69.12d | 2026-08-14 09:00 A | 2026-11-06 10:00 |  | 97% | 2.23d | 92.47d |  |  | 45h | 44h |
| 1824 | 3.43.36.1 | скрутку силовых кабелей на полу усилить мех защитой - распред коробку или на подобии - что если случайно наступят изолента не выдержит |  | 1h | 2026-10-20 09:00 A | 2026-10-20 10:00 A |  | 100% |  |  | start no earlier than 2026-10-20 09:00 | Бундин В | 1h | 1h |
| 1825 | 3.43.36.2 | уложить проводку в шкафу управления в кабельные лотки, крышки закрыть |  | 1h | 2026-11-06 09:00 | 2026-11-06 10:00 |  |  |  | 92.47d | start no earlier than 2026-11-06 09:00 | Бобренок В | 1h |  |
| 1826 | 3.43.36.3 | Монтаж/позиционирование квадропака |  | 5h | 2026-09-02 09:00 A | 2026-09-02 15:00 A |  | 100% |  |  | start no earlier than 2026-09-02 09:00 | Труфанов А | 5h | 5h |
| 1827 | 3.43.36.4 | перестановка норий, задействовать бункер |  | 2h | 2026-08-17 09:00 A | 2026-08-17 11:00 A |  | 100% |  |  | start no earlier than 2026-08-17 09:00 | Тимофеев В; Некрасов А | 4h | 4h |
| 1828 | 3.43.36.5 | сборка накопительный стол |  | 2h | 2026-08-19 09:00 A | 2026-08-19 11:00 A | 1827 | 100% |  |  | start no earlier than 2026-08-19 09:00 | Тимофеев В | 2h | 2h |
| 1829 | 3.43.36.6 | подключение дозатор |  | 1h | 2026-08-14 09:00 A | 2026-08-14 10:00 A |  | 100% |  |  | start no earlier than 2026-08-14 09:00 | Труфанов А | 1h | 1h |
| 1830 | 3.43.36.7 | зарисовка схема ШУ нория - понять управление бункером |  | 4h | 2026-08-14 09:00 A | 2026-08-14 13:00 A |  | 100% |  |  | start no earlier than 2026-08-14 09:00 | Труфанов А | 4h | 4h |
| 1831 | 3.43.36.8 | подключение нория к упаковке |  | 2h | 2026-08-14 14:00 A | 2026-08-14 16:00 A | 1830 | 100% |  |  | start no earlier than 2026-08-14 09:00 | Труфанов А | 2h | 2h |
| 1832 | 3.43.36.9 | подключение вводный кабель (питание) информация у Труфанова |  | 2h | 2026-09-04 09:00 A | 2026-09-04 11:00 A | 1831 | 100% |  |  | start no earlier than 2026-09-04 09:00 | Бундин В; Труфанов А | 4h | 4h |
| 1833 | 3.43.36.10 | тест на пакетах |  | 4h | 2026-10-21 09:00 A | 2026-10-21 13:00 A |  | 100% |  |  | start no earlier than 2026-10-21 09:00 | Труфанов А; Зорькин В | 8h | 8h |
| 1834 | 3.43.36.11 | тест с операторами определить производительность |  | 2h | 2026-10-26 09:00 A | 2026-10-26 11:00 A |  | 100% |  |  | start no earlier than 2026-10-26 09:00 | Труфанов А; Зорькин В; Некрасов А | 6h | 6h |
| 1835 | 3.43.36.12 | подключениекомпрессор |  | 1h | 2026-09-03 09:00 A | 2026-09-03 10:00 A | 1832 | 100% |  |  | start no earlier than 2026-09-03 09:00 | Бобренок В | 1h | 1h |
| 1836 | 3.43.36.13 | Установка квадропака (позиционирование нижней машины) информация у Труфанова |  | 2h | 2026-09-02 09:00 A | 2026-09-02 11:00 A |  | 100% |  |  | start no earlier than 2026-09-02 09:00 | Труфанов А; Бундин В | 4h | 4h |
| 1837 | 3.43.36.14 | Выставить опоры верхней рамы и лестницы по уровню |  | 1h | 2026-09-02 09:00 A | 2026-09-02 10:00 A |  | 100% |  |  | start no earlier than 2026-09-02 08:00 | Бундин В | 1h | 1h |
| 1838 | 3.43.36.15 | Редуктор стола повернуть кабелем к электрощиту (на столе) |  | 30min | 2026-09-02 09:00 A | 2026-09-02 09:30 A |  | 100% |  |  | start no earlier than 2026-09-02 08:00 | Бундин В | 0.5h | 0.5h |
| 1839 | 3.43.36.16 | Провод от редуктора и кнопки в гофре закрепить по раме стола завести в шкаф |  | 30min | 2026-09-02 09:00 A | 2026-09-02 09:30 A |  | 100% |  |  | start no earlier than 2026-09-02 08:00 | Бундин В | 0.5h | 0.5h |
| 1840 | 3.43.37 | сделать ручку и зацепной крюк для открытия люка сливной ямы | manual | 2h | 2026-08-08 09:00 A | 2026-08-08 11:00 A |  | 100% |  |  | start no earlier than 2026-08-08 09:00 | Бобренок В | 2h | 2h |
| 1841 | 3.43.38 | **карусель добавить перемычку снизу, чтобы не выпал мешок** |  | 30.25d | 2026-08-18 09:00 A | 2026-09-22 11:00 A |  | 100% |  |  |  |  | 2.33h | 2.33h |
| 1842 | 3.43.38.1 | заказать краску |  | 10min | 2026-08-18 09:00 A | 2026-08-18 09:10 A |  | 100% |  |  | start no earlier than 2026-08-18 09:00 | Шуранов Ю | 0.17h | 0.17h |
| 1843 | 3.43.38.2 | контроль доставки |  | 10min | 2026-08-31 09:00 A | 2026-08-31 09:10 A | 1842FS+5d | 100% |  |  | start no earlier than 2026-08-31 09:00 | Зорькин В | 0.17h | 0.17h |
| 1844 | 3.43.38.3 | покрасить перемычки система безопасности) |  | 2h | 2026-09-22 09:00 A | 2026-09-22 11:00 A | 1843FS+1d | 100% |  |  | start no earlier than 2026-09-22 09:00 | Тимофеев В | 2h | 2h |
| 1845 | 3.43.39 | убрать битумную ленту снаружи мезонина |  | 1h | 2026-08-04 08:00 A | 2026-08-04 10:00 A |  | 100% |  |  | start no earlier than 2026-08-04 08:00 | Макаревич А | 1h | 1h |
| 1846 | 3.43.40 | хорошо закрепить шланг подачи воды в прекондеционер |  | 2h | 2026-08-04 08:00 A | 2026-08-04 11:00 A |  | 100% |  |  | start no earlier than 2026-08-04 08:00 | Макаревич А | 2h | 2h |
| 1847 | 3.43.41 | на выходе ротаметра поменять шланг большего диаметра |  | 1h | 2026-07-31 08:00 A | 2026-07-31 10:00 A |  | 100% |  |  | start no earlier than 2026-07-31 08:00 | Тимофеев В | 1h | 1h |
| 1848 | 3.43.42 | покрасить кронштейн крепления ротаметра |  | 1h | 2026-07-31 09:00 A | 2026-07-31 10:00 A |  | 100% |  |  | start no earlier than 2026-07-31 09:00 | Бундин В | 1h | 1h |
| 1849 | 3.43.43 | не набирает заданную температуру 4 зона экструдера- разобраться |  | 2h | 2026-07-30 08:00 A | 2026-07-30 11:00 A |  | 100% |  |  | start no earlier than 2026-07-30 08:00 | Дедов В | 2h | 2h |
| 1850 | 3.43.44 | сборка кожухи на печи |  | 2h | 2026-07-15 09:00 A | 2026-07-15 11:00 A |  | 100% |  |  | start no earlier than 2026-07-15 09:00 | Бундин В | 2h | 2h |

| ID | WBS | Task | Type | Duration | Start | Finish | Predecessors | Complete | Actual start | Actual finish | Constraint | Resources | Work | Actual work |
| --- | --- | --- | --- | --- | --- | --- | --- | --- | --- | --- | --- | --- | --- | --- |
| 1851 | 3.43.45 | **установить зеркало сферическое на бункер** |  | 15.5d | 2026-07-07 09:00 A | 2026-07-28 13:00 A |  | 100% |  |  |  |  | 5h | 5h |
| 1852 | 3.43.45.1 | заявка |  | 1h | 2026-07-07 09:00 A | 2026-07-07 10:00 A |  | 100% |  |  | start no earlier than 2026-07-07 09:00 | Зорькин В | 1h | 1h |
| 1853 | 3.43.45.2 | контроль доставки | milestone | 0d | 2026-07-17 10:00 A | 2026-07-17 10:00 A | 1852FS+10d | 100% |  |  | start no earlier than 2026-07-14 08:00 | Зорькин В |  |  |
| 1854 | 3.43.45.3 | монтаж |  | 4h | 2026-07-28 09:00 A | 2026-07-28 13:00 A | 1853FS+1d | 100% |  |  | start no earlier than 2026-07-28 09:00 | Макаревич А | 4h | 4h |
| 1855 | 3.43.46 | поиск след от смазки на охладителе |  | 1h | 2026-07-10 09:00 A | 2026-07-10 10:00 A |  | 100% |  |  | start no earlier than 2026-07-10 09:00 | Тимофеев В; Зорькин В | 2h | 2h |
| 1856 | 3.43.47 | **установить наосос центробежный на бочку слив с парогенератора, врезать штуцер в бочку** |  | 0.25d | 2026-07-15 09:00 A | 2026-07-15 11:00 A |  | 100% |  |  |  |  | 4h | 4h |
| 1857 | 3.43.47.1 | орг закуп с курьером |  | 2h | 2026-07-15 09:00 A | 2026-07-15 11:00 A |  | 100% |  |  | start no earlier than 2026-07-15 09:00 | Зорькин В | 2h | 2h |
| 1858 | 3.43.47.2 | монтаж штуцер |  | 2h | 2026-07-15 09:00 A | 2026-07-15 11:00 A |  | 100% |  |  | start no earlier than 2026-07-15 09:00 | Бобренок В | 2h | 2h |
| 1859 | 3.43.48 | **вода идет не стабильно** |  | 4.38d | 2026-07-09 09:00 A | 2026-07-15 12:00 A |  | 100% |  |  |  |  | 8h | 8h |
| 1860 | 3.43.48.1 | Поставить гидроаккумулятор на насос между выходом насосной станции и 3-х ходомым краном подачи воды в экструдер и заменить трубки на шланги |  | 3h | 2026-07-09 09:00 A | 2026-07-09 12:00 A |  | 100% |  |  | start no earlier than 2026-07-09 09:00 | Тимофеев В | 3h | 3h |
| 1861 | 3.43.48.2 | тест работы воды с ПГ на давлении питательного насоса 3+ |  | 1h | 2026-07-10 09:00 A | 2026-07-10 10:00 A |  | 100% |  |  | start no earlier than 2026-07-10 09:00 | Зорькин В; Тимофеев В | 2h | 2h |
| 1862 | 3.43.48.3 | орг закуп с курьером |  | 2h | 2026-07-15 09:00 A | 2026-07-15 11:00 A | 1857SS | 100% |  |  | start no earlier than 2026-07-13 09:00 | Зорькин В | 2h | 2h |
| 1863 | 3.43.48.4 | замена шланг напорный с насоса до ротаметра |  | 1h | 2026-07-15 11:00 A | 2026-07-15 12:00 A | 1862 | 100% |  |  | start no earlier than 2026-07-13 09:00 | Бобренок В | 1h | 1h |
| 1864 | 3.43.49 | Доработать крутилку ссыпа гранулы, прихватить на сварку |  | 1h | 2026-07-09 09:00 A | 2026-07-09 10:00 A |  | 100% |  |  | start no earlier than 2026-07-09 09:00 | Макаревич А | 1h | 1h |
| 1865 | 3.43.50 | удлинить лоток ножевого узла, до кромки загрузки применик пневмотранспорта |  | 3h | 2026-07-09 09:00 A | 2026-07-09 12:00 A |  | 100% |  |  | start no earlier than 2026-07-09 09:00 | Макаревич А | 3h | 3h |
| 1866 | 3.43.51 | Снять торцевые дверцы на печи для доступа к сетке |  | 1h | 2026-07-08 09:00 A | 2026-07-08 10:00 A |  | 100% |  |  | start no earlier than 2026-07-08 08:00 | Бундин В | 1h | 1h |
| 1867 | 3.43.52 | Снять кожухи на редукторах на цепях |  | 1h | 2026-07-08 09:00 A | 2026-07-08 10:00 A |  | 100% |  |  | start no earlier than 2026-07-08 08:00 | Бундин В | 1h | 1h |
| 1868 | 3.43.53 | Установка раковины,унитаза в 3 цеху 2 этаж |  | 4h | 2026-07-07 09:00 A | 2026-07-07 13:00 A |  | 100% |  |  | start no earlier than 2026-07-07 09:00 | Бундин В | 4h | 4h |
| 1869 | 3.43.54 | Установить тройник на компрессор маленький, на входе. (тройни пришел сегодня на склад) |  | 1h | 2026-07-08 09:00 A | 2026-07-08 10:00 A |  | 100% |  |  | start no earlier than 2026-07-08 08:00 | Бундин В | 1h | 1h |
| 1870 | 3.43.55 | Вернуть упакованный унитаз на склад |  | 30min | 2026-07-08 09:00 A | 2026-07-08 09:30 A |  | 100% |  |  | start no earlier than 2026-07-08 08:00 | Бундин В | 0.5h | 0.5h |
| 1871 | 3.43.56 | **на тепловых реле 1 и 2 смесителя добавить порог выключения** |  | 1h? | 2026-07-11 09:00 | 2026-07-11 10:00 |  | 100% | 2026-07-14 09:00 | 2026-09-03 10:00 |  |  | 1.5h | 1.5h |
| 1872 | 3.43.56.1 | заявка на тепловые реле с большим номинолом |  | 15min | 2026-07-14 09:00 A | 2026-07-14 09:15 A |  | 100% |  |  | start no earlier than 2026-07-14 08:00 | Зорькин В | 0.25h | 0.25h |
| 1873 | 3.43.56.2 | доставка контроль |  | 15min | 2026-08-28 09:00 A | 2026-08-28 09:15 A | 1872FS+5d | 100% |  |  | start no earlier than 2026-08-28 09:00 | Зорькин В | 0.25h | 0.25h |
| 1874 | 3.43.56.3 | замена тепловых реле, получить на складе |  | 1h | 2026-09-03 09:00 A | 2026-09-03 10:00 A | 1873FS+1d | 100% |  |  | start no earlier than 2026-09-03 09:00 | Бобренок В | 1h | 1h |
| 1875 | 3.43.57 | сделать ручки с резьбой для снятия матрицы экструдера |  | 2h | 2026-07-04 09:00 A | 2026-07-06 11:00 A |  | 100% |  |  | start no earlier than 2026-07-04 09:00 | Макаревич А | 2h | 2h |
| 1876 | 3.43.58 | сделать противоудары головы на циклоне в зоне жиров | manual | 1h | 2026-07-26 09:00 A | 2026-07-26 10:00 A |  | 100% |  |  | start no earlier than 2026-07-26 09:00 | Макаревич А | 1h | 1h |
| 1877 | 3.43.59 | сделать откидную крышку на ножевом узле (расскажу как) |  | 8h | 2026-07-04 09:00 A | 2026-07-06 18:00 A |  | 100% |  |  | start no earlier than 2026-07-04 09:00 | Макаревич А | 8h | 8h |
| 1878 | 3.43.60 | подклинивает охладитель (все ярусы)- разобраться почему |  | 2h | 2026-07-11 09:00 A | 2026-07-13 11:00 A |  | 100% |  |  | start no earlier than 2026-07-11 09:00 | Макаревич А | 2h | 2h |

| ID | WBS | Task | Type | Duration | Start | Finish | Complete | Actual finish | Total slack | Constraint | Resources | Work | Actual work |
| --- | --- | --- | --- | --- | --- | --- | --- | --- | --- | --- | --- | --- | --- |
| 1879 | 3.43.61 | **откалибровать весы красных смесителей, муку с контрольным весом обеспечит 5ц** |  | 2h? | 2026-07-29 09:00 A | 2026-07-29 11:00 | 100% | 2026-08-03 18:00 |  |  | Дедов В | 10h | 10h |
| 1880 | 3.43.61.1 | вызвать специалистов |  | 1d? | 2026-08-03 09:00 A | 2026-08-03 18:00 A | 100% |  |  | start no earlier than 2026-08-03 09:00 | Шуранов Ю | 8h | 8h |
| 1881 | 3.43.62 | **установка частотника на шнек подачи со смесителей на ногу опоры шнека в разрыв питания шнека** |  | 0.12d | 2026-07-04 09:00 A | 2026-07-06 10:00 A | 100% |  |  |  |  | 1h | 1h |
| 1882 | 3.43.62.1 | демонтировать частотник шнека (в слесарку) |  | 1h | 2026-07-04 09:00 A | 2026-07-06 10:00 A | 100% |  |  | start no earlier than 2026-07-04 09:00 | Дедов В | 1h | 1h |
| 1883 | 3.43.63 | щель запенить выход из цеха |  | 1d? | 2026-07-02 09:00 A | 2026-07-02 18:00 A | 100% |  |  | start no earlier than 2026-07-02 09:00 | Олег | 8h | 8h |
| 1884 | 3.43.64 | силиконим двери прекондиционера (одну эксперимент) |  | 2h | 2026-07-02 09:00 A | 2026-07-02 11:00 A | 100% |  |  | start no earlier than 2026-07-03 09:00 | Дедов В | 2h | 2h |
| 1885 | 3.43.65 | наростить лопатку датчика переполнения на приемном лотке прекондиционера |  | 1h | 2026-06-30 09:00 A | 2026-06-30 10:00 A | 100% |  |  | start no earlier than 2026-06-30 09:00 | Бундин В | 1h | 1h |
| 1886 | 3.43.66 | установка бака стабилизации на подачу воды в прекондеционер (подключение) |  | 2h | 2026-07-02 09:00 A | 2026-07-02 11:00 A | 100% |  |  | start no earlier than 2026-07-02 09:00 | Тимофеев В | 2h | 2h |
| 1887 | 3.43.67 | изготовить фильтры на установки охлаждения |  | 1d? | 2026-07-06 09:00 | 2026-07-06 18:00 |  |  | 189.59d | start no earlier than 2026-07-06 09:00 | Тимофеев В | 8h |  |
| 1888 | 3.43.68 | удлинить горловину для второго красного смесителя |  | 2h | 2026-06-29 09:00 A | 2026-06-29 11:00 A | 100% |  |  | start no earlier than 2026-06-29 09:00 | Бундин В | 2h | 2h |
| 1889 | 3.43.69 | закрепить датчик сырья лопаткой в горке, под магнитом. Бункер экструдера |  | 4h | 2026-06-27 09:00 A | 2026-06-29 13:00 A | 100% |  |  | start no earlier than 2026-06-27 09:00 | Бундин В | 4h | 4h |
| 1890 | 3.43.70 | над магнитом сделать приемную воронку, борта, чтобы не пересыпалось сырье |  | 4h | 2026-06-27 09:00 A | 2026-06-29 13:00 A | 100% |  |  | start no earlier than 2026-06-27 09:00 | Бундин В | 4h | 4h |
| 1891 | 3.43.71 | удлинить воронку смесителя до горловины шнека. Приготовить сварщику, обяснить что нужно сделать. Вместо вибратора |  | 4h | 2026-06-27 09:00 A | 2026-06-29 13:00 A | 100% |  |  | start no earlier than 2026-06-27 09:00 | Дедов В; Бундин В | 8h | 8h |
| 1892 | 3.43.72 | байпас для масленной станции |  | 2h | 2026-07-01 09:00 A | 2026-07-01 11:00 A | 100% |  |  | start no earlier than 2026-07-01 09:00 | Тимофеев В | 2h | 2h |
| 1893 | 3.43.73 | **площадка для операторов для доступа к бункеру, что бы не наступали на краны** |  | 0.12d | 2026-07-02 09:00 A | 2026-07-02 10:00 A | 100% |  |  |  | Макаревич А; Некрасов А | 4h | 4h |
| 1894 | 3.43.73.1 | убрать заусенцы болгаркой |  | 1h | 2026-07-02 09:00 A | 2026-07-02 10:00 A | 100% |  |  | start no earlier than 2026-07-02 09:00 | Макаревич А; Тимофеев В | 2h | 2h |
| 1895 | 3.43.74 | **монтаж второй площадки с другой стороны (лестницу берем у 5 цеха -белую)** |  | 0.12d | 2026-07-03 09:00 A | 2026-07-03 10:00 A | 100% |  |  |  | Макаревич А; Некрасов А | 3h | 3h |
| 1896 | 3.43.74.1 | покрасить лестницу (мастер ц.1 даст людей- контроль) |  | 1h | 2026-07-03 09:00 A | 2026-07-03 10:00 A | 100% |  |  | start no earlier than 2026-07-03 09:00 | Макаревич А | 1h | 1h |
| 1897 | 3.43.75 | закрутить крышку двигателя улитки на циклоне жиров |  | 1h | 2026-06-25 09:00 A | 2026-06-25 10:00 A | 100% |  |  | start no earlier than 2026-06-25 09:00 | Дедов В | 1h | 1h |
| 1898 | 3.43.76 | укоротить шланг подачи масла | manual | 1h | 2026-06-25 08:00 A | 2026-06-25 09:00 A | 100% |  |  | start no earlier than 2026-06-25 08:00 | Макаревич А | 1h | 1h |
| 1899 | 3.43.77 | проверка подачи воды на парогенератор и прекондиционер, почему клапан подачи в бак заблокирован. |  | 2h | 2026-06-25 09:00 A | 2026-06-25 11:00 A | 100% |  |  | start no earlier than 2026-06-25 09:00 | Дедов В | 2h | 2h |
| 1900 | 3.43.78 | проверить парогенератор |  | 0.5h | 2026-06-25 09:00 A | 2026-06-25 09:30 A | 100% |  |  | start no earlier than 2026-06-25 09:00 | Дедов В | 0.5h | 0.5h |
| 1901 | 3.43.79 | вскрыть парогенератор, чистка электродов- фото |  | 3h | 2026-06-25 08:00 A | 2026-06-25 12:00 A | 100% |  |  | start no earlier than 2026-06-25 08:00 | Макаревич А | 3h | 3h |
| 1902 | 3.43.80 | подключить ролеты на охладителе |  | 1h | 2026-06-25 09:00 A | 2026-06-25 10:00 A | 100% |  |  | start no earlier than 2026-06-25 09:00 | Дедов В | 1h | 1h |
| 1903 | 3.43.81 | изготовление и установка шибера в лоток |  | 2h | 2026-06-25 09:00 A | 2026-06-25 11:00 A | 100% |  |  | start no earlier than 2026-06-25 09:00 | Дедов В | 2h | 2h |
| 1904 | 3.43.82 | контроль печи, будет включена пока не перестанет дымить |  | 1h | 2026-06-24 09:00 A | 2026-06-24 10:00 A | 100% |  |  | start no earlier than 2026-06-24 09:00 | Труфанов А; Макаревич А | 2h | 2h |

| ID | WBS | Task | Type | Duration | Start | Finish | Predecessors | Complete | Constraint | Resources | Work | Actual work |
| --- | --- | --- | --- | --- | --- | --- | --- | --- | --- | --- | --- | --- |
| 1905 | 3.43.83 | **взять на складе у Веры кронштейн под щетку, закрепить на него саму щетку и прикрутить на мезонине навесок в сторону ворот** |  | 28.38d | 2026-07-07 09:00 A | 2026-08-14 12:00 A |  | 100% |  |  | 3.5h | 3.5h |
| 1906 | 3.43.83.1 | заказать профиль 5мм |  | 15min | 2026-07-07 09:00 A | 2026-07-07 09:15 A |  | 100% | start no earlier than 2026-07-07 09:00 | Зорькин В | 0.25h | 0.25h |
| 1907 | 3.43.83.2 | контроль досставки |  | 15min | 2026-07-17 09:15 A | 2026-07-17 09:30 A | 1906FS+10d | 100% | start no earlier than 2026-07-07 09:00 | Зорькин В | 0.25h | 0.25h |
| 1908 | 3.43.83.3 | прикрепить на клепки/ саморезу щетку и установить на мезонине где ворота (все это находиться в 3 ц. справа на входе) Еще одна щетка есть у веры на складе, висела на кабинке | manual | 3h | 2026-08-14 09:00 A | 2026-08-14 12:00 A | 1907 | 100% |  | Макаревич А | 3h | 3h |
| 1909 | 3.43.84 | кабель трется о дверь, уложить в лоток, приподнять -закрепить к воздуховоду |  | 3h | 2026-06-24 09:00 A | 2026-06-24 12:00 A |  | 100% | start no earlier than 2026-06-24 09:00 | Труфанов А | 3h | 3h |
| 1910 | 3.43.85 | на частотнике пневмоулитки на жирах- увеличить время разгона и торможения |  | 1h | 2026-06-23 09:00 A | 2026-06-23 10:00 A |  | 100% | start no earlier than 2026-06-23 09:00 | Труфанов А | 1h | 1h |
| 1911 | 3.43.86 | проверить редукторы на печи (утечка есть или нет) |  | 1h | 2026-06-23 09:00 A | 2026-06-23 10:00 A |  | 100% | start no earlier than 2026-06-23 09:00 | Труфанов А | 1h | 1h |
| 1912 | 3.43.87 | убрать трубу нерж в коридоре возле охладителя в комнату на выходе из цеха | manual | 1h | 2026-06-20 09:00 A | 2026-06-20 10:00 A |  | 100% | start no earlier than 2026-06-20 09:00 | Бундин В | 1h | 1h |
| 1913 | 3.43.88 | капает с улитки вытяжки печи- просверлить сверло 6мм |  | 1h | 2026-06-20 09:00 A | 2026-06-22 10:00 A |  | 100% | start no earlier than 2026-06-20 09:00 | Дедов В | 1h | 1h |
| 1914 | 3.43.89 | герметизация всех стыков вневмотрубы аллюминевым скотчем (улитка с печи на жиры) | manual | 1h | 2026-06-21 09:00 A | 2026-06-21 10:00 A |  | 100% | start no earlier than 2026-06-21 09:00 | Труфанов А | 1h | 1h |
| 1915 | 3.43.90 | отпилить одну перекладину опоры вентиляции, чтобы открывалась дверь печи | manual | 3h | 2026-06-21 09:00 A | 2026-06-21 12:00 A |  | 100% | start no earlier than 2026-06-21 09:00 | Бундин В | 3h | 3h |
| 1916 | 3.43.91 | проверка подачи воды в прекондиционер | manual | 1h | 2026-06-21 09:00 A | 2026-06-21 10:00 A |  | 100% | start no earlier than 2026-06-21 09:00 | Труфанов А | 1h | 1h |
| 1917 | 3.43.92 | включаем печь, прожигаем масло- чтобы вагорело и не дымило… контроль |  | 1h | 2026-06-23 09:00 A | 2026-06-23 10:00 A |  | 100% | start no earlier than 2026-06-23 09:00 | Шуранов Ю | 1h | 1h |
| 1918 | 3.43.93 | прикрутить горловину прекондиционера (находиться в комнате на выходе из цеха) | manual | 1h | 2026-06-20 09:00 A | 2026-06-20 10:00 A |  | 100% | start no earlier than 2026-06-20 09:00 | Бундин В | 1h | 1h |
| 1919 | 3.43.94 | на 1 и 2 зоне температура растет больше факта- проверить |  | 1h | 2026-06-23 09:00 A | 2026-06-23 10:00 A |  | 100% | start no earlier than 2026-06-23 09:00 | Труфанов А | 1h | 1h |
| 1920 | 3.43.95 | собрать парогенератор (насос+ вход вода в парик) |  | 1h | 2026-06-19 09:00 A | 2026-06-19 10:00 A |  | 100% | start no earlier than 2026-06-19 09:00 | Дедов В | 1h | 1h |
| 1921 | 3.43.96 | увеличить частоту на пневмоулитку с печи в жиры |  | 1h | 2026-06-19 09:00 A | 2026-06-19 10:00 A |  | 100% | start no earlier than 2026-06-19 09:00 | Дедов В | 1h | 1h |
| 1922 | 3.43.97 | трубу жиротопки утеплить |  | 2h | 2026-06-18 09:00 A | 2026-06-18 11:00 A |  | 100% | start no earlier than 2026-06-18 08:00 | Труфанов А | 2h | 2h |
| 1923 | 3.43.98 | установка смесителя душа 2 этаж продолжить |  | 4h | 2026-07-07 09:00 A | 2026-07-07 13:00 A |  | 100% | start no earlier than 2026-07-07 09:00 | Бундин В | 4h | 4h |
| 1924 | 3.43.99 | на прекондеционере настроить премыкание на всех дверцах | manual | 3h | 2026-06-21 09:00 A | 2026-06-21 12:00 A |  | 100% | start no earlier than 2026-06-21 09:00 | Труфанов А | 3h | 3h |
| 1925 | 3.43.100 | обрезить шпильки, которые торчат, на воздуховодах вентиляции (зона навесок и жиров) |  | 2h | 2026-06-18 09:00 A | 2026-06-18 11:00 A |  | 100% | start no earlier than 2026-06-18 08:00 | Труфанов А | 2h | 2h |
| 1926 | 3.43.101 | **модернизация схема ШУ жиротопки - отключается циркуляц насос при достжении температуры** |  | 5.5d | 2026-06-07 09:00 A | 2026-06-15 13:00 A |  | 100% |  |  | 5h | 5h |
| 1927 | 3.43.101.1 | изучить схему, согласовать предложения модернизации |  | 1h | 2026-06-07 09:00 A | 2026-06-08 10:00 A |  | 100% | start no earlier than 2026-06-07 09:00 | Дедов В | 1h | 1h |
| 1928 | 3.43.101.2 | реализации модернизации |  | 4h | 2026-06-15 09:00 A | 2026-06-15 13:00 A | 1927 | 100% | start no earlier than 2026-06-15 09:00 | Дедов В | 4h | 4h |

| ID | WBS | Task | Type | Duration | Start | Finish | Predecessors | Complete | Actual start | Actual finish | Constraint | Resources | Work | Actual work |
| --- | --- | --- | --- | --- | --- | --- | --- | --- | --- | --- | --- | --- | --- | --- |
| 1929 | 3.43.102 | **сборка квадропак с системой дозации** |  | 56.5d | 2026-06-18 09:00 A | 2026-09-04 13:00 A |  | 100% |  |  |  |  | 67h | 67h |
| 1930 | 3.43.102.1 | сборка нория |  | 8h | 2026-07-17 09:00 A | 2026-07-17 18:00 A |  | 100% |  |  | start no earlier than 2026-07-17 09:00 | Некрасов А; Тимофеев В | 15h | 15h |
| 1931 | 3.43.102.2 | сборка площадка |  | 4h | 2026-07-20 09:00 A | 2026-07-20 13:00 A | 1930 | 100% |  |  | start no earlier than 2026-07-09 08:00 | Некрасов А; Тимофеев В | 8h | 8h |
| 1932 | 3.43.102.3 | монтаж весы |  | 4h | 2026-07-20 14:00 A | 2026-07-20 18:00 A | 1931 | 100% |  |  | start no earlier than 2026-07-09 08:00 | Некрасов А; Тимофеев В | 8h | 8h |
| 1933 | 3.43.102.4 | подключить квадропак / пусконаладка |  | 4h | 2026-09-04 09:00 A | 2026-09-04 13:00 A |  | 100% |  |  | start no earlier than 2026-09-04 09:00 | Зорькин В; Труфанов А | 8h | 8h |
| 1934 | 3.43.102.5 | разгрузка / распаковка |  | 1h | 2026-06-18 09:00 A | 2026-06-18 10:00 A |  | 100% |  |  | start no earlier than 2026-06-18 09:00 | Некрасов А; Тимофеев В | 1h | 1h |
| 1935 | 3.43.102.6 | сборка рама в 1ц над столом выгрузки пакетов. Примерка/доработка рамы по месту |  | 4h | 2026-07-09 09:00 A | 2026-07-09 13:00 A |  | 100% |  |  | start no earlier than 2026-07-09 09:00 | Некрасов А; Макаревич А; Тимофеев В | 11h | 11h |
| 1936 | 3.43.102.7 | сборка дозатор |  | 4h | 2026-07-09 09:00 A | 2026-07-09 13:00 A |  | 100% |  |  | start no earlier than 2026-07-09 09:00 | Зорькин В; Макаревич А; Некрасов А; Тимофеев В | 16h | 16h |
| 1937 | 3.43.103 | устранить заусенцы пол площадки жиротопки. Рвет тряпку уборщица. |  | 4h | 2026-05-31 09:00 A | 2026-06-01 13:00 A |  | 100% |  |  | start no earlier than 2026-05-31 09:00 | Макаревич А | 4h | 4h |
| 1938 | 3.43.104 | **востановить насос циркуляция воды на жиротопке** |  | 8.32d | 2026-06-06 09:00 A | 2026-06-18 11:35 A |  | 100% |  |  |  |  | 3.58h | 3.58h |
| 1939 | 3.43.104.1 | разборка насос / выяснить причину заклинивания |  | 1h | 2026-06-06 09:00 A | 2026-06-08 10:00 A |  | 100% |  |  | start no earlier than 2026-06-06 09:00 | Бундин В | 1h | 1h |
| 1940 | 3.43.104.2 | заявка аналог |  | 20min | 2026-06-08 09:00 A | 2026-06-08 09:20 A | 1939 | 100% |  |  | start no earlier than 2026-06-08 09:00 | Шуранов Ю | 0.33h | 0.33h |
| 1941 | 3.43.104.3 | контроль доставка |  | 15min | 2026-06-17 09:20 A | 2026-06-17 09:35 A | 1940FS+7d | 100% |  |  | start no earlier than 2026-06-05 08:00 | Шуранов Ю | 0.25h | 0.25h |
| 1942 | 3.43.104.4 | замена |  | 2h | 2026-06-18 09:35 A | 2026-06-18 11:35 A | 1941FS+1d | 100% |  |  | start no earlier than 2026-06-05 08:00 | Тимофеев В | 2h | 2h |
| 1943 | 3.43.105 | **жиротопка** |  | 9.5d | 2026-06-09 09:00 A | 2026-06-22 13:00 A |  | 100% |  |  |  |  | 9h | 9h |
| 1944 | 3.43.105.1 | (проверить двигатель и сам насос) |  | 1h | 2026-06-09 09:00 A | 2026-06-09 10:00 A |  | 100% |  |  | start no earlier than 2026-06-09 09:00 | Тимофеев В | 1h | 1h |
| 1945 | 3.43.105.2 | ремонт заклинившего насоса жиров (сняли сегодя голову ) |  | 1h | 2026-06-18 09:00 A | 2026-06-18 10:00 A | 1944 | 100% |  |  | start no earlier than 2026-06-18 09:00 | Труфанов А | 1h | 1h |
| 1946 | 3.43.105.3 | установить насос, который перебрал Труфанов поставить на штатное место / если не заработает ставим новый | manual | 1h | 2026-06-21 09:00 A | 2026-06-21 10:00 A | 1945 | 100% |  |  | start no earlier than 2026-06-21 09:00 | Бундин В | 1h | 1h |
| 1947 | 3.43.105.4 | восстановить работу пускателя на насос перекачки с бака в бак |  | 4h | 2026-06-20 09:00 A | 2026-06-22 13:00 A |  | 100% |  |  | start no earlier than 2026-06-20 09:00 | Дедов В | 4h | 4h |
| 1948 | 3.43.105.5 | подключить все шланги подачи жира в баки | manual | 2h | 2026-06-22 09:00 A | 2026-06-22 11:00 A |  | 100% |  |  | start no earlier than 2026-06-22 09:00 | Труфанов А | 2h | 2h |
| 1949 | 3.43.106 | **трасса нерж жиротопка- баки, найти утечки устранить** |  | 0.75d | 2026-05-23 09:00 A | 2026-05-25 16:00 A |  | 100% |  |  |  |  | 6h | 6h |
| 1950 | 3.43.106.1 | заварить места утечки и восстановить утеплитель + греющий кабель |  | 6h | 2026-05-23 09:00 A | 2026-05-25 16:00 A |  | 100% |  |  | start no earlier than 2026-05-23 09:00 | Макаревич А | 6h | 6h |
| 1951 | 3.43.107 | **защита ворот на мезонине загрузки** |  | 8h? | 2026-05-22 09:00 | 2026-05-22 18:00 |  | 100% | 2026-05-29 09:00 | 2026-08-13 13:00 |  |  | 27h | 27h |
| 1952 | 3.43.107.1 | покрасить конструкцию |  | 2h | 2026-05-31 09:00 A | 2026-06-01 11:00 A |  | 100% |  |  | start no earlier than 2026-05-31 09:00 | Макаревич А | 2h | 2h |
| 1953 | 3.43.107.2 | приварить дополнительную перекладину на защиту воротины |  | 2h | 2026-07-07 09:00 A | 2026-07-07 11:00 A |  | 100% |  |  | start no earlier than 2026-07-07 09:00 | Труфанов А; Тимофеев В | 4h | 4h |
| 1954 | 3.43.107.3 | заказать щетку и битумную ленту |  | 1h | 2026-05-31 11:00 A | 2026-06-01 10:00 A | 1952 | 100% |  |  | start no earlier than 2026-05-22 09:00 | Шуранов Ю | 1h | 1h |
| 1955 | 3.43.107.4 | контроль доставки |  | 1d? | 2026-05-31 12:00 A | 2026-06-01 18:00 A | 1954 | 100% |  |  | start no earlier than 2026-05-29 09:00 | Шуранов Ю | 8h | 8h |
| 1956 | 3.43.107.5 | установка щетки |  | 4h | 2026-08-13 09:00 A | 2026-08-13 13:00 A |  | 100% |  |  | start no earlier than 2026-08-13 09:00 | Макаревич А | 4h | 4h |
| 1957 | 3.43.107.6 | монтаж |  | 1d? | 2026-05-29 09:00 A | 2026-05-29 18:00 A |  | 100% |  |  | start no earlier than 2026-05-29 09:00 | Некрасов А | 8h | 8h |
| 1958 | 3.43.108 | установить щетку на поломоечную машину (щетка на складе) |  | 2h | 2026-05-21 09:00 A | 2026-05-21 11:00 A |  | 100% |  |  | start no earlier than 2026-05-21 08:00 | Бундин В | 2h | 2h |
| 1959 | 3.43.109 | площадка мезонина зона фасовки- убрать щели профиля битумной лентой |  | 2h | 2026-05-21 09:00 A | 2026-05-21 11:00 A |  | 100% |  |  | start no earlier than 2026-05-21 09:00 | Бундин В | 2h | 2h |
| 1960 | 3.43.110 | прикрутить дюзы форсунок подачи воды в прекондиционер, взять у меня на столе. |  | 1h | 2026-05-22 09:00 A | 2026-05-22 10:00 A |  | 100% |  |  | start no earlier than 2026-05-22 09:00 | Тимофеев В | 1h | 1h |
| 1961 | 3.43.111 | проверить насос подачи жира со 2 бака на барабаны, Викторович его разобрал |  | 2h | 2026-05-19 08:00 A | 2026-05-19 11:00 A |  | 100% |  |  | start no earlier than 2026-05-19 08:00 | Дедов В | 2h | 2h |
| 1962 | 3.43.112 | проверить рабочий или нет циркуляционный насос для змеевика на жиротопке |  | 1h | 2026-05-19 08:00 A | 2026-05-19 10:00 A |  | 100% |  |  | start no earlier than 2026-05-19 08:00 | Дедов В | 1h | 1h |
| 1963 | 3.43.113 | проверка оборудования на жирах водой |  | 3h | 2026-05-19 09:00 A | 2026-05-19 12:00 A |  | 100% |  |  | start no earlier than 2026-05-20 09:00 | Тимофеев В | 3h | 3h |
| 1964 | 3.43.114 | покраска пол под лотком барабан-охладитель |  | 1h | 2026-05-15 09:00 A | 2026-05-15 10:00 A |  | 100% |  |  | start no earlier than 2026-05-15 09:00 | Бобренок В | 1h | 1h |

| ID | WBS | Task | Type | Duration | Start | Finish | Complete | Constraint | Resources | Work | Actual work |
| --- | --- | --- | --- | --- | --- | --- | --- | --- | --- | --- | --- |
| 1965 | 3.43.115 | **ремонт ворот рольставня** |  | 4.12d | 2026-05-14 09:00 A | 2026-05-20 10:00 A | 100% |  |  | 2h | 2h |
| 1966 | 3.43.115.1 | вызывать сервис |  | 1h | 2026-05-14 09:00 A | 2026-05-14 10:00 A | 100% | start no earlier than 2026-05-14 09:00 | Зорькин В | 1h | 1h |
| 1967 | 3.43.115.2 | контроль работ |  | 1h | 2026-05-20 09:00 A | 2026-05-20 10:00 A | 100% | start no earlier than 2026-05-20 09:00 | Зорькин В | 1h | 1h |
| 1968 | 3.43.116 | вырезать косая пластина в воронку пневмотранспорта на подачу жиров |  | 2h | 2026-05-14 09:00 A | 2026-05-14 11:00 A | 100% | start no earlier than 2026-05-14 09:00 | Макаревич А | 2h | 2h |
| 1969 | 3.43.117 | убрать бороду от вентиляторов |  | 4h | 2026-05-12 09:00 A | 2026-05-12 13:00 A | 100% | start no earlier than 2026-05-12 09:00 | Некрасов А; Труфанов А | 8h | 8h |
| 1970 | 3.43.118 | монтаж кабель управления заслонками вентиляторы окно |  | 4h | 2026-05-20 09:00 A | 2026-05-20 13:00 A | 100% | start no earlier than 2026-05-22 09:00 | Некрасов А; Бундин В | 8h | 8h |
| 1971 | 3.43.119 | **автоматика управления смесителями** |  | 80.38d | 2026-05-04 09:00 A | 2026-08-24 12:00 A | 100% |  |  | 35h | 35h |
| 1972 | 3.43.119.1 | поменять местами переключатели управления смесителями левый что бы включал поперечный смеситель |  | 2h | 2026-07-12 09:00 A | 2026-07-13 11:00 A | 100% | start no earlier than 2026-07-12 09:00 | Дедов В | 2h | 2h |
| 1973 | 3.43.119.2 | сделать подключение красных смесителей по схеме Домоводова |  | 22h | 2026-05-18 09:00 A | 2026-05-20 16:00 A | 100% | start no earlier than 2026-05-19 09:00 | Дедов В | 22h | 22h |
| 1974 | 3.43.119.3 | доработка схемы управления смесителями по логике ТЗ, упорядочить монтаж, промаркировать соденения |  | 8h | 2026-05-04 09:00 A | 2026-05-04 18:00 A | 100% | start no earlier than 2026-05-04 09:00 | Дедов В | 8h | 8h |
| 1975 | 3.43.119.4 | уложить красиво все провода в шкафу управления смесителями |  | 3h | 2026-08-24 09:00 A | 2026-08-24 12:00 A | 100% | start no earlier than 2026-08-24 09:00 | Дедов В | 3h | 3h |
| 1976 | 3.43.120 | **установить воздуховод на 300мм на красные смесители** |  | 6.25d | 2026-05-08 08:00 A | 2026-05-18 11:00 A | 100% |  |  | 4h | 4h |
| 1977 | 3.43.120.1 | заказать другой диаметр | milestone | 0d | 2026-05-08 08:00 A | 2026-05-08 08:00 A | 100% | start no earlier than 2026-05-08 08:00 | Зорькин В |  |  |
| 1978 | 3.43.120.2 | установить ф300 | milestone | 0h | 2026-05-13 09:00 A | 2026-05-13 09:00 A | 100% | start no earlier than 2026-05-13 09:00 | Тимофеев В; Зорькин В |  |  |
| 1979 | 3.43.120.3 | красные смесители вернуть воздуховоды (доработать рукав пересыпки воронка-смеситель) |  | 2h | 2026-05-13 09:00 A | 2026-05-13 11:00 A | 100% | start no earlier than 2026-05-13 09:00 | Тимофеев В | 2h | 2h |
| 1980 | 3.43.120.4 | сборка рукав на второй смеситель. Сшить по образцу |  | 2h | 2026-05-18 09:00 A | 2026-05-18 11:00 A | 100% | start no earlier than 2026-05-18 09:00 | Тимофеев В | 2h | 2h |
| 1981 | 3.43.121 | проверить почему не запускается приточная вентиляция в вент. Камере 7,5кВт |  | 1h | 2026-04-29 08:00 A | 2026-04-29 10:00 A | 100% | start no earlier than 2026-04-29 08:00 | Дедов В | 1h | 1h |
| 1982 | 3.43.122 | прозвонить кнопку индикации водителя под сиденьем (позвони объясню) |  | 2h | 2026-04-15 09:00 A | 2026-04-15 11:00 A | 100% | start no earlier than 2026-04-15 08:00 | Бундин В | 2h | 2h |
| 1983 | 3.43.123 | проверить приход с Китая по шнекам и гильзам |  | 1h | 2026-04-09 09:00 A | 2026-04-09 10:00 A | 100% | start no earlier than 2026-04-09 08:00 | Шуранов Ю | 1h | 1h |
| 1984 | 3.43.124 | собрать и установить мойку (со старой прикрутить смеситель) мойка у Веры на складе на 2 верхнем ярусе стеллажей | manual | 2h | 2026-04-05 09:00 A | 2026-04-05 11:00 A | 100% | start no earlier than 2026-04-05 09:00 | Труфанов А | 2h | 2h |
| 1985 | 3.43.125 | вывоз 3 поддона с мусором |  | 30min | 2026-03-24 09:00 A | 2026-03-24 09:30 A | 100% | start no earlier than 2026-03-24 09:00 | Некрасов А; Труфанов А | 1h | 1h |
| 1986 | 3.43.126 | установить отбойники на стеллажи | manual | 8h | 2026-03-29 09:00 A | 2026-03-29 18:00 A | 100% | start no earlier than 2026-03-29 09:00 | Бундин В | 8h | 8h |
| 1987 | 3.43.127 | установить отбойники на стеллажи | manual | 6h | 2026-04-18 09:00 A | 2026-04-18 16:00 A | 100% | start no earlier than 2026-04-18 09:00 | Бобренок В | 6h | 6h |
| 1988 | 3.43.128 | уборка зона курилка / венткамера |  | 4h | 2026-03-17 09:00 A | 2026-03-17 13:00 A | 100% | start no earlier than 2026-03-17 09:00 | Тимофеев В; Некрасов А; Макаревич А; Труфанов А | 16h | 16h |

| ID | WBS | Task | Duration | Start | Finish | Predecessors | Complete | Actual start | Actual finish | Total slack | Constraint | Resources | Work | Actual work |
| --- | --- | --- | --- | --- | --- | --- | --- | --- | --- | --- | --- | --- | --- | --- |
| 1989 | 3.43.129 | **сборка квадропак** | 13.25d | 2026-05-06 09:00 A | 2026-05-25 11:00 A |  | 100% |  |  |  |  |  | 14h | 14h |
| 1990 | 3.43.129.1 | подвести воздух к квадропаку | 4h | 2026-05-22 09:00 A | 2026-05-22 13:00 A |  | 100% |  |  |  | start no earlier than 2026-05-22 09:00 | Тимофеев В | 4h | 4h |
| 1991 | 3.43.129.2 | установить перед пневмораспределителями влагоотделитель | 2h | 2026-05-24 09:00 A | 2026-05-25 11:00 A |  | 100% |  |  |  | start no earlier than 2026-05-24 09:00 | Дедов В | 2h | 2h |
| 1992 | 3.43.129.3 | подключить квадропак к щитку кабель 5х2,5 | 4h | 2026-05-06 09:00 A | 2026-05-06 13:00 A |  | 100% |  |  |  | start no earlier than 2026-05-06 09:00 | Труфанов А; Тимофеев В | 8h | 8h |
| 1993 | 3.43.130 | крепление магистрали компрессора. Зона дрожировки | 1h | 2026-03-08 09:00 A | 2026-03-09 10:00 A |  | 100% |  |  |  | start no earlier than 2026-03-08 09:00 | Бундин В | 1h | 1h |
| 1994 | 3.43.131 | Собрать транспортер тип2 (уточнить у Шуранова)/ доделать | 3h | 2026-03-08 09:00 A | 2026-03-09 12:00 A |  | 100% |  |  |  | start no earlier than 2026-03-08 09:00 | Бобренок В | 3h | 3h |
| 1995 | 3.43.132 | **Покраска лестницы** | 43d | 2026-03-04 09:00 A | 2026-05-01 18:00 A |  | 100% |  |  |  |  |  | 116.33h | 116.33h |
| 1996 | 3.43.132.1 | Заявка на краску | 20min | 2026-03-04 09:00 A | 2026-03-04 09:20 A |  | 100% |  |  |  | start no earlier than 2026-03-04 09:00 | Зорькин В | 0.33h | 0.33h |
| 1997 | 3.43.132.2 | Доставка | 10d | 2026-03-04 09:20 A | 2026-03-18 09:20 A | 1996 | 100% |  |  |  | start no earlier than 2026-03-03 08:00 | Карабанов | 80h | 80h |
| 1998 | 3.43.132.3 | Работа по покраске | 6h | 2026-04-28 09:00 A | 2026-04-28 16:00 A | 1997 | 100% |  |  |  | start no earlier than 2026-04-28 09:00 | оперторы2; Олег | 12h | 12h |
| 1999 | 3.43.132.4 | покраска колонны в коридоре | 4h | 2026-04-28 09:00 A | 2026-04-28 13:00 A |  | 100% |  |  |  | start no earlier than 2026-04-28 08:00 | оперторы2; Олег | 8h | 8h |
| 2000 | 3.43.132.5 | покарска потолок в корридоре | 2d | 2026-04-30 09:00 A | 2026-05-01 18:00 A |  | 100% |  |  |  | start no earlier than 2026-04-30 09:00 | оператор2 | 16h | 16h |
| 2001 | 3.43.133 | **доработка лотка барабан-охладитель - снизить скорость падения, установить сетку** | 1.5d? | 2026-04-14 09:00 | 2026-04-15 13:00 |  | 100% | 2026-05-13 09:00 | 2026-06-17 18:00 |  |  |  | 46.75h | 46.75h |
| 2002 | 3.43.133.1 | сборка кронштейны + стека | 5h | 2026-05-13 09:00 A | 2026-05-13 15:00 A |  | 100% |  |  |  | start no earlier than 2026-05-13 09:00 | Труфанов А; Некрасов А | 10h | 10h |
| 2003 | 3.43.133.2 | сборка ручки, установка. Фотоотчет | 2h | 2026-05-15 09:00 A | 2026-05-15 11:00 A |  | 100% |  |  |  | start no earlier than 2026-05-15 09:00 | Некрасов А; Труфанов А | 4h | 4h |
| 2004 | 3.43.133.3 | сборка вращающаяся заслонка | 4h | 2026-05-15 11:00 A | 2026-05-15 16:00 A | 2003 | 100% |  |  |  | start no earlier than 2026-05-15 09:00 | Некрасов А; Труфанов А | 8h | 8h |
| 2005 | 3.43.133.4 | доработка пластины, что бы не клинила | 1h | 2026-05-21 09:00 A | 2026-05-21 10:00 A |  | 100% |  |  |  | start no earlier than 2026-05-22 09:00 | Некрасов А; Бундин В | 2h | 2h |
| 2006 | 3.43.133.5 | заказ на лазере пластину для регулировки шибера | 1d? | 2026-05-25 09:00 A | 2026-05-25 18:00 A |  | 100% |  |  |  | start no earlier than 2026-05-25 09:00 | Зорькин В | 8h | 8h |
| 2007 | 3.43.133.6 | чертеж пластина фиксации рычага | 2h | 2026-05-19 09:00 A | 2026-05-19 11:00 A | 2004 | 100% |  |  |  | start no earlier than 2026-05-19 09:00 | Зорькин В | 2h | 2h |
| 2008 | 3.43.133.7 | заявка на изготвление на лазер | 15min | 2026-05-20 11:00 A | 2026-05-20 11:15 A | 2007FS+1d | 100% |  |  |  | start no earlier than 2026-05-15 08:00 | Зорькин В | 0.25h | 0.25h |
| 2009 | 3.43.133.8 | контроль изг | 15min | 2026-06-01 09:00 A | 2026-06-01 09:15 A | 2008FS+5d | 100% |  |  |  | start no earlier than 2026-06-01 09:00 | Зорькин В | 0.25h | 0.25h |
| 2010 | 3.43.133.9 | доставка орг | 15min | 2026-06-05 09:00 A | 2026-06-05 09:15 A | 2009FS+1d | 100% |  |  |  | start no earlier than 2026-06-05 09:00 | Зорькин В | 0.25h | 0.25h |
| 2011 | 3.43.133.10 | сборка рычага | 4h | 2026-06-08 09:15 A | 2026-06-08 14:15 A | 2010FS+1d | 100% |  |  |  | start no earlier than 2026-06-06 09:00 | Бундин В | 4h | 4h |
| 2012 | 3.43.133.11 | сделать напраляшку на шибере регулируемую- сыпит в одну сторону | 1d? | 2026-06-17 09:00 A | 2026-06-17 18:00 A |  | 100% |  |  |  | start no earlier than 2026-06-23 09:00 | Тимофеев В | 8h | 8h |
| 2013 | 3.43.134 | сборка система отопления 2 этаж | 1d? | 2026-06-15 09:00 | 2026-06-15 18:00 |  |  |  |  | 204.59d | start no earlier than 2026-06-15 09:00 | Труфанов А; Некрасов А; Олег | 24h |  |

| ID | WBS | Task | Duration | Start | Finish | Predecessors | Complete | Total slack | Constraint | Resources | Work | Actual work |
| --- | --- | --- | --- | --- | --- | --- | --- | --- | --- | --- | --- | --- |
| 2014 | 3.43.135 | **заменить сопряжение смесителей на гибк вставку** | 29.25d | 2026-03-19 09:00 A | 2026-04-29 11:00 A |  | 100% |  |  |  | 122.5h | 122.5h |
| 2015 | 3.43.135.1 | заявка | 30min | 2026-03-19 09:00 A | 2026-03-19 09:30 A |  | 100% |  | start no earlier than 2026-03-19 09:00 | Зорькин В | 0.5h | 0.5h |
| 2016 | 3.43.135.2 | доставка | 15d | 2026-03-19 09:30 A | 2026-04-09 09:30 A | 2015 | 100% |  | start no earlier than 2026-02-27 08:00 | Карабанов | 120h | 120h |
| 2017 | 3.43.135.3 | замена | 2h | 2026-04-29 09:00 A | 2026-04-29 11:00 A | 2016 | 100% |  | start no earlier than 2026-04-29 09:00 | Тимофеев В | 2h | 2h |
| 2018 | 3.43.136 | **приточная вентиляция** | 154.25d | 2026-03-06 09:00 A | 2026-09-29 11:00 A |  | 100% |  |  |  | 13.5h | 13.5h |
| 2019 | 3.43.136.1 | визит Евгения. Контроль монтажа | 30min | 2026-03-06 09:00 A | 2026-03-06 09:30 A |  | 100% |  | start no earlier than 2026-03-06 09:00 | Домоводов К | 0.5h | 0.5h |
| 2020 | 3.43.136.2 | подключить силовой кабель в ШУ (лежит в лотке) | 3h | 2026-03-13 09:00 A | 2026-03-13 12:00 A |  | 100% |  | start no earlier than 2026-03-13 09:00 | Подрядчик | 3h | 3h |
| 2021 | 3.43.136.3 | монтаж изоляционных прокладок вводный автомат между фазами | 2h | 2026-09-24 09:00 A | 2026-09-24 11:00 A |  | 100% |  | start no earlier than 2026-09-24 09:00 | Дедов В | 2h | 2h |
| 2022 | 3.43.136.4 | подключить нулевой провод шкаф управления | 2h | 2026-09-24 09:00 A | 2026-09-24 11:00 A |  | 100% |  | start no earlier than 2026-09-24 09:00 | Дедов В | 2h | 2h |
| 2023 | 3.43.136.5 | монтаж перемычек от автомата на ТВ реле . Звонить Дедову | 2h | 2026-09-24 09:00 A | 2026-09-24 11:00 A |  | 100% |  | start no earlier than 2026-09-24 09:00 | Дедов В | 2h | 2h |
| 2024 | 3.43.136.6 | замена схемы включения вентилятор вытяжка / приточка | 2h | 2026-05-04 09:00 A | 2026-05-04 11:00 A |  | 100% |  | start no earlier than 2026-05-04 09:00 | Дедов В | 2h | 2h |
| 2025 | 3.43.136.7 | проверить все подключения / тест | 2h | 2026-09-29 09:00 A | 2026-09-29 11:00 A |  | 100% |  | start no earlier than 2026-09-29 09:00 | Дедов В | 2h | 2h |
| 2026 | 3.43.137 | установить гидроаккумулятор | 2h | 2026-03-03 09:00 A | 2026-03-03 11:00 A |  | 100% |  | start no earlier than 2026-03-03 09:00 | Тимофеев В | 2h | 2h |
| 2027 | 3.43.138 | тест герметичности. жиропровод нерж оборудовать греющим кабелем + утеплитель. | 2h | 2026-06-01 09:00 A | 2026-06-01 11:00 A |  | 100% |  | start no earlier than 2026-05-31 09:00 | Макаревич А | 2h | 2h |
| 2028 | 3.43.139 | **установить перила площадка загрузки навески** | 0.25d | 2026-05-27 09:00 A | 2026-05-27 11:00 A |  | 100% |  |  |  | 2h | 2h |
| 2029 | 3.43.139.1 | покрасить перила | 2h | 2026-05-27 09:00 A | 2026-05-27 11:00 A |  | 100% |  | start no earlier than 2026-05-27 09:00 | оператор2 | 2h | 2h |
| 2030 | 3.43.140 | дорабать качелю безопасности на площадке загрузки навески что бы не задевала за вентиляцию | 2h | 2026-05-12 09:00 A | 2026-05-12 11:00 A |  | 100% |  | start no earlier than 2026-05-12 09:00 | Некрасов А | 2h | 2h |
| 2031 | 3.43.141 | подготовить отражатели тепла на подшипники печи линия 4 | 8h | 2025-09-01 09:00 | 2025-09-01 18:00 |  |  | 409.59d | start no earlier than 2025-08-30 09:00 | Тимофеев В | 8h |  |
| 2032 | 3.43.142 | усилить раму прекондиционера | 1d? | 2026-04-28 08:00 A | 2026-04-28 18:00 A |  | 100% |  | start no earlier than 2026-04-28 08:00 | Тимофеев В | 8h | 8h |
| 2033 | 3.43.143 | переместить магнит загрузки сырья | 2h | 2026-05-07 09:00 A | 2026-05-07 11:00 A |  | 100% |  | start no earlier than 2026-05-07 09:00 | Тимофеев В | 2h | 2h |
| 2034 | 3.43.144 | труба выход пара греет шнек - переместить | 1d? | 2026-06-19 09:00 A | 2026-06-19 18:00 A |  | 100% |  | start no earlier than 2026-06-19 09:00 | Тимофеев В | 8h | 8h |
| 2035 | 3.43.145 | герметизация примыкание на выходе из печи | 2d | 2026-05-18 09:00 A | 2026-05-19 18:00 A |  | 100% |  | start no earlier than 2026-05-18 09:00 | Олег | 16h | 16h |
| 2036 | 3.43.146 | обшить стены курилки | 2d | 2026-04-30 09:00 A | 2026-05-01 18:00 A |  | 100% |  | start no earlier than 2026-04-30 09:00 | Олег; Некрасов А | 32h | 32h |
| 2037 | 3.43.147 | покраска рамы воздуховодов уличные | 4h | 2026-05-27 09:00 A | 2026-05-27 13:00 A |  | 100% |  | start no earlier than 2026-05-27 09:00 | оператор2 | 4h | 4h |
| 2038 | 3.43.148 | Выяснить количество теплопотерь с печи на входе | 1h | 2026-08-28 09:00 | 2026-08-28 10:00 |  |  | 151.47d | start no earlier than 2026-08-28 09:00 | Зорькин В; Бобренок В | 2h |  |
| 2039 | 3.43.149 | Переделка входа пневмотрассы с печи на жиры, сделать плавный переход из двух углов по 45 | 4h | 2026-07-24 09:00 A | 2026-07-24 13:00 A |  | 100% |  | start no earlier than 2026-07-24 09:00 | Бундин В | 4h | 4h |

| ID | WBS | Task | Type | Duration | Start | Finish | Predecessors | Complete | Remaining | Actual finish | Total slack | Constraint | Resources | Work | Actual work |
| --- | --- | --- | --- | --- | --- | --- | --- | --- | --- | --- | --- | --- | --- | --- | --- |
| 2040 | 3.43.150 | **Печь** |  | 0d | 2026-07-25 09:00 A | 2026-07-26 11:00 A |  | 100% |  |  |  |  |  | 6h | 6h |
| 2041 | 3.43.150.1 | Переделка входа пневмотрассы с печи на жиры, сделать плавный переход из двух углов по 45, закончить если Валентин не доделал или взять в работу если Валентин не начал. Уточнить у него как он хотел сделать. | manual | 4h | 2026-07-25 09:00 A | 2026-07-25 13:00 A |  | 100% |  |  |  | start no earlier than 2026-07-25 09:00 | Макаревич А | 4h | 4h |
| 2042 | 3.43.150.2 | 4 зона шкаф управления не набирает заданную температуру, выяснить причину/устранить | manual | 2h | 2026-07-26 09:00 A | 2026-07-26 11:00 A |  | 100% |  |  |  | start no earlier than 2026-07-26 09:00 | Бобренок В | 2h | 2h |
| 2043 | 3.43.151 | **розетки** |  | 0.25d | 2026-07-25 09:00 A | 2026-07-27 11:00 A |  | 100% |  |  |  |  |  | 6h | 6h |
| 2044 | 3.43.151.1 | Монтаж розетки для болера, где мойка экструдера, подключиться к резерву ШУ на экструдере | manual | 2h | 2026-07-25 09:00 A | 2026-07-25 11:00 A |  | 100% |  |  |  | start no earlier than 2026-07-25 09:00 | Бобренок В | 2h | 2h |
| 2045 | 3.43.151.2 | Монтаж розетки, где ворота выхода готовой продукции | manual | 2h | 2026-07-27 09:00 A | 2026-07-27 11:00 A |  | 100% |  |  |  |  | Некрасов А; Труфанов А | 4h | 4h |
| 2046 | 3.43.152 | **Дражжировка** |  | 0d | 2026-07-26 09:00 A | 2026-07-26 11:00 A |  | 100% |  |  |  |  |  | 2h | 2h |
| 2047 | 3.43.152.1 | Устранить течь за раковиной. Вода перекрывается на потолке возле главной вентилляции | manual | 2h | 2026-07-26 09:00 A | 2026-07-26 11:00 A |  | 100% |  |  |  | start no earlier than 2026-07-26 09:00 | Бобренок В | 2h | 2h |
| 2048 | 3.43.153 | обшить стены вент камеры |  | 2d | 2026-05-06 09:00 A | 2026-05-07 18:00 A |  | 100% |  |  |  | start no earlier than 2026-05-06 09:00 | Олег; Некрасов А | 32h | 32h |
| 2049 | 3.43.154 | убрать металл 100*100 в зону охладителя или корридор |  | 1h | 2026-03-02 09:00 A | 2026-03-02 10:00 A |  | 100% |  |  |  | start no earlier than 2026-03-02 09:00 | Некрасов А; Труфанов А | 2h | 2h |
| 2050 | 4 | **4 склад** |  | 109.75d | 2026-03-13 09:00 A | 2026-07-15 16:00 |  | 100% |  | 2026-07-29 11:00 |  |  |  | 93.25h | 93.25h |
| 2051 | 4.1 | реверс направления кнопок движения вперед-назад ричтрака |  | 2h | 2026-07-14 08:00 A | 2026-07-14 11:00 A |  | 100% |  |  |  | start no earlier than 2026-07-14 08:00 | Дедов В | 2h | 2h |
| 2052 | 4.2 | 2 ветки не работают светильники -разобраться |  | 1h | 2026-07-02 09:00 A | 2026-07-02 10:00 A |  | 100% |  |  |  | start no earlier than 2026-07-02 09:00 | Тимофеев В | 1h | 1h |
| 2053 | 4.3 | Выяснить почему перегорают светильники |  | 2h | 2026-07-29 08:00 A | 2026-07-29 11:00 A |  | 100% |  |  |  | start no earlier than 2026-07-29 08:00 | Дедов В | 2h | 2h |
| 2054 | 4.4 | замена светильников |  | 8h | 2026-04-17 09:00 A | 2026-04-17 18:00 A |  | 100% |  |  |  | start no earlier than 2026-04-17 08:00 | Некрасов А; Труфанов А | 16h | 16h |
| 2055 | 4.5 | сборка рохли 1шт |  | 1h | 2026-03-13 09:00 A | 2026-03-13 10:00 A |  | 100% |  |  |  | start no earlier than 2026-03-13 09:00 | Тимофеев В | 1h | 1h |
| 2056 | 4.6 | ремонт обрамление погрузочной рампы |  | 4h | 2026-05-28 09:00 A | 2026-05-28 13:00 A |  | 100% |  |  |  | start no earlier than 2026-05-28 09:00 | Олег | 4h | 4h |
| 2057 | 4.7 | замена неисправных светильников |  | 1d | 2026-03-14 09:00 A | 2026-03-16 18:00 A |  | 100% |  |  |  | start no earlier than 2026-03-14 09:00 | Некрасов А; Бобренок В | 15h | 15h |
| 2058 | 4.8 | **замена неисправных светильников** |  | 87.75d | 2026-03-16 09:00 A | 2026-07-15 16:00 A |  | 100% |  |  |  |  |  | 52.25h | 52.25h |
| 2059 | 4.8.1 | заявка светильники |  | 15min | 2026-03-16 09:00 A | 2026-03-16 09:15 A |  | 100% |  |  |  | start no earlier than 2026-03-16 09:00 | Шуранов Ю | 0.25h | 0.25h |
| 2060 | 4.8.2 | доставка |  | 5d | 2026-03-16 09:15 A | 2026-03-23 09:15 A | 2059 | 100% |  |  |  | start no earlier than 2026-03-12 08:00 | Карабанов | 40h | 40h |
| 2061 | 4.8.3 | замена |  | 6h | 2026-07-15 09:00 A | 2026-07-15 16:00 A | 2060 | 100% |  |  |  | start no earlier than 2026-07-15 09:00 | Некрасов А; Труфанов А | 12h | 12h |
| 2062 | 5 | **5 цех** |  | 974.25d? | 2023-05-29 09:00 A | 2027-02-02 11:00 |  | 65% | 336.8d? |  | 26.34d |  |  | 1964.25h | 1291.67h |
| 2063 | 5.1 | Монтаж освещения на улицу |  | 2h | 2026-11-30 09:00 | 2026-11-30 11:00 | 2101 |  |  |  | 72.34d |  | Труфанов А; Некрасов А | 4h |  |
| 2064 | 5.2 | Сделать защелку для прижима сетки на дробилку |  | 1h | 2026-11-09 09:00 A | 2026-11-09 10:00 A |  | 100% |  |  |  | start no earlier than 2026-11-09 08:00 | Некрасов А | 1h | 1h |
| 2065 | 5.3 | монтаж защелки на дробилку |  | 1h | 2026-11-09 09:00 A | 2026-11-09 10:00 A |  | 100% |  |  |  | start no earlier than 2026-11-09 09:00 | Макаревич А | 1h | 1h |
| 2066 | 5.4 | Замена резинок на дробилке, осмотре всех уплотнений/замена при необходимости | manual | 1h | 2026-11-09 09:00 A | 2026-11-09 10:00 A |  | 100% |  |  |  | start no earlier than 2026-11-09 09:00 | Макаревич А | 1h | 1h |
| 2067 | 5.5 | Поставить крышку, которую изготовил бобренок, для тельфера |  | 1h | 2026-11-27 09:00 | 2026-11-27 10:00 |  |  |  |  | 73.47d | start no earlier than 2026-11-27 09:00 | Макаревич А; Некрасов А | 2h |  |
| 2068 | 5.6 | ТО в пятом цеху, осмотр, дефектовка, протяжка на всем оборудовании | manual | 6h | 2026-11-06 09:00 A | 2026-11-06 16:00 A |  | 100% |  |  |  | start no earlier than 2026-11-06 09:00 | Макаревич А; Николаев | 12h | 12h |
| 2069 | 5.7 | Запенить отверстие от кабеля в углу | manual | 30min | 2026-11-08 09:00 A | 2026-11-08 09:30 A |  | 100% |  |  |  | start no earlier than 2026-11-08 09:00 | Дедов В | 0.5h | 0.5h |
| 2070 | 5.8 | 5а подключить автоматику ворот |  | 2h | 2026-11-26 09:00 A | 2026-11-26 11:00 A |  | 100% |  |  |  | start no earlier than 2026-11-26 09:00 | Тимофеев В | 2h | 2h |
| 2071 | 5.9 | Подготовка к монтажу доп отопления 5 цех. Собрать список материала, чего не хватает. Что расстаскали |  | 1h | 2026-11-30 09:00 | 2026-11-30 10:00 |  |  |  |  | 72.47d | start no earlier than 2026-11-30 09:00 | Труфанов А; Некрасов А | 2h |  |
| 2072 | 5.10 | ремонт хомут с сито |  | 2h | 2026-10-27 09:00 A | 2026-10-27 11:00 A |  | 100% |  |  |  | start no earlier than 2026-10-27 08:00 | Бундин В | 2h | 2h |
| 2073 | 5.11 | изготовить ящик-крышку 5гран для щитка с контакторами на растариватель |  | 2h | 2026-10-29 09:00 A | 2026-10-29 11:00 A |  | 100% |  |  |  | start no earlier than 2026-10-29 09:00 | Бобренок В | 2h | 2h |
| 2074 | 5.12 | Ремонт дробилки |  | 3h | 2026-10-27 09:00 A | 2026-10-27 12:00 A |  | 100% |  |  |  | start no earlier than 2026-10-27 08:00 | Тимофеев В; Бобренок В; Николаев | 9h | 9h |

| ID | WBS | Task | Type | Duration | Start | Finish | Predecessors | Complete | Remaining | Actual start | Total slack | Free slack | Constraint | Resources | Work | Actual work |
| --- | --- | --- | --- | --- | --- | --- | --- | --- | --- | --- | --- | --- | --- | --- | --- | --- |
| 2075 | 5.13 | **изготовить бункер нерж** |  | 77d? | 2026-06-06 09:00 | 2026-09-16 18:00 |  | 97% | 2.29d? | 2026-03-16 09:00 |  |  |  |  | 151.5h | 147.5h |
| 2076 | 5.13.1 | доработка / покрасить уголок |  | 4h | 2026-10-19 09:00 A | 2026-10-19 13:00 A |  | 100% |  |  |  |  | start no earlier than 2026-10-19 08:00 | Бундин В | 4h | 4h |
| 2077 | 5.13.2 | печать фланец |  | 2h | 2026-10-22 09:00 | 2026-10-22 11:00 |  |  |  |  | 103.34d |  | start no earlier than 2026-10-22 09:00 | Домоводов К | 2h |  |
| 2078 | 5.13.3 | установить фильтр воздушный на крышку |  | 2h | 2026-10-22 09:00 | 2026-10-22 11:00 |  |  |  |  | 103.34d |  | start no earlier than 2026-10-22 09:00 | Бобренок В | 2h |  |
| 2079 | 5.13.4 | составить чертеж |  | 1h | 2026-03-16 09:00 A | 2026-03-16 10:00 A |  | 100% |  |  |  |  | start no earlier than 2026-03-16 09:00 | Зорькин В | 1h | 1h |
| 2080 | 5.13.5 | заявка на нерж |  | 30min | 2026-03-16 10:00 A | 2026-03-16 10:30 A | 2079 | 100% |  |  |  |  | start no earlier than 2026-02-27 08:00 | Зорькин В | 0.5h | 0.5h |
| 2081 | 5.13.6 | доставка |  | 10d | 2026-04-23 09:00 A | 2026-05-06 18:00 A | 2080 | 100% |  |  |  |  | start no earlier than 2026-04-23 09:00 | Карабанов | 80h | 80h |
| 2082 | 5.13.7 | проверка черетежей / подготовка к сборке |  | 1h | 2026-10-12 09:00 A | 2026-10-12 10:00 A |  | 100% |  |  |  |  | start no earlier than 2026-10-12 09:00 | Труфанов А; Зорькин В | 2h | 2h |
| 2083 | 5.13.8 | сборка | manual | 2d | 2026-10-16 09:00 A | 2026-10-17 18:00 A | 2081, 2082 | 100% |  |  |  |  | start no earlier than 2026-10-16 09:00 | Макаревич А; Труфанов А | 32h | 32h |
| 2084 | 5.13.9 | сборка шибер |  | 1d? | 2026-10-16 09:00 A | 2026-10-16 18:00 A |  | 100% |  |  |  |  | start no earlier than 2026-10-16 09:00 | Макаревич А | 8h | 8h |
| 2085 | 5.13.10 | покраска рама |  | 1d? | 2026-10-17 09:00 A | 2026-10-17 18:00 A |  | 100% |  |  |  |  | start no earlier than 2026-10-17 09:00 | Бундин В | 8h | 8h |
| 2086 | 5.13.11 | сборка крышка с крепеж для магнита |  | 1d? | 2026-10-19 09:00 A | 2026-10-19 18:00 A |  | 100% |  |  |  |  | start no earlier than 2026-10-19 08:00 | Труфанов А | 8h | 8h |
| 2087 | 5.13.12 | доработка / перевоз бункера / монтаж |  | 4h | 2026-10-20 09:00 A | 2026-10-20 13:00 A |  | 100% |  |  |  |  | start no earlier than 2026-10-20 09:00 | Труфанов А | 4h | 4h |
| 2088 | 5.14 | Закрепить табличку с графиком работы цеха, взять в кабинете у мастеров, можно присверлить, но аккуратно, посмотреть варианты крепляния на других цехах |  | 1h | 2026-10-12 09:00 A | 2026-10-12 10:00 A |  | 100% |  |  |  |  | start no earlier than 2026-10-12 08:00 | Бундин В | 1h | 1h |
| 2089 | 5.15 | Выбрать болеменее нормальные балки 2 шт для стеллажей лежат рядом с 5а в углу и закрепить их по аналогу других балок |  | 2h | 2026-10-13 09:00 A | 2026-10-13 11:00 A |  | 100% |  |  |  |  | start no earlier than 2026-10-13 09:00 | Макаревич А; Труфанов А | 4h | 4h |
| 2090 | 5.16 | **сборка полок для стеллажей архив бухгалтерии** |  | 8d? | 2026-10-22 09:00 | 2026-11-02 18:00 |  |  |  |  | 95.59d |  |  |  | 24h |  |
| 2091 | 5.16.1 | контроль доставка материал |  | 1d? | 2026-10-22 09:00 | 2026-10-22 18:00 |  |  |  |  | 100.59d | 5d | start no earlier than 2026-10-22 09:00 | Зорькин В | 8h |  |
| 2092 | 5.16.2 | сборка полок для стеллажей архив бухгалтерии |  | 1d? | 2026-11-02 09:00 | 2026-11-02 18:00 | 2091FS+1d |  |  |  | 95.59d |  | start no earlier than 2026-11-02 09:00 | Тимофеев В; Николаев | 16h |  |
| 2093 | 5.17 | **монтаж тепловые пушки подвесные 5 цех** |  | 86d | 2026-08-21 09:00 A | 2026-12-01 18:00 |  | 36% | 55.04d |  | 70.59d |  |  |  | 41h | 9h |
| 2094 | 5.17.1 | составить схему монтажа |  | 4h | 2026-08-26 09:00 A | 2026-08-26 13:00 A |  | 100% |  |  |  |  | start no earlier than 2026-08-26 09:00 | Зорькин В | 4h | 4h |
| 2095 | 5.17.2 | заявка на тепловые пушки вулкан |  | 2h | 2026-08-21 09:00 A | 2026-08-21 11:00 A |  | 100% |  |  |  |  | start no earlier than 2026-08-21 09:00 | Зорькин В | 2h | 2h |
| 2096 | 5.17.3 | контроль остатки нерж труба, фтинги |  | 2h | 2026-09-07 09:00 A | 2026-09-07 11:00 A | 2095 | 100% |  |  |  |  | start no earlier than 2026-09-07 09:00 | Зорькин В | 2h | 2h |
| 2097 | 5.17.4 | контроль доставки |  | 1h | 2026-09-21 09:00 A | 2026-09-21 10:00 A | 2096FS+7d | 100% |  |  |  |  | start no earlier than 2026-09-21 09:00 | Зорькин В | 1h | 1h |
| 2098 | 5.17.5 | монтаж |  | 2d | 2026-11-30 09:00 | 2026-12-01 18:00 | 2097FS+1d |  |  |  | 70.59d |  | start no earlier than 2026-11-30 09:00 | Некрасов А; Труфанов А | 32h |  |
| 2099 | 5.18 | на 2 этаж раковина Установка смесителей (краны) с гибкой подводкой, получить на складе |  | 1h | 2026-09-21 09:00 A | 2026-09-21 10:00 A |  | 100% |  |  |  |  | start no earlier than 2026-09-21 09:00 | Некрасов А | 1h | 1h |
| 2100 | 5.19 | ремонт дека от вибросито |  | 3h | 2026-09-12 09:00 A | 2026-09-12 12:00 A |  | 100% |  |  |  |  | start no earlier than 2026-09-12 09:00 | Макаревич А | 3h | 3h |

| ID | WBS | Task | Type | Duration | Start | Finish | Predecessors | Complete | Remaining | Total slack | Free slack | Constraint | Resources | Work | Actual work |
| --- | --- | --- | --- | --- | --- | --- | --- | --- | --- | --- | --- | --- | --- | --- | --- |
| 2101 | 5.20 | **установить зажим троса на тельфер** |  | 75d? | 2026-09-03 09:00 A | 2026-11-27 18:00 A |  | 100% |  |  |  |  |  | 16.5h | 16.5h |
| 2102 | 5.20.1 | заявка |  | 15min | 2026-09-03 09:00 A | 2026-09-03 09:15 A |  | 100% |  |  |  | start no earlier than 2026-09-03 09:00 | Зорькин В | 0.25h | 0.25h |
| 2103 | 5.20.2 | контроль доставки |  | 15min | 2026-10-28 09:00 A | 2026-10-28 09:15 A | 1258FS+5d | 100% |  |  |  | start no earlier than 2026-10-28 09:00 | Зорькин В | 0.25h | 0.25h |
| 2104 | 5.20.3 | монтаж (узнать у Артема) |  | 1d? | 2026-11-27 09:00 A | 2026-11-27 18:00 A | 1259FS+1d, 2103FS+1d | 100% |  |  |  | start no earlier than 2026-11-27 09:00 | Макаревич А; Некрасов А | 16h | 16h |
| 2105 | 5.21 | **ремонт насос водоснабжения** |  | 70.25d | 2026-09-03 09:00 A | 2026-11-23 11:00 A |  | 100% |  |  |  |  |  | 4.5h | 4.5h |
| 2106 | 5.21.1 | перекрутить американку для удобного обслуживания |  | 2h | 2026-11-23 09:00 A | 2026-11-23 11:00 A |  | 100% |  |  |  | start no earlier than 2026-11-26 09:00 | Макаревич А | 2h | 2h |
| 2107 | 5.21.2 | Сказать параметры, шильдик насосной станции передать зорькину |  | 15min | 2026-09-03 09:00 A | 2026-09-03 09:15 A |  | 100% |  |  |  | start no earlier than 2026-09-03 09:00 | Тимофеев В | 0.25h | 0.25h |
| 2108 | 5.21.3 | конртроль поставки |  | 15min | 2026-09-10 09:00 A | 2026-09-10 09:15 A | 2107 | 100% |  |  |  | start no earlier than 2026-09-10 09:00 | Зорькин В | 0.25h | 0.25h |
| 2109 | 5.21.4 | замена |  | 1h | 2026-09-11 09:15 A | 2026-09-11 10:15 A | 2108FS+1d | 100% |  |  |  | start no earlier than 2026-09-11 09:00 | Некрасов А; Макаревич А | 2h | 2h |
| 2110 | 5.22 | воставноить заземление на обоих ситах |  | 2h | 2026-09-04 09:00 A | 2026-09-04 11:00 A |  | 100% |  |  |  | start no earlier than 2026-09-04 09:00 | Бобренок В | 2h | 2h |
| 2111 | 5.23 | востановить контакт пульт тельфера у стены (переменный контакт при движении кабеля у пульта) |  | 1h | 2026-09-03 09:00 A | 2026-09-03 10:00 A |  | 100% |  |  |  | start no earlier than 2026-09-03 08:00 | Бобренок В | 1h | 1h |
| 2112 | 5.24 | подключить Олегу сварочный автомат |  | 1h | 2026-08-31 09:00 A | 2026-08-31 10:00 A |  | 100% |  |  |  | start no earlier than 2026-08-31 09:00 | Тимофеев В | 1h | 1h |
| 2113 | 5.25 | **подготовить сетку на мал дробилку 3 и 4мм** |  | 11.12d | 2026-09-12 09:00 A | 2026-09-23 10:00 A |  | 100% |  |  |  |  |  | 1.5h | 1.5h |
| 2114 | 5.25.1 | проверка отстатков сетки на складах |  | 30min | 2026-09-12 09:00 A | 2026-09-12 09:30 A |  | 100% |  |  |  | start no earlier than 2026-09-12 09:00 | Макаревич А | 0.5h | 0.5h |
| 2115 | 5.25.2 | вырезатиь сетку в размер |  | 1h | 2026-09-23 09:00 A | 2026-09-23 10:00 A | 2114FS+1d | 100% |  |  |  | start no earlier than 2026-09-29 09:00 | Тимофеев В | 1h | 1h |
| 2116 | 5.26 | ревизия шнека |  | 3h | 2026-08-17 09:00 A | 2026-08-17 12:00 A |  | 100% |  |  |  | start no earlier than 2026-08-17 09:00 | Бобренок В; Некрасов А | 6h | 6h |
| 2117 | 5.27 | **свет в туалет передать крепление светильника** |  | 1.12d | 2026-08-14 09:00 A | 2026-08-17 10:00 A |  | 100% |  |  |  |  |  | 2.25h | 2.25h |
| 2118 | 5.27.1 | проверить наличие светильника с боковым монтажем |  | 15min | 2026-08-14 09:00 A | 2026-08-14 09:15 A |  | 100% |  |  |  | start no earlier than 2026-08-14 09:00 | Домоводов К | 0.25h | 0.25h |
| 2119 | 5.27.2 | замена светильника / или закрепить |  | 1h | 2026-08-17 09:00 A | 2026-08-17 10:00 A | 2118 | 100% |  |  |  | start no earlier than 2026-08-15 09:00 | Бундин В | 1h | 1h |
| 2120 | 5.27.3 | закрепить светильник в коридоре -вход в туалет |  | 1h | 2026-08-17 09:00 A | 2026-08-17 10:00 A |  | 100% |  |  |  | start no earlier than 2026-08-17 09:00 | Бундин В | 1h | 1h |
| 2121 | 5.28 | трещина вибросито №2 1см ремонт |  | 6h | 2026-08-27 09:00 A | 2026-08-27 16:00 A |  | 100% |  |  |  | start no earlier than 2026-08-27 09:00 | Макаревич А | 6h | 6h |
| 2122 | 5.29 | трещина вибросито №1 кольцо. ремонт |  | 4h | 2026-08-28 09:00 A | 2026-08-28 13:00 A |  | 100% |  |  |  | start no earlier than 2026-08-28 09:00 | Макаревич А | 4h | 4h |
| 2123 | 5.30 | **проект новая дробилка** |  | 40.03d | 2026-08-21 09:00 A | 2026-10-06 09:15 |  | 17% | 33.37d | 116.56d |  |  |  | 144.25h | 24h |
| 2124 | 5.30.1 | **кабель для доп мощности** |  | 40.03d | 2026-08-21 09:00 A | 2026-10-06 09:15 |  | 17% | 33.37d | 116.56d |  |  |  | 144.25h | 24h |
| 2125 | 5.30.1.1 | составить ТЗ на монтаж кабеля |  | 3d | 2026-08-21 09:00 A | 2026-08-25 18:00 A |  | 100% |  |  |  | start no earlier than 2026-08-21 09:00 | Домоводов К | 24h | 24h |
| 2126 | 5.30.1.2 | получить КП / счет договор | milestone | 0d | 2026-09-09 09:00 | 2026-09-09 09:00 | 2125FS+2d |  |  | 116.56d | 0d | start no earlier than 2026-09-09 09:00 | Домоводов К |  |  |
| 2127 | 5.30.1.3 | предоплата |  | 15min | 2026-09-10 09:00 | 2026-09-10 09:15 | 2126FS+1d |  |  | 116.56d | 0d | start no earlier than 2026-08-10 08:00 | Домоводов К | 0.25h |  |
| 2128 | 5.30.1.4 | монтаж |  | 15d | 2026-09-20 09:15 | 2026-10-06 09:15 | 2127FS+10d |  |  | 116.56d |  | start no earlier than 2026-08-10 08:00 | Подрядчик | 120h |  |

| ID | WBS | Task | Type | Duration | Start | Finish | Predecessors | Complete | Remaining | Total slack | Constraint | Resources | Work | Actual work |
| --- | --- | --- | --- | --- | --- | --- | --- | --- | --- | --- | --- | --- | --- | --- |
| 2129 | 5.31 | **монтаж вода в 5ц** |  | 64.01d | 2026-08-10 08:00 A | 2026-10-26 09:05 |  | 96% | 2.66d | 101.58d |  |  | 128.08h | 125.08h |
| 2130 | 5.31.1 | Подключение греющего кабеля |  | 3h | 2026-09-16 09:00 A | 2026-09-16 12:00 A |  | 100% |  |  | start no earlier than 2026-09-16 09:00 | Некрасов А; Труфанов А | 6h | 6h |
| 2131 | 5.31.2 | подклюючить воду на прямую |  | 2h | 2026-09-14 09:00 A | 2026-09-14 11:00 A |  | 100% |  |  | start no earlier than 2026-09-15 09:00 | Тимофеев В | 2h | 2h |
| 2132 | 5.31.3 | Все доделать/подключить |  | 6h | 2026-09-18 09:00 A | 2026-09-18 16:00 A |  | 100% |  |  | start no earlier than 2026-09-18 09:00 | Труфанов А; Некрасов А | 12h | 12h |
| 2133 | 5.31.4 | установить в конце линии расширительный бак / защита от гидроудара |  | 2h | 2026-09-21 09:00 A | 2026-09-21 11:00 A |  | 100% |  |  | start no earlier than 2026-09-21 09:00 | Труфанов А; Некрасов А | 4h | 4h |
| 2134 | 5.31.5 | Установка точек воды для пожврного гидранта и набора воды для поломоечной машинки цех 3,4,5а и 5 |  | 6h | 2026-09-22 09:00 A | 2026-09-22 16:00 A |  | 100% |  |  | start no earlier than 2026-09-22 09:00 | Труфанов А; Некрасов А | 12h | 12h |
| 2135 | 5.31.6 | переключение линии "без бачка" |  | 2h | 2026-09-22 09:00 A | 2026-09-22 11:00 A | 2133 | 100% |  |  | start no earlier than 2026-09-22 09:00 | Труфанов А; Некрасов А | 4h | 4h |
| 2136 | 5.31.7 | тестирование системы |  | 2h | 2026-09-21 09:00 A | 2026-09-21 11:00 A | 2135 | 100% |  |  | start no earlier than 2026-09-18 08:00 | Труфанов А; Некрасов А | 4h | 4h |
| 2137 | 5.31.8 | выяснить возможность обмена тройников 1+1/4-1/2 на 3/4-1/2 |  | 15min | 2026-09-21 09:00 A | 2026-09-21 09:15 A |  | 100% |  |  | start no earlier than 2026-09-21 09:00 | Зорькин В | 0.25h | 0.25h |
| 2138 | 5.31.9 | Прокнуть греющий кабель | manual | 3h | 2026-09-16 09:00 A | 2026-09-16 12:00 A |  | 100% |  |  |  | Некрасов А; Труфанов А | 6h | 6h |
| 2139 | 5.31.10 | **монтаж трассы по 3ц** |  | 4.5d | 2026-08-11 09:00 A | 2026-08-17 13:00 A |  | 100% |  |  |  |  | 16.5h | 16.5h |
| 2140 | 5.31.10.1 | заявка хомуты сантех - получить дату поставки |  | 15min | 2026-08-11 09:00 A | 2026-08-11 09:15 A |  | 100% |  |  | start no earlier than 2026-08-11 09:00 | Домоводов К | 0.25h | 0.25h |
| 2141 | 5.31.10.2 | контроль доставки |  | 15min | 2026-08-14 09:15 A | 2026-08-14 09:30 A | 2140FS+3d | 100% |  |  | start no earlier than 2026-08-10 08:00 | Зорькин В | 0.25h | 0.25h |
| 2142 | 5.31.10.3 | монтаж продложть |  | 4h | 2026-08-14 09:30 A | 2026-08-14 14:30 A | 2141 | 100% |  |  | start no earlier than 2026-08-10 08:00 | Некрасов А; Бундин В | 8h | 8h |
| 2143 | 5.31.10.4 | монтаж продложть |  | 4h | 2026-08-17 09:00 A | 2026-08-17 13:00 A | 2141 | 100% |  |  | start no earlier than 2026-08-17 09:00 | Некрасов А; Бобренок В | 8h | 8h |
| 2144 | 5.31.11 | **монтаж труба в земле между 3 и 4ц- УЗО на грей кабель** |  | 64.01d | 2026-08-10 08:00 A | 2026-10-26 09:05 |  | 75% | 15.89d | 101.58d |  |  | 19.08h | 16.08h |
| 2145 | 5.31.11.1 | монтаж ф32 в ф40 |  | 4h | 2026-08-10 08:00 A | 2026-08-10 13:00 A |  | 100% |  |  | start no earlier than 2026-08-10 08:00 | Некрасов А; Макаревич А | 8h | 8h |
| 2146 | 5.31.11.2 | заявка греющий кабель внтуреннего монтажа + |  | 1h | 2026-08-11 09:00 A | 2026-08-11 10:00 A | 2145 | 100% |  |  | start no earlier than 2026-08-11 09:00 | Домоводов К | 1h | 1h |
| 2147 | 5.31.11.3 | заявка защита УЗО |  | 1h | 2026-08-24 09:00 A | 2026-08-24 10:00 A |  | 100% |  |  | start no earlier than 2026-08-24 09:00 | Зорькин В | 1h | 1h |
| 2148 | 5.31.11.4 | контоль доставка |  | 5min | 2026-10-26 09:00 A | 2026-10-26 09:05 A | 2146FS+5d, 2147 | 100% |  |  | start no earlier than 2026-10-26 09:00 | Зорькин В | 0.08h | 0.08h |
| 2149 | 5.31.11.5 | монтаж кабеля |  | 3h | 2026-09-16 12:00 A | 2026-09-16 16:00 A | 2148FS+1d, 2130 | 100% |  |  | start no earlier than 2026-09-16 09:00 | Некрасов А; Макаревич А | 6h | 6h |
| 2150 | 5.31.11.6 | монтаж щиток кабеля с УЗО |  | 3h | 2026-09-14 09:00 | 2026-09-14 12:00 |  |  |  | 137.22d | start no earlier than 2026-09-14 09:00 | Дедов В | 3h |  |
| 2151 | 5.31.12 | **монтаж трассы по воздуху м/д 4 и 5А** |  | 9.5d | 2026-08-11 09:00 A | 2026-08-24 13:00 A |  | 100% |  |  |  |  | 9.25h | 9.25h |
| 2152 | 5.31.12.1 | подготовка материал |  | 1h | 2026-08-11 09:00 A | 2026-08-11 10:00 A |  | 100% |  |  | start no earlier than 2026-08-11 09:00 | Некрасов А; Макаревич А | 1h | 1h |
| 2153 | 5.31.12.2 | контроль поставки рым 10 |  | 15min | 2026-08-21 09:00 A | 2026-08-21 09:15 A |  | 100% |  |  | start no earlier than 2026-08-21 09:00 | Зорькин В | 0.25h | 0.25h |
| 2154 | 5.31.12.3 | монтаж |  | 4h | 2026-08-24 09:00 A | 2026-08-24 13:00 A | 2153 | 100% |  |  | start no earlier than 2026-08-24 09:00 | Некрасов А; Тимофеев В | 8h | 8h |
| 2155 | 5.31.13 | монтаж щиток греющего кабеля по воздуху |  | 4h | 2026-09-16 09:00 A | 2026-09-16 13:00 A |  | 100% |  |  | start no earlier than 2026-09-16 09:00 | Труфанов А | 4h | 4h |
| 2156 | 5.31.14 | монтаж трассы по 4ц |  | 6h | 2026-08-18 09:00 A | 2026-08-18 16:00 A | 2141 | 100% |  |  | start no earlier than 2026-08-18 09:00 | Некрасов А; Макаревич А | 11h | 11h |
| 2157 | 5.31.15 | монтаж трассы по 5ц |  | 4h | 2026-08-19 09:00 A | 2026-08-19 13:00 A | 2156 | 100% |  |  | start no earlier than 2026-08-19 09:00 | Некрасов А; Макаревич А | 8h | 8h |
| 2158 | 5.31.16 | монтаж трассы по 5ц |  | 6h | 2026-08-24 09:00 A | 2026-08-24 16:00 A | 2156 | 100% |  |  | start no earlier than 2026-08-24 09:00 | Некрасов А; Макаревич А | 10h | 10h |
| 2159 | 5.32 | замена светильника перегоревшего у Большакова в кабинете |  | 2h | 2026-08-06 09:00 A | 2026-08-06 11:00 A |  | 100% |  |  | start no earlier than 2026-08-07 09:00 | Труфанов А | 2h | 2h |
| 2160 | 5.33 | устранить утечку воды в душе |  | 1h | 2026-08-06 09:00 A | 2026-08-06 10:00 A |  | 100% |  |  | start no earlier than 2026-08-06 08:00 | Бундин В | 1h | 1h |

| ID | WBS | Task | Type | Duration | Start | Finish | Complete | Actual finish | Constraint | Resources | Work | Actual work |
| --- | --- | --- | --- | --- | --- | --- | --- | --- | --- | --- | --- | --- |
| 2161 | 5.34 | **установить унитаз на 3 этаже** |  | 3.38d? | 2026-08-04 09:00 A | 2026-08-07 12:00 A | 100% |  |  | Бобренок В | 38h | 38h |
| 2162 | 5.34.1 | заказать гофру и гибкую вставку |  | 1d? | 2026-08-04 09:00 A | 2026-08-04 18:00 A | 100% |  | start no earlier than 2026-08-04 08:00 | Шуранов Ю | 8h | 8h |
| 2163 | 5.34.2 | установка унитаза (гофротруба и гибкая подводка и коронка у Большакова) коронку вернуть Большакову |  | 3h | 2026-08-07 09:00 A | 2026-08-07 12:00 A | 100% |  | start no earlier than 2026-08-07 09:00 | Труфанов А | 3h | 3h |
| 2164 | 5.35 | монтаж свет в туалете 3 этаж (оператора дадут в помощь) | manual | 6h | 2026-08-09 09:00 A | 2026-08-09 16:00 A | 100% |  | start no earlier than 2026-08-09 09:00 | Бобренок В | 6h | 6h |
| 2165 | 5.36 | прикрутить смотровые окна на дробилке, не хватает саморезов- просыпается сырье |  | 1h | 2026-08-02 09:00 A | 2026-08-03 10:00 A | 100% |  | start no earlier than 2026-08-02 09:00 | Макаревич А | 1h | 1h |
| 2166 | 5.37 | сборка ограничиетелей на сетку №2 для сито из лазера |  | 4h | 2026-07-17 09:00 A | 2026-07-17 13:00 A | 100% |  | start no earlier than 2026-07-17 09:00 | Макаревич А | 4h | 4h |
| 2167 | 5.38 | ремонт сетки, хомуты с 5ц |  | 2h | 2026-07-15 09:00 A | 2026-07-15 11:00 A | 100% |  | start no earlier than 2026-07-15 09:00 | Бундин В | 2h | 2h |
| 2168 | 5.39 | вырезать сетку 2мм на большую дробилку |  | 2h | 2026-07-15 09:00 A | 2026-07-15 11:00 A | 100% |  | start no earlier than 2026-07-15 09:00 | Бобренок В | 2h | 2h |
| 2169 | 5.40 | заменаить ножи на мал дробилке |  | 6h | 2026-07-06 08:00 A | 2026-07-06 16:00 A | 100% |  | start no earlier than 2026-07-06 08:00 | Дедов В | 6h | 6h |
| 2170 | 5.41 | заварить хомут от деко 5 ц. в слесарке |  | 2h | 2026-07-11 09:00 A | 2026-07-13 11:00 A | 100% |  | start no earlier than 2026-07-11 09:00 | Макаревич А | 2h | 2h |
| 2171 | 5.42 | Дефектовка кнопок растаривателя, ремонт, клинит кнопку |  | 30min | 2026-07-06 08:00 A | 2026-07-06 09:30 A | 100% |  | start no earlier than 2026-07-06 08:00 | Дедов В | 0.5h | 0.5h |
| 2172 | 5.43 | сито просечка с лазера - доплнить 4шт до 6-8 уголоков ограничителей. |  | 2h | 2026-06-26 08:00 A | 2026-06-26 11:00 A | 100% |  | start no earlier than 2026-06-26 08:00 | Макаревич А | 2h | 2h |
| 2173 | 5.44 | просечки нерж. наварить уголки, чтобы не падало внутрь |  | 2h | 2026-06-25 08:00 A | 2026-06-25 11:00 A | 100% |  | start no earlier than 2026-06-25 08:00 | Макаревич А | 2h | 2h |
| 2174 | 5.45 | на поворотную кнопку реверса шнека №1 установить бокс (взять на складе) |  | 1h | 2026-06-24 09:00 A | 2026-06-24 10:00 A | 100% |  | start no earlier than 2026-06-24 09:00 | Труфанов А | 1h | 1h |
| 2175 | 5.46 | развернуть ножи на большой дробилке, если не успеваем передаем по смене |  | 3h | 2026-06-23 08:00 A | 2026-06-23 12:00 A | 100% |  | start no earlier than 2026-06-23 08:00 | Труфанов А; Макаревич А | 6h | 6h |
| 2176 | 5.47 | **протянуть все болтовые соединения: шиберы растаривателей, металлоконструкции под бункера и т.д. если нет болта - прикручиваем** |  | 3h? | 2026-06-23 09:00 A | 2026-06-23 12:00 | 100% | 2026-06-23 18:00 |  | Труфанов А | 11h | 11h |
| 2177 | 5.47.1 | заказать краску |  | 1d? | 2026-06-23 09:00 A | 2026-06-23 18:00 A | 100% |  | start no earlier than 2026-06-23 08:00 | Шуранов Ю | 8h | 8h |
| 2178 | 5.48 | проверить откуда гайку нашли на магните, растариватель-дробилка -шнеки -крепление магнитов |  | 1h | 2026-06-22 09:00 A | 2026-06-22 10:00 A | 100% |  | start no earlier than 2026-06-22 08:00 | Бундин В | 1h | 1h |
| 2179 | 5.49 | **закрепить штурвал на растаривателе 1** |  | 1d? | 2026-06-23 09:00 A | 2026-06-23 18:00 A | 100% |  |  | Бундин В | 16h | 16h |
| 2180 | 5.49.1 | заказываем растариватель |  | 1d? | 2026-06-23 09:00 A | 2026-06-23 18:00 A | 100% |  | start no earlier than 2026-06-23 09:00 | Шуранов Ю | 8h | 8h |
| 2181 | 5.50 | заварить просеиватель ближе к стеллажам и на правом (расскажу как) |  | 3h | 2026-06-11 09:00 A | 2026-06-11 12:00 A | 100% |  | start no earlier than 2026-06-11 09:00 | Бундин В | 3h | 3h |
| 2182 | 5.51 | ремонт просечку с вибросито, передать в 5ц |  | 2h | 2026-06-12 09:00 A | 2026-06-12 11:00 A | 100% |  | start no earlier than 2026-06-12 09:00 | Бундин В | 2h | 2h |
| 2183 | 5.52 | ремонт хомут с вибросито |  | 2h | 2026-06-05 09:00 A | 2026-06-05 11:00 A | 100% |  | start no earlier than 2026-06-05 08:00 | Бундин В | 2h | 2h |
| 2184 | 5.53 | заварить хомут от деко 5 ц. в слесарке |  | 2h | 2026-07-14 09:00 A | 2026-07-14 11:00 A | 100% |  | start no earlier than 2026-07-14 09:00 | Бундин В | 2h | 2h |

| ID | WBS | Task | Duration | Start | Finish | Predecessors | Complete | Remaining | Total slack | Free slack | Constraint | Resources | Work | Actual work |
| --- | --- | --- | --- | --- | --- | --- | --- | --- | --- | --- | --- | --- | --- | --- |
| 2185 | 5.54 | **востановить коробку тельфера** | 186.25d | 2026-06-04 09:00 A | 2027-02-02 11:00 |  | 59% | 76.33d | 26.34d |  |  |  | 5.08h | 3h |
| 2186 | 5.54.1 | найти производителя тельфера и выяснить марку коробку / найти в продаже подходящий артикул | 2h | 2026-06-04 09:00 A | 2026-06-04 11:00 A |  | 100% |  |  |  | start no earlier than 2026-06-04 09:00 | Шуранов Ю | 2h | 2h |
| 2187 | 5.54.2 | заявка | 1h | 2026-06-05 09:00 A | 2026-06-05 10:00 A |  | 100% |  |  |  | start no earlier than 2026-06-05 09:00 | Шуранов Ю | 1h | 1h |
| 2188 | 5.54.3 | доставка контроль | 5min | 2026-09-18 09:00 | 2026-09-18 09:05 |  |  |  | 133.33d | 106.99d | start no earlier than 2026-09-18 09:00 | Домоводов К | 0.08h |  |
| 2189 | 5.54.4 | замена | 2h | 2027-02-02 09:00 | 2027-02-02 11:00 | 2188 |  |  | 26.34d |  | start no earlier than 2027-02-02 09:00 | Некрасов А | 2h |  |
| 2190 | 5.55 | замена пускатель тельфер 24дц / найти/изготовить + установить крышку контакторов / доработать крепеж кабеля к тросу | 1h | 2026-05-27 09:00 A | 2026-05-27 10:00 A |  | 100% |  |  |  | start no earlier than 2026-05-27 09:00 | Некрасов А; Бундин В | 2h | 2h |
| 2191 | 5.56 | проверка всех банок АКБ штабелера / замена неисправных | 2h | 2026-05-30 09:00 A | 2026-06-01 11:00 A |  | 100% |  |  |  | start no earlier than 2026-05-30 09:00 | Бобренок В | 2h | 2h |
| 2192 | 5.57 | посмотреть что с тельфером на дробилке | 1h | 2026-05-26 09:00 A | 2026-05-26 10:00 A |  | 100% |  |  |  | start no earlier than 2026-05-26 09:00 | Некрасов А | 1h | 1h |
| 2193 | 5.58 | приварить магниты на сито | 0.5h | 2026-05-26 09:00 A | 2026-05-26 09:30 A |  | 100% |  |  |  | start no earlier than 2026-05-26 09:00 | Некрасов А | 0.5h | 0.5h |
| 2194 | 5.59 | заварить растариватель №2 | 4h | 2026-05-25 08:00 A | 2026-05-25 13:00 A |  | 100% |  |  |  | start no earlier than 2026-05-25 08:00 | Тимофеев В; Некрасов А | 7h | 7h |
| 2195 | 5.60 | уложить красиво кабель в гофре зона дробилки | 1h | 2026-05-19 09:00 A | 2026-05-19 10:00 A |  | 100% |  |  |  | start no earlier than 2026-05-19 09:00 | Бундин В; Некрасов А | 2h | 2h |
| 2196 | 5.61 | заварить 2 просечки от сито и отправить все на 5 цех | 1h | 2026-05-19 09:00 A | 2026-05-19 10:00 A |  | 100% |  |  |  | start no earlier than 2026-05-19 09:00 | Бундин В | 1h | 1h |
| 2197 | 5.62 | сделать дублирующий пост (вкл. И выкл. Смесителя) на мезонине дробилки | 4h | 2026-05-18 08:00 A | 2026-05-18 13:00 A |  | 100% |  |  |  | start no earlier than 2026-05-18 08:00 | Дедов В | 4h | 4h |
| 2198 | 5.63 | прошприцевать сам двигатель дробилки | 1h | 2026-05-19 09:00 A | 2026-05-19 10:00 A |  | 100% |  |  |  | start no earlier than 2026-05-19 09:00 | Некрасов А; Бундин В | 2h | 2h |
| 2199 | 5.64 | **сборка схемы блокировки дробилки при открытом люке** | 7.25d? | 2026-05-17 09:00 A | 2026-05-27 11:00 A |  | 100% |  |  |  |  |  | 17h | 17h |
| 2200 | 5.64.1 | монтаж кабель | 4h | 2026-05-17 09:00 A | 2026-05-18 13:00 A |  | 100% |  |  |  | start no earlier than 2026-05-17 09:00 | Макаревич А | 4h | 4h |
| 2201 | 5.64.2 | сборка схема | 2h | 2026-05-27 09:00 A | 2026-05-27 11:00 A | 2200 | 100% |  |  |  | start no earlier than 2026-05-27 09:00 | Дедов В | 2h | 2h |
| 2202 | 5.64.3 | заказать концевики | 1d? | 2026-05-25 09:00 A | 2026-05-25 18:00 A |  | 100% |  |  |  | start no earlier than 2026-05-25 08:00 | Шуранов Ю | 8h | 8h |
| 2203 | 5.64.4 | доделать схему блокировки- концевики LA167-Z8/122 на складе | 3h | 2026-05-26 09:00 A | 2026-05-26 12:00 A |  | 100% |  |  |  | start no earlier than 2026-05-26 09:00 | Дедов В | 3h | 3h |
| 2204 | 5.65 | проверка центровки мотора после замены подшипнка + замена подшипник задний | 4h | 2026-05-12 08:00 A | 2026-05-12 13:00 A |  | 100% |  |  |  | start no earlier than 2026-05-12 08:00 | Тимофеев В; Бобренок В | 8h | 8h |
| 2205 | 5.66 | заварить сито | 2h | 2026-05-08 08:00 A | 2026-05-08 11:00 A |  | 100% |  |  |  | start no earlier than 2026-05-08 08:00 | Макаревич А | 2h | 2h |
| 2206 | 5.67 | закрепить штурвал, чтобы не болтался на растаривателе 1 | 1h | 2026-05-08 08:00 A | 2026-05-08 10:00 A |  | 100% |  |  |  | start no earlier than 2026-05-08 08:00 | Макаревич А | 1h | 1h |
| 2207 | 5.68 | посмотреть компрессор (если проблема в предохранителе- то взять у меня на столе)пароль8989 | 1h | 2026-05-08 08:00 A | 2026-05-08 10:00 A |  | 100% |  |  |  | start no earlier than 2026-05-08 08:00 | Дедов В | 1h | 1h |
| 2208 | 5.69 | проверить на 2х котлах давление в системе отопления- где нужно долить воды. И слить воду система отопления 5а цех | 2h | 2026-05-06 08:00 A | 2026-05-06 11:00 A |  | 100% |  |  |  | start no earlier than 2026-05-06 08:00 | Бобренок В | 2h | 2h |

| ID | WBS | Task | Type | Duration | Start | Finish | Predecessors | Complete | Actual start | Actual finish | Total slack | Constraint | Resources | Work | Actual work |
| --- | --- | --- | --- | --- | --- | --- | --- | --- | --- | --- | --- | --- | --- | --- | --- |
| 2209 | 5.70 | **ремонт сито (попробовать заклеить эпоксидкой) / ремонт у производсителя** |  | 13d | 2026-05-13 09:00 A | 2026-05-29 18:00 A |  | 100% |  |  |  |  |  | 0.75h | 0.75h |
| 2210 | 5.70.1 | отправить сито на ремонт производителю |  | 30min | 2026-05-13 09:00 A | 2026-05-13 09:30 A |  | 100% |  |  |  | start no earlier than 2026-05-13 09:00 | Шуранов Ю | 0.5h | 0.5h |
| 2211 | 5.70.2 | контроль доставки |  | 15min | 2026-05-29 17:45 A | 2026-05-29 18:00 A | 2210SF+15d | 100% |  |  |  | start no earlier than 2026-05-12 08:00 | Шуранов Ю | 0.25h | 0.25h |
| 2212 | 5.71 | зачистить приемный бункер после дробилке болгаркой |  | 1h | 2026-04-30 08:00 A | 2026-04-30 10:00 A |  | 100% |  |  |  | start no earlier than 2026-04-30 08:00 | Дедов В | 1h | 1h |
| 2213 | 5.72 | **ремонт стиральной машинки / шум подшипника** |  | 1d? | 2026-04-27 09:00 | 2026-04-27 18:00 |  |  |  |  | 239.59d |  |  | 8h |  |
| 2214 | 5.72.1 | договор |  | 1d? | 2026-04-27 09:00 | 2026-04-27 18:00 |  |  |  |  | 239.59d | start no earlier than 2026-04-27 08:00 | Шуранов Ю | 8h |  |
| 2215 | 5.73 | **ремонт утечки с системы отопления** |  | 1.12d | 2026-05-04 09:00 | 2026-05-05 10:00 |  | 100% | 2026-05-07 09:00 | 2026-05-08 10:00 |  |  |  | 10h | 10h |
| 2216 | 5.73.1 | слив воды |  | 4h | 2026-05-07 09:00 A | 2026-05-07 13:00 A |  | 100% |  |  |  | start no earlier than 2026-05-07 09:00 | Макаревич А | 4h | 4h |
| 2217 | 5.73.2 | ремонт утечки |  | 2h | 2026-05-07 13:00 A | 2026-05-07 16:00 A | 2216 | 100% |  |  |  | start no earlier than 2026-04-27 08:00 | Макаревич А | 2h | 2h |
| 2218 | 5.73.3 | заправить воду / опресовать |  | 4h | 2026-05-07 15:00 A | 2026-05-08 10:00 A | 2217 | 100% |  |  |  | start no earlier than 2026-04-27 08:00 | Макаревич А | 4h | 4h |
| 2219 | 5.74 | долить в систему отопления воды цех 5а, электрокотел не включаем. Работаем на газ котле |  | 1h | 2026-04-24 09:00 A | 2026-04-24 10:00 A |  | 100% |  |  |  | start no earlier than 2026-04-24 08:00 | Бундин В | 1h | 1h |
| 2220 | 5.75 | вывезти шнек на синий склад |  | 1h | 2026-04-23 09:00 A | 2026-04-23 10:00 A |  | 100% |  |  |  | start no earlier than 2026-04-24 09:00 | Бобренок В; Тимофеев В | 2h | 2h |
| 2221 | 5.76 | взять на зажима для троса на складе и натянуть трос на воротах 5а |  | 2h | 2026-04-25 09:00 A | 2026-04-27 11:00 A |  | 100% |  |  |  | start no earlier than 2026-04-25 09:00 | Макаревич А | 2h | 2h |
| 2222 | 5.77 | убавить температуры на газ котлах |  | 1h | 2026-04-24 09:00 A | 2026-04-24 10:00 A |  | 100% |  |  |  | start no earlier than 2026-04-24 09:00 | Шуранов Ю | 1h | 1h |
| 2223 | 5.78 | заварить сито и хомуты |  | 1h | 2026-04-24 09:00 A | 2026-04-24 10:00 A |  | 100% |  |  |  | start no earlier than 2026-04-24 09:00 | Тимофеев В | 1h | 1h |
| 2224 | 5.79 | проверка вибросит детальный осмотр с полной разборкой / ремонт трещин |  | 4h | 2026-04-21 09:00 A | 2026-04-21 13:00 A |  | 100% |  |  |  | start no earlier than 2026-04-21 09:00 | Бундин В | 4h | 4h |
| 2225 | 5.80 | протяжка анкеров стеллажей, болтается |  | 2h | 2026-04-20 09:00 A | 2026-04-20 11:00 A |  | 100% |  |  |  | start no earlier than 2026-04-20 09:00 | Макаревич А | 2h | 2h |
| 2226 | 5.81 | замена потускневших ламп в инсекютере. Мастеру сообщить кол-во. б/у складывать в коробку |  | 2h | 2026-05-06 09:00 A | 2026-05-06 11:00 A |  | 100% |  |  |  | start no earlier than 2026-05-06 09:00 | Бобренок В | 2h | 2h |
| 2227 | 5.82 | переворачиваем молотки дробилка |  | 4h | 2026-04-15 09:00 A | 2026-04-15 13:00 A |  | 100% |  |  |  | start no earlier than 2026-04-17 08:00 | Макаревич А; Тимофеев В | 8h | 8h |
| 2228 | 5.83 | завершить работы по примыканию к кровли 5А (излишки изоспан) |  | 1d? | 2026-06-19 09:00 A | 2026-06-19 18:00 A |  | 100% |  |  |  | start no earlier than 2026-06-19 09:00 | Олег | 8h | 8h |
| 2229 | 5.84 | монтаж тамбур для завоза навесок |  | 10d | 2026-04-16 09:00 | 2026-04-29 18:00 |  |  |  |  | 237.59d | start no earlier than 2026-04-16 08:00 | Некрасов А; Олег | 160h |  |
| 2230 | 5.85 | вырезать верхушку еврокуба возле мусорки, будет туда засыпать отсев для дворника | manual | 1h | 2026-04-18 09:00 A | 2026-04-18 10:00 A |  | 100% |  |  |  | start no earlier than 2026-04-18 09:00 | Макаревич А | 1h | 1h |
| 2231 | 5.86 | заварить хомуты и сетки от сито |  | 1h | 2026-04-14 09:00 A | 2026-04-14 10:00 A |  | 100% |  |  |  | start no earlier than 2026-04-14 08:00 | Труфанов А | 1h | 1h |
| 2232 | 5.87 | проверить дист. Воду на штабелере, если нужно долить (фото модели акб) |  | 1h | 2026-04-13 09:00 A | 2026-04-13 10:00 A |  | 100% |  |  |  | start no earlier than 2026-04-13 08:00 | Бундин В | 1h | 1h |
| 2233 | 5.88 | установка шнека отремонтированного обратно на дробилку |  | 6h | 2026-04-21 09:00 A | 2026-04-21 16:00 A |  | 100% |  |  |  | start no earlier than 2026-04-21 09:00 | Некрасов А; Труфанов А | 12h | 12h |
| 2234 | 5.89 | установка бойлера отремонтированного в туалет, а с туалета на 2 этаж, мастер выделит человека в помощь |  | 4h | 2026-04-13 09:00 A | 2026-04-13 13:00 A |  | 100% |  |  |  | start no earlier than 2026-04-13 09:00 | Труфанов А | 4h | 4h |
| 2235 | 5.90 | замена паука на расстаривателе- высокие бэги не могут поднять до конца |  | 1h | 2026-04-10 08:00 A | 2026-04-10 10:00 A |  | 100% |  |  |  | start no earlier than 2026-04-10 08:00 | Тимофеев В | 1h | 1h |

| ID | WBS | Task | Type | Duration | Start | Finish | Predecessors | Complete | Actual start | Actual finish | Constraint | Resources | Work | Actual work |
| --- | --- | --- | --- | --- | --- | --- | --- | --- | --- | --- | --- | --- | --- | --- |
| 2236 | 5.91 | **получить насос Wilo, установить на 1 газовый котел** |  | 0.12d | 2026-04-10 09:00 A | 2026-04-10 10:00 A |  | 100% |  |  |  | Бундин В | 2h | 2h |
| 2237 | 5.91.1 | проверить направление подачи воды, посмотреть по аналогии 2 котла |  | 1h | 2026-04-10 09:00 A | 2026-04-10 10:00 A |  | 100% |  |  | start no earlier than 2026-04-10 09:00 | Тимофеев В | 1h | 1h |
| 2238 | 5.92 | ремот сеток с сито |  | 2h | 2026-04-06 09:00 A | 2026-04-06 11:00 A |  | 100% |  |  | start no earlier than 2026-04-06 08:00 | Труфанов А | 2h | 2h |
| 2239 | 5.93 | на выходах из сито №1 и №2 установить сетки с бортиками |  | 2h | 2026-04-06 09:00 A | 2026-04-06 11:00 A |  | 100% |  |  | start no earlier than 2026-04-06 08:00 | Труфанов А | 2h | 2h |
| 2240 | 5.94 | сыпит сырье с дробилки (вход) |  | 2h | 2026-06-15 09:00 A | 2026-06-15 11:00 A |  | 100% |  |  | start no earlier than 2026-06-13 09:00 | Некрасов А; Труфанов А | 4h | 4h |
| 2241 | 5.95 | востановить ручной штурвал заслонки на растаривателе дробилки |  | 1h | 2026-04-02 08:00 A | 2026-04-02 10:00 A |  | 100% |  |  | start no earlier than 2026-04-02 08:00 | Бобренок В | 1h | 1h |
| 2242 | 5.96 | изготовить штурвал заслонки на растариватель вибросита у стены |  | 2h | 2026-04-13 09:00 A | 2026-04-13 11:00 A |  | 100% |  |  | start no earlier than 2026-04-13 09:00 | Труфанов А | 2h | 2h |
| 2243 | 5.97 | монтаж отбойников | manual | 6h | 2026-04-18 09:00 A | 2026-04-18 16:00 A |  | 100% |  |  | start no earlier than 2026-04-18 09:00 | Бобренок В | 6h | 6h |
| 2244 | 5.98 | **ремонт шкаф управления шнеком 1 растариватель (замена щитка взять на складе)** |  | 13.5d? | 2026-04-21 09:00 | 2026-05-07 13:00 |  | 100% | 2026-04-17 09:00 | 2026-04-29 09:30 |  |  | 91.75h | 91.75h |
| 2245 | 5.98.1 | вывод кнопки управления частотником на ШУ (если нужно замена частотника) с мастером согласовать остановку |  | 5h | 2026-04-20 09:00 A | 2026-04-20 15:00 A |  | 100% |  |  | start no earlier than 2026-04-20 09:00 | Дедов В | 5h | 5h |
| 2246 | 5.98.2 | установить кнопочный пост |  | 2h | 2026-04-21 09:00 A | 2026-04-21 11:00 A |  | 100% |  |  | start no earlier than 2026-04-21 09:00 | Дедов В | 2h | 2h |
| 2247 | 5.98.3 | заявка кнопка SB7 |  | 15min | 2026-04-21 09:00 A | 2026-04-21 09:15 A |  | 100% |  |  | start no earlier than 2026-04-21 09:00 | Зорькин В | 0.25h | 0.25h |
| 2248 | 5.98.4 | доставка |  | 5d | 2026-04-21 09:15 A | 2026-04-28 09:15 A | 2247 | 100% |  |  | start no earlier than 2026-04-20 08:00 | Карабанов | 40h | 40h |
| 2249 | 5.98.5 | замена |  | 1h | 2026-04-27 09:15 A | 2026-04-27 10:15 A | 2248 | 100% |  |  | start no earlier than 2026-04-20 08:00 | Дедов В | 1h | 1h |
| 2250 | 5.98.6 | ремонт корпус |  | 1h | 2026-04-17 09:00 A | 2026-04-17 10:00 A | 2245 | 100% |  |  | start no earlier than 2026-04-09 09:00 | Труфанов А | 1h | 1h |
| 2251 | 5.98.7 | **замена корпус** |  | 6.06d | 2026-04-21 09:00 A | 2026-04-29 09:30 A |  | 100% |  |  |  |  | 42.5h | 42.5h |
| 2252 | 5.98.7.1 | заявка |  | 30min | 2026-04-21 09:00 A | 2026-04-21 09:30 A |  | 100% |  |  | start no earlier than 2026-03-31 08:00 | Зорькин В | 0.5h | 0.5h |
| 2253 | 5.98.7.2 | доставка |  | 5d | 2026-04-21 09:30 A | 2026-04-29 09:30 A | 2252 | 100% |  |  | start no earlier than 2026-03-31 08:00 | Карабанов | 40h | 40h |
| 2254 | 5.98.7.3 | замена |  | 2h | 2026-04-28 09:30 A | 2026-04-28 11:30 A | 2253 | 100% |  |  | start no earlier than 2026-04-14 09:00 | Тимофеев В | 2h | 2h |
| 2255 | 5.99 | получить фланец на складе NMRV040 и установить мотор-редуктор на расстаривателе №1 |  | 2h | 2026-04-28 09:00 A | 2026-04-28 11:00 A |  | 100% |  |  | start no earlier than 2026-04-28 09:00 | Бундин В | 2h | 2h |
| 2256 | 5.100 | убрать красный скотч везде в дробилке, сделать крепление фильтра с малой дробилки на ленточный хомут |  | 3h | 2026-03-27 09:00 A | 2026-03-27 12:00 A |  | 100% |  |  | start no earlier than 2026-03-27 08:00 | Труфанов А | 3h | 3h |
| 2257 | 5.101 | ремонт вибросито |  | 4h | 2026-03-27 08:00 A | 2026-03-27 13:00 A |  | 100% |  |  | start no earlier than 2026-03-27 08:00 | Тимофеев В; Некрасов А | 7h | 7h |
| 2258 | 5.102 | заварить сито возле слесарки (2 шт) и деки 2 шт |  | 3h | 2026-03-26 09:00 A | 2026-03-26 12:00 A |  | 100% |  |  | start no earlier than 2026-03-26 08:00 | Труфанов А | 3h | 3h |
| 2259 | 5.103 | сделать отбойник на входную дверь |  | 1h | 2026-03-28 09:00 A | 2026-03-30 10:00 A |  | 100% |  |  | start no earlier than 2026-03-28 09:00 | Бундин В | 1h | 1h |
| 2260 | 5.104 | сделать трап в курилку |  | 3h | 2026-04-01 09:00 A | 2026-04-01 12:00 A |  | 100% |  |  | start no earlier than 2026-04-01 09:00 | Бундин В | 3h | 3h |
| 2261 | 5.105 | заварить бункер дробилки |  | 2h | 2026-03-24 09:00 A | 2026-03-24 11:00 A |  | 100% |  |  | start no earlier than 2026-03-24 09:00 | Некрасов А; Труфанов А | 4h | 4h |
| 2262 | 5.106 | перенос металл с торца стеллажа напротив ВРУ / на син склад |  | 1h | 2026-03-25 09:00 A | 2026-03-25 10:00 A |  | 100% |  |  | start no earlier than 2026-03-25 09:00 | Бобренок В | 1h | 1h |
| 2263 | 5.107 | пульт управления шибером растариватель правый демонтаж красный скотч / закрепить |  | 1h | 2026-03-22 09:00 A | 2026-03-23 10:00 A |  | 100% |  |  | start no earlier than 2026-03-22 09:00 | Бобренок В | 1h | 1h |
| 2264 | 5.108 | установить корпус на переключатель реверса шнек растаривателя правый / продуть от пыли контакты |  | 30min | 2026-03-22 09:00 A | 2026-03-23 09:30 A |  | 100% |  |  | start no earlier than 2026-03-22 09:00 | Бобренок В | 0.5h | 0.5h |
| 2265 | 5.109 | демонтаж розетки без крышки 2 этаж щиток в фае |  | 30min | 2026-03-25 09:00 A | 2026-03-25 09:30 A |  | 100% |  |  | start no earlier than 2026-03-25 09:00 | Бобренок В | 0.5h | 0.5h |
| 2266 | 5.110 | подлючить розетку для зарядки нового АКБ для штабелера Ц.5А |  | 2h | 2026-03-21 09:00 A | 2026-03-23 11:00 A |  | 100% |  |  | start no earlier than 2026-03-21 09:00 | Дедов В | 2h | 2h |

| ID | WBS | Task | Type | Duration | Start | Finish | Predecessors | Complete | Total slack | Free slack | Constraint | Resources | Work | Actual work |
| --- | --- | --- | --- | --- | --- | --- | --- | --- | --- | --- | --- | --- | --- | --- |
| 2267 | 5.111 | **ремонт шнек с дробилки** |  | 11.75d | 2026-03-17 09:00 A | 2026-04-01 16:00 A |  | 100% |  |  |  |  | 7h | 7h |
| 2268 | 5.111.1 | орг пескоструйка корпус шнека - отправить |  | 1h | 2026-03-17 09:00 A | 2026-03-17 10:00 A |  | 100% |  |  | start no earlier than 2026-03-17 08:00 | Шуранов Ю | 1h | 1h |
| 2269 | 5.111.2 | сборка шнека с ремонта |  | 6h | 2026-04-01 09:00 A | 2026-04-01 16:00 A | 2268 | 100% |  |  | start no earlier than 2026-04-01 09:00 | Некрасов А | 6h | 6h |
| 2270 | 5.112 | установить уплотнения на гофра без красн скотча |  | 4h | 2026-03-20 09:00 A | 2026-03-20 13:00 A |  | 100% |  |  | start no earlier than 2026-03-20 09:00 | Некрасов А; Труфанов А | 8h | 8h |
| 2271 | 5.113 | добавить воду в 4 газ. Котел проверить реальное давление в системе |  | 2h | 2026-03-19 08:00 A | 2026-03-19 11:00 A |  | 100% |  |  | start no earlier than 2026-03-19 08:00 | Бундин В | 2h | 2h |
| 2272 | 5.114 | сменить палярность вращения дробилки / сточило ножи |  | 1h | 2026-03-16 09:00 A | 2026-03-16 10:00 A |  | 100% |  |  | start no earlier than 2026-03-16 09:00 | Труфанов А; Некрасов А | 2h | 2h |
| 2273 | 5.115 | **устанвить ИБП на клапан газ** |  | 0.03d | 2026-03-16 09:00 A | 2026-03-16 09:15 A |  | 100% |  |  |  |  | 0.25h | 0.25h |
| 2274 | 5.115.1 | координация сроков выполнения с газовщиком |  | 15min | 2026-03-16 09:00 A | 2026-03-16 09:15 A |  | 100% |  |  | start no earlier than 2026-03-16 09:00 | Шуранов Ю | 0.25h | 0.25h |
| 2275 | 5.116 | **установить вентилятор с клапаном и фильтром** |  | 11.03d? | 2026-03-18 09:00 | 2026-04-02 09:15 |  |  | 257.56d |  |  |  | 88.25h |  |
| 2276 | 5.116.1 | получить сммету / счет |  | 15min | 2026-03-18 09:00 | 2026-03-18 09:15 |  |  | 257.56d | 0d | start no earlier than 2026-03-18 09:00 | Домоводов К | 0.25h |  |
| 2277 | 5.116.2 | изготовление поставка |  | 10d | 2026-03-18 09:15 | 2026-04-01 09:15 | 2276 |  | 257.56d | 0d | start no earlier than 2026-03-17 08:00 | оплот | 80h |  |
| 2278 | 5.116.3 | монтаж |  | 1d? | 2026-04-01 09:15 | 2026-04-02 09:15 | 2277 |  | 257.56d |  | start no earlier than 2026-03-17 08:00 | оплот | 8h |  |
| 2279 | 5.117 | закрыть отвертстие от демонтированной аспирации фильтротканью. Временно, до изг фильтра |  | 1h | 2026-03-13 08:00 A | 2026-03-13 10:00 A |  | 100% |  |  | start no earlier than 2026-03-13 08:00 | Дедов В | 1h | 1h |
| 2280 | 5.118 | **на отверстие от демонтированной оспирации установить фильтр** |  | 7.01d | 2026-03-20 09:00 A | 2026-03-31 09:05 A |  | 100% |  |  |  |  | 2.08h | 2.08h |
| 2281 | 5.118.1 | получить фильтры |  | 5min | 2026-03-31 09:00 A | 2026-03-31 09:05 A |  | 100% |  |  | start no earlier than 2026-03-31 09:00 | Шуранов Ю | 0.08h | 0.08h |
| 2282 | 5.118.2 | монтаж |  | 1h | 2026-03-20 09:00 A | 2026-03-20 10:00 A | 2281FS+1d | 100% |  |  | start no earlier than 2026-03-20 09:00 | Некрасов А; Труфанов А | 2h | 2h |
| 2283 | 5.119 | **устранить ржавчину шнека после дробилки** |  | 1d? | 2026-03-16 09:00 A | 2026-03-16 18:00 A |  | 100% |  |  |  |  | 16h | 16h |
| 2284 | 5.119.1 | полная разборка / зачистка / сборка |  | 1d? | 2026-03-16 09:00 A | 2026-03-16 18:00 A |  | 100% |  |  | start no earlier than 2026-03-16 09:00 | Труфанов А; Некрасов А | 16h | 16h |
| 2285 | 5.119.2 | согласовать чем можно покрыть шнек внутри | milestone | 0d | 2026-03-16 09:00 A | 2026-03-16 09:00 A |  | 100% |  |  | start no earlier than 2026-03-16 09:00 | Домоводов К |  |  |
| 2286 | 5.120 | заменаить гидро АКБ на насосной станции / замена мебраны и золотника |  | 2h | 2026-03-15 09:00 A | 2026-03-16 11:00 A |  | 100% |  |  | start no earlier than 2026-03-15 09:00 | Бундин В | 2h | 2h |
| 2287 | 5.121 | устарнить выдавливание материала с шнека №1 узел дробилки |  | 4h | 2026-03-13 09:00 A | 2026-03-13 13:00 A |  | 100% |  |  | start no earlier than 2026-03-13 09:00 | Тимофеев В; Бундин В | 8h | 8h |
| 2288 | 5.122 | проверить обр клапан бойлер в гардеробе. Стреляет |  | 30min | 2026-03-13 09:00 A | 2026-03-13 09:30 A |  | 100% |  |  | start no earlier than 2026-03-13 09:00 | Бундин В | 0.5h | 0.5h |
| 2289 | 5.123 | долить дистилят в АКБ штабелер свинцовый |  | 1h | 2026-03-11 09:00 A | 2026-03-11 10:00 A |  | 100% |  |  | start no earlier than 2026-03-11 09:00 | Макаревич А | 1h | 1h |
| 2290 | 5.124 | **замена бойлер туалет** |  | 16.25d | 2026-03-23 09:00 A | 2026-04-14 11:00 A |  | 100% |  |  |  |  | 82.25h | 82.25h |
| 2291 | 5.124.1 | заявка бойлер |  | 15min | 2026-03-23 09:00 A | 2026-03-23 09:15 A |  | 100% |  |  | start no earlier than 2026-03-23 09:00 | Шуранов Ю | 0.25h | 0.25h |
| 2292 | 5.124.2 | доставка |  | 10d | 2026-03-30 09:00 A | 2026-04-10 18:00 A | 2291 | 100% |  |  | start no earlier than 2026-03-29 09:00 | Карабанов | 80h | 80h |
| 2293 | 5.124.3 | монтаж |  | 2h | 2026-04-14 09:00 A | 2026-04-14 11:00 A | 2292 | 100% |  |  | start no earlier than 2026-03-12 08:00 | Тимофеев В | 2h | 2h |
| 2294 | 5.125 | ремонт хомут с вибросито |  | 1h | 2026-03-10 09:00 A | 2026-03-10 10:00 A |  | 100% |  |  | start no earlier than 2026-03-10 09:00 | Макаревич А | 1h | 1h |
| 2295 | 5.126 | Заварить деку на сито |  | 2h | 2026-03-06 09:00 A | 2026-03-06 11:00 A |  | 100% |  |  | start no earlier than 2026-03-06 09:00 | Тимофеев В | 2h | 2h |
| 2296 | 5.127 | Замена двойной розетки (созвон с Шурановым) или спросить у мастера |  | 1h | 2026-03-05 08:00 A | 2026-03-05 10:00 A |  | 100% |  |  | start no earlier than 2026-03-05 08:00 | Дедов В | 1h | 1h |
| 2297 | 5.128 | ошибка Е10 стиральная машинка |  | 1h | 2026-03-04 09:00 A | 2026-03-04 10:00 A |  | 100% |  |  | start no earlier than 2026-03-04 09:00 | Дедов В | 1h | 1h |
| 2298 | 5.129 | ремонт сито, сварка шов |  | 2h | 2026-03-03 09:00 A | 2026-03-03 11:00 A |  | 100% |  |  | start no earlier than 2026-03-03 09:00 | Макаревич А | 2h | 2h |
| 2299 | 5.130 | ремонт растариватель №1 + установить косынки |  | 2h | 2026-03-03 09:00 A | 2026-03-03 11:00 A |  | 100% |  |  | start no earlier than 2026-03-03 09:00 | Некрасов А; Труфанов А | 4h | 4h |

| ID | WBS | Task | Duration | Start | Finish | Predecessors | Complete | Actual start | Constraint | Resources | Work | Actual work |
| --- | --- | --- | --- | --- | --- | --- | --- | --- | --- | --- | --- | --- |
| 2300 | 5.131 | **ремонт растаривателя №3 - клинит заслонку** | 97.81d | 2026-04-20 09:00 A | 2026-09-02 16:30 A |  | 100% |  |  |  | 16.92h | 16.92h |
| 2301 | 5.131.1 | установка ручной штурвал управления шибером | 2h | 2026-04-20 09:00 A | 2026-04-20 11:00 A |  | 100% |  | start no earlier than 2026-04-20 09:00 | Бундин В | 2h | 2h |
| 2302 | 5.131.2 | контроль поставка Зип - оплачивали или нет? | 10min | 2026-08-12 09:00 A | 2026-08-12 09:10 A |  | 100% |  | start no earlier than 2026-08-12 09:00 | Зорькин В | 0.17h | 0.17h |
| 2303 | 5.131.3 | получить счет | 15min | 2026-08-13 09:00 A | 2026-08-13 09:15 A |  | 100% |  | start no earlier than 2026-08-13 09:00 | Домоводов К | 0.25h | 0.25h |
| 2304 | 5.131.4 | контроль поставки | 15min | 2026-08-31 09:15 A | 2026-08-31 09:30 A | 2303FS+12d | 100% |  | start no earlier than 2026-08-31 09:00 | Зорькин В | 0.25h | 0.25h |
| 2305 | 5.131.5 | приемка | 15min | 2026-09-01 09:30 A | 2026-09-01 09:45 A | 2304FS+1d | 100% |  | start no earlier than 2026-08-31 09:00 | Зорькин В | 0.25h | 0.25h |
| 2306 | 5.131.6 | замена | 4h | 2026-09-02 09:30 A | 2026-09-02 14:30 A | 2305FS+1d | 100% |  | start no earlier than 2026-08-12 09:00 | Тимофеев В | 4h | 4h |
| 2307 | 5.131.7 | Ремонт паука с растаривателя, оценить состояние. | 2h | 2026-09-02 09:00 A | 2026-09-02 11:00 A |  | 100% |  | start no earlier than 2026-09-02 09:00 | Тимофеев В | 2h | 2h |
| 2308 | 5.131.8 | установить фланец на редуктор NMRV050 | 2h | 2026-05-18 09:00 A | 2026-05-18 11:00 A |  | 100% |  | start no earlier than 2026-05-20 09:00 | Бобренок В | 2h | 2h |
| 2309 | 5.131.9 | настройка тепловое реле, настройка концевиков | 2h | 2026-09-02 14:30 A | 2026-09-02 16:30 A | 2306, 2308 | 100% |  | start no earlier than 2026-05-08 09:00 | Дедов В | 2h | 2h |
| 2310 | 5.131.10 | доработка пластины, которая клинит | 4h | 2026-05-07 09:00 A | 2026-05-07 13:00 A |  | 100% |  | start no earlier than 2026-05-07 09:00 | Тимофеев В | 4h | 4h |
| 2311 | 5.132 | **установить курилку на раму. Изготовить лавочку** | 19.25d? | 2026-02-28 09:00 A | 2026-03-27 11:00 A |  | 100% |  |  |  | 27h | 27h |
| 2312 | 5.132.1 | сделать удлинители для синей платформы, на которые встанет курилка | 1d? | 2026-02-28 09:00 A | 2026-03-02 18:00 A |  | 100% |  | start no earlier than 2026-02-28 09:00 | Макаревич А | 8h | 8h |
| 2313 | 5.132.2 | закрыть отверстие в полу жзелезом | 1h | 2026-03-13 09:00 A | 2026-03-13 10:00 A |  | 100% |  | start no earlier than 2026-03-13 09:00 | Некрасов А; Труфанов А | 2h | 2h |
| 2314 | 5.132.3 | монтаж фанера на лавочку | 2h | 2026-03-27 09:00 A | 2026-03-27 11:00 A | 2313 | 100% |  | start no earlier than 2026-03-27 09:00 |  |  |  |
| 2315 | 5.132.4 | поворот курилки к стене, от ветра | 1h | 2026-03-20 09:00 A | 2026-03-20 10:00 A |  | 100% |  | start no earlier than 2026-03-20 09:00 | Некрасов А | 1h | 1h |
| 2316 | 5.132.5 | изготовить трап входной | 4h | 2026-03-20 10:00 A | 2026-03-20 15:00 A | 2315 | 100% |  | start no earlier than 2026-03-12 08:00 | Некрасов А | 4h | 4h |
| 2317 | 5.132.6 | изготовить лавку по периметру курилки. На железо будет потом доска или пенка. Металл с остатков 3ц или с синего склада | 1d? | 2026-03-01 09:00 A | 2026-03-02 18:00 A |  | 100% |  | start no earlier than 2026-03-01 09:00 | Макаревич А | 8h | 8h |
| 2318 | 5.132.7 | приготовить ручки за которые будет толпа поднимать руками курилку | 2h | 2026-03-09 09:00 A | 2026-03-09 11:00 A |  | 100% |  | start no earlier than 2026-03-09 09:00 | Некрасов А; Труфанов А | 4h | 4h |
| 2319 | 5.133 | ТО штабелеров - обрезать нитки. Дефектовка подшипников, указать в отчете состояние | 2h | 2026-03-01 09:00 A | 2026-03-02 11:00 A |  | 100% |  | start no earlier than 2026-03-01 09:00 | Макаревич А | 2h | 2h |
| 2320 | 5.134 | **штабелер - замена ролик мачты. Подшипник котка** | 0.01d | 2026-03-03 09:00 A | 2026-03-03 09:05 A |  | 100% |  |  |  | 0.17h | 0.17h |
| 2321 | 5.134.1 | контроль | 5min | 2026-03-03 09:00 A | 2026-03-03 09:05 A |  | 100% |  | start no earlier than 2026-03-03 09:00 | Зорькин В; Тракресурс | 0.17h | 0.17h |
| 2322 | 5.135 | **установить стеллажи для архив образцов** | 25.06d? | 2026-03-03 09:00 | 2026-04-07 09:30 A |  | 100% | 2026-03-05 09:00 |  |  | 227.25h | 227.25h |
| 2323 | 5.135.1 | монтаж освещение | 4h | 2026-03-06 09:00 A | 2026-03-06 13:00 A |  | 100% |  | start no earlier than 2026-03-06 09:00 | Некрасов А; Труфанов А | 8h | 8h |

| ID | WBS | Task | Duration | Start | Finish | Predecessors | Complete | Actual start | Actual finish | Constraint | Resources | Work | Actual work |
| --- | --- | --- | --- | --- | --- | --- | --- | --- | --- | --- | --- | --- | --- |
| 2324 | 5.135.2 | **покрасить стеллажи** | 12.02d | 2026-03-06 14:00 A | 2026-03-24 14:10 A | 2323 | 100% |  |  |  |  | 92.17h | 92.17h |
| 2325 | 5.135.2.1 | Заказать краску не пахнущую для радиаторов | 10min | 2026-03-06 14:00 A | 2026-03-06 14:10 A |  | 100% |  |  | start no earlier than 2026-03-03 09:00 | Зорькин В | 0.17h | 0.17h |
| 2326 | 5.135.2.2 | Доставка | 10d | 2026-03-06 14:10 A | 2026-03-24 14:10 A | 2325 | 100% |  |  | start no earlier than 2026-03-03 09:00 | Карабанов | 80h | 80h |
| 2327 | 5.135.2.3 | покраска | 4h | 2026-03-06 14:00 A | 2026-03-06 18:00 A |  | 100% |  |  | start no earlier than 2026-03-06 09:00 | Некрасов А; Труфанов А | 8h | 8h |
| 2328 | 5.135.2.4 | покраска | 4h | 2026-03-06 14:00 A | 2026-03-06 18:00 A |  | 100% |  |  | start no earlier than 2026-03-06 09:00 | Бундин В | 4h | 4h |
| 2329 | 5.135.3 | занести стеллажи в кабинеты с работниками 5ц | 4h | 2026-03-09 09:00 A | 2026-03-09 13:00 A | 2331 | 100% |  |  | start no earlier than 2026-03-09 09:00 | Бобренок В | 4h | 4h |
| 2330 | 5.135.4 | сборка стеллажей | 4h | 2026-03-13 09:00 A | 2026-03-13 13:00 A |  | 100% |  |  | start no earlier than 2026-03-13 09:00 | Труфанов А; Некрасов А | 8h | 8h |
| 2331 | 5.135.5 | монтаж доп полок с уголка | 4h | 2026-03-08 09:00 A | 2026-03-09 13:00 A | 2332 | 100% |  |  | start no earlier than 2026-03-08 09:00 | Бобренок В | 4h | 4h |
| 2332 | 5.135.6 | напилить фанеру на стеллажи | 8h | 2026-03-15 09:00 A | 2026-03-16 18:00 A |  | 100% |  |  | start no earlier than 2026-03-15 09:00 | Бундин В | 8h | 8h |
| 2333 | 5.135.7 | напилить фанеру на стеллажи | 4h | 2026-03-16 09:00 A | 2026-03-16 13:00 A |  | 100% |  |  | start no earlier than 2026-03-16 09:00 | Макаревич А; Тимофеев В | 8h | 8h |
| 2334 | 5.135.8 | **монтаж двери** | 8.06d? | 2026-03-03 09:00 | 2026-03-11 09:30 |  | 100% | 2026-03-05 09:00 | 2026-04-07 09:30 |  |  | 95.08h | 95.08h |
| 2335 | 5.135.8.1 | заявка фурнитуры | 30min | 2026-03-05 09:00 A | 2026-03-05 09:30 A |  | 100% |  |  | start no earlier than 2026-03-05 09:00 | Зорькин В | 0.5h | 0.5h |
| 2336 | 5.135.8.2 | получить коробку на дверь / контроолль поставки | 5min | 2026-03-18 09:00 A | 2026-03-18 09:05 A |  | 100% |  |  | start no earlier than 2026-03-18 09:00 | Зорькин В | 0.08h | 0.08h |
| 2337 | 5.135.8.3 | монтаж 2 двери | 4h | 2026-03-20 09:00 A | 2026-03-20 13:00 A |  | 100% |  |  | start no earlier than 2026-03-20 09:00 | Тимофеев В; Бундин В | 8h | 8h |
| 2338 | 5.135.8.4 | монтаж замка и ручек | 2h | 2026-03-24 09:00 A | 2026-03-24 11:00 A |  | 100% |  |  | start no earlier than 2026-03-24 09:00 | Тимофеев В | 2h | 2h |
| 2339 | 5.135.8.5 | **монтаж наличноков** | 10.06d | 2026-03-24 09:00 A | 2026-04-07 09:30 A |  | 100% |  |  |  |  | 84.5h | 84.5h |
| 2340 | 5.135.8.5.1 | заявка на наличинки | 30min | 2026-03-24 09:00 A | 2026-03-24 09:30 A |  | 100% |  |  | start no earlier than 2026-03-24 09:00 | Зорькин В | 0.5h | 0.5h |
| 2341 | 5.135.8.5.2 | доставка | 10d | 2026-03-24 09:30 A | 2026-04-07 09:30 A | 2340 | 100% |  |  | start no earlier than 2026-03-20 08:00 | Карабанов | 80h | 80h |
| 2342 | 5.135.8.5.3 | монтаж | 4h | 2026-04-04 09:30 A | 2026-04-06 13:00 A | 2341 | 100% |  |  | start no earlier than 2026-03-20 08:00 | Тимофеев В | 4h | 4h |
| 2343 | 5.136 | **монтаж розеток для весов** | 83d | 2026-03-02 09:00 A | 2026-06-24 18:00 A |  | 100% |  |  |  |  | 98.5h | 98.5h |
| 2344 | 5.136.1 | составить план монтажа, расчет материалов | 30min | 2026-03-02 09:00 A | 2026-03-02 09:30 A |  | 100% |  |  | start no earlier than 2026-03-02 09:00 | Некрасов А; Зорькин В; Труфанов А | 1.5h | 1.5h |
| 2345 | 5.136.2 | заявка трос/ талреп | 30min | 2026-03-02 09:30 A | 2026-03-02 10:00 A | 2344 | 100% |  |  | start no earlier than 2026-02-27 08:00 | Зорькин В | 0.5h | 0.5h |
| 2346 | 5.136.3 | доставка | 10d | 2026-03-02 10:00 A | 2026-03-16 10:00 A | 2345 | 100% |  |  | start no earlier than 2026-02-27 08:00 | Карабанов | 80h | 80h |
| 2347 | 5.136.4 | комплектация | 30min | 2026-06-01 09:00 A | 2026-06-01 09:30 A |  | 100% |  |  | start no earlier than 2026-06-01 09:00 | Зорькин В | 0.5h | 0.5h |
| 2348 | 5.136.5 | монтаж | 8h | 2026-06-24 09:00 A | 2026-06-24 18:00 A | 2346 | 100% |  |  | start no earlier than 2026-06-24 09:00 | Тимофеев В; Макаревич А | 16h | 16h |

| ID | WBS | Task | Duration | Start | Finish | Predecessors | Complete | Remaining | Total slack | Free slack | Constraint | Resources | Work | Actual work |
| --- | --- | --- | --- | --- | --- | --- | --- | --- | --- | --- | --- | --- | --- | --- |
| 2349 | 5.137 | **установить кнопочный пост вентилятора в окно в доступную зону** | 5.06d | 2026-03-03 09:00 A | 2026-03-10 09:30 |  | 1% | 5.01d | 274.53d |  |  |  | 44.5h | 0.5h |
| 2350 | 5.137.1 | заявка частотник 0,5-0,75квт | 30min | 2026-03-03 09:00 A | 2026-03-03 09:30 A |  | 100% |  |  |  | start no earlier than 2026-03-03 09:00 | Зорькин В | 0.5h | 0.5h |
| 2351 | 5.137.2 | доставка | 5d | 2026-03-03 09:30 | 2026-03-10 09:30 | 2350 |  |  | 274.53d |  | start no earlier than 2026-02-27 08:00 | Карабанов | 40h |  |
| 2352 | 5.137.3 | монтаж | 4h | 2026-03-03 09:00 | 2026-03-03 13:00 |  |  |  | 279.09d |  | start no earlier than 2026-03-03 09:00 | Дедов В | 4h |  |
| 2353 | 5.138 | замена местами бойлер с раздевали и кухня | 2h | 2026-02-27 09:00 A | 2026-02-27 11:00 A |  | 100% |  |  |  | start no earlier than 2026-02-27 08:00 | Бундин В; Труфанов А | 4h | 4h |
| 2354 | 5.139 | **установить калорифер на 4 котел** | 17d? | 2026-10-12 09:00 | 2026-11-02 18:00 |  |  |  | 95.59d |  |  |  | 97h |  |
| 2355 | 5.139.1 | заявка | 1h | 2026-10-12 09:00 | 2026-10-12 10:00 |  |  |  | 101.47d | 0d | start no earlier than 2026-10-12 09:00 | Зорькин В | 1h |  |
| 2356 | 5.139.2 | доставка | 10d | 2026-10-12 10:00 | 2026-10-23 10:00 | 2355 |  |  | 101.47d | 5.88d | start no earlier than 2026-02-27 08:00 | Карабанов | 80h |  |
| 2357 | 5.139.3 | монтаж | 1d? | 2026-11-02 09:00 | 2026-11-02 18:00 | 2356 |  |  | 95.59d |  | start no earlier than 2026-11-02 09:00 | Некрасов А; Труфанов А | 16h |  |
| 2358 | 5.140 | аудит по взрывоопасности 5ц | 1d? | 2025-09-03 09:00 | 2025-09-03 18:00 |  |  |  | 407.59d |  | start no earlier than 2025-09-03 09:00 |  |  |  |
| 2359 | 5.141 | **расширить прорем для проезда погрузчика** | 3d? | 2024-05-27 09:00 | 2024-05-29 18:00 |  |  |  | 737.59d |  |  |  | 24h |  |
| 2360 | 5.141.1 | перенос канализ трубы | 1d? | 2024-05-27 09:00 | 2024-05-27 18:00 |  |  |  | 737.59d | 0d | start no earlier than 2024-05-27 09:00 | Некрасов А | 8h |  |
| 2361 | 5.141.2 | монтаж закладных в прорем +400мм | 1d? | 2024-05-28 09:00 | 2024-05-28 18:00 | 2360 |  |  | 737.59d | 0d | start no earlier than 2024-05-17 09:00 | Некрасов А | 8h |  |
| 2362 | 5.141.3 | демонтаж /расширение | 1d? | 2024-05-29 09:00 | 2024-05-29 18:00 | 2361 |  |  | 737.59d |  | start no earlier than 2024-05-17 09:00 | Некрасов А | 8h |  |
| 2363 | 5.142 | подключить концевые выключатели шибера растаривателя | 2h | 2023-06-21 09:00 | 2023-06-21 11:00 |  |  |  | 983.34d |  | start no earlier than 2023-06-21 09:00 | Дедов В | 2h |  |
| 2364 | 5.143 | **установить сирену при включении тельфера** | 119d? | 2023-05-29 09:00 A | 2023-11-09 18:00 |  |  | 118.79d? | 881.59d |  |  |  | 48.08h | 0.08h |
| 2365 | 5.143.1 | заявка на сирену и кабель | 5min | 2023-05-29 09:00 A | 2023-05-29 09:05 A |  | 100% |  |  |  | start no earlier than 2023-05-29 09:00 | Лобанов И | 0.08h | 0.08h |
| 2366 | 5.143.2 | доставка | 5d | 2023-05-29 09:05 | 2023-06-05 09:05 | 2365 |  |  | 994.58d | 112.99d | start no earlier than 2023-05-22 09:00 | Малинина М | 40h |  |
| 2367 | 5.143.3 | монтаж | 1d? | 2023-11-09 09:00 | 2023-11-09 18:00 | 2366 |  |  | 881.59d |  | start no earlier than 2023-11-09 09:00 | Дедов В | 8h |  |
| 2368 | 5.144 | держак мешка для сбора отработанного корма лопатой, что бы второй не держал мешок | 1d? | 2026-05-04 09:00 | 2026-05-04 18:00 |  |  |  | 234.59d |  | start no earlier than 2026-05-04 09:00 | Тимофеев В | 8h |  |
| 2369 | 5.145 | **Замена насосной станции** | 9.25d | 2026-09-01 09:00 A | 2026-09-11 11:00 A |  | 100% |  |  |  |  |  | 6.33h | 6.33h |
| 2370 | 5.145.1 | Замена насоса | 2h | 2026-09-01 09:00 A | 2026-09-01 11:00 A |  | 100% |  |  |  | start no earlier than 2026-09-01 09:00 | Бундин В | 2h | 2h |
| 2371 | 5.145.2 | Заявка на станцию | 15min | 2026-09-02 09:00 A | 2026-09-02 09:15 A |  | 100% |  |  |  | start no earlier than 2026-09-02 08:00 | Зорькин В | 0.25h | 0.25h |
| 2372 | 5.145.3 | контроль доставки | 5min | 2026-09-11 09:00 A | 2026-09-11 09:05 A |  | 100% |  |  |  | start no earlier than 2026-09-11 09:00 | Зорькин В | 0.08h | 0.08h |
| 2373 | 5.145.4 | установка новой насосной станции | 2h | 2026-09-11 09:00 A | 2026-09-11 11:00 A |  | 100% |  |  |  | start no earlier than 2026-09-11 09:00 | Некрасов А; Макаревич А | 4h | 4h |
| 2374 | 5.146 | Попытаться заварить деки и хомуты той проволокой по нерже, что есть у нас | 3h | 2026-07-28 08:00 A | 2026-07-28 12:00 A |  | 100% |  |  |  | start no earlier than 2026-07-28 08:00 | Макаревич А | 3h | 3h |

| ID | WBS | Task | Duration | Start | Finish | Predecessors | Complete | Remaining | Total slack | Constraint | Resources | Work | Actual work |
| --- | --- | --- | --- | --- | --- | --- | --- | --- | --- | --- | --- | --- | --- |
| 2375 | 5.147 | **5 цех** | 0.25d | 2026-04-07 09:00 A | 2026-04-07 11:00 A |  | 100% |  |  |  |  | 3.5h | 3.5h |
| 2376 | 5.147.1 | Установка сеток на сито | 1h | 2026-04-07 09:00 A | 2026-04-07 10:00 A |  | 100% |  |  | start no earlier than 2026-04-07 08:00 | Бундин В | 1h | 1h |
| 2377 | 5.147.2 | **2 цех** | 0.25d | 2026-04-07 09:00 A | 2026-04-07 11:00 A |  | 100% |  |  |  |  | 2.5h | 2.5h |
| 2378 | 5.147.2.1 | Взять шланг с мойки зона экструдера, установить на складе навесок цех 2, для набора воды в кубы | 30min | 2026-04-07 09:00 A | 2026-04-07 09:30 A |  | 100% |  |  | start no earlier than 2026-04-07 08:00 | Бундин В | 0.5h | 0.5h |
| 2379 | 5.147.2.2 | Посмотреть подачу воды на поломоечной машинке | 2h | 2026-04-07 09:00 A | 2026-04-07 11:00 A |  | 100% |  |  | start no earlier than 2026-04-07 08:00 | Бундин В | 2h | 2h |
| 2380 | 6 | **модернизация** | 988.5d? | 2023-06-07 09:00 A | 2027-03-03 13:00 |  | 48% | 510.74d? | 5.09d |  |  | 3394.67h | 2643.67h |
| 2381 | 6.1 | доработка нерж труб для парогенератора (антиэлектрод) | 1h | 2026-07-06 09:00 | 2026-07-06 10:00 |  |  |  | 190.47d | start no earlier than 2026-07-06 09:00 | Тимофеев В | 1h |  |
| 2382 | 6.2 | **Дражжировка 2 линия 1 цех** | 0.25d | 2026-07-29 08:00 A | 2026-07-29 11:00 A |  | 100% |  |  |  |  | 2h | 2h |
| 2383 | 6.2.1 | установка трубки с отверстиями, эксперимент | 2h | 2026-07-29 08:00 A | 2026-07-29 11:00 A |  | 100% |  |  | start no earlier than 2026-07-29 08:00 | Тимофеев В | 2h | 2h |
| 2384 | 6.3 | **поточные весы на входе в барабан жира** | 0.12d | 2026-06-15 09:00 A | 2026-06-15 10:00 A |  | 100% |  |  |  |  | 1h | 1h |
| 2385 | 6.3.1 | запрос КП у НОТИС - весы с дозатором / бункеры | 1h | 2026-06-15 09:00 A | 2026-06-15 10:00 A |  | 100% |  |  | start no earlier than 2026-06-15 09:00 | Зорькин В | 1h | 1h |
| 2386 | 6.4 | **устройство загрузки в смесители** | 0.12d | 2026-03-31 09:00 | 2026-03-31 10:00 |  |  |  | 259.47d |  |  | 1h |  |
| 2387 | 6.4.1 | подбор оборудования, запрос КП | 1h | 2026-03-31 09:00 | 2026-03-31 10:00 |  |  |  | 259.47d | start no earlier than 2026-03-31 08:00 | Зорькин В | 1h |  |
| 2388 | 6.5 | **определить параметры сушки гранулы лаб испытанием** | 6d | 2024-09-09 09:00 A | 2024-09-16 18:00 A |  | 100% |  |  |  |  | 16h | 16h |
| 2389 | 6.5.1 | изучить метод материал, физ законы процесса сушки. | 4h | 2024-09-09 09:00 A | 2024-09-09 13:00 A |  | 100% |  |  | start no earlier than 2024-09-09 09:00 | Зорькин В | 4h | 4h |
| 2390 | 6.5.2 | Определить набор средств измерения и оборыдования для лаб работы. | 4h | 2024-09-09 14:00 A | 2024-09-09 18:00 A | 2389 | 100% |  |  | start no earlier than 2024-09-09 09:00 | Зорькин В | 4h | 4h |
| 2391 | 6.5.3 | разрабоать пошаговый план лаб работы сушки 1кг продукта в термошкафу | 4h | 2024-09-16 09:00 A | 2024-09-16 13:00 A | 2390 | 100% |  |  | start no earlier than 2024-09-16 09:00 | Зорькин В | 4h | 4h |
| 2392 | 6.5.4 | определить зависимость времени сушки от температуры и влажности среды. | 4h | 2024-09-16 14:00 A | 2024-09-16 18:00 A | 2391 | 100% |  |  | start no earlier than 2024-09-06 08:00 | Зорькин В | 4h | 4h |
| 2393 | 6.6 | **станция фильтрации гидролизат с еврокуба в промежут емкость. Фильтр + насос** | 27.25d | 2026-03-13 09:00 A | 2026-04-21 11:00 A |  | 100% |  |  |  |  | 8h | 8h |
| 2394 | 6.6.1 | составить схему размещения насос / фильтр | 1h | 2026-03-13 09:00 A | 2026-03-13 10:00 A |  | 100% |  |  | start no earlier than 2026-03-13 09:00 | Зорькин В | 1h | 1h |
| 2395 | 6.6.2 | заявка фильтр 5" коллона + фитинги РР | 1h | 2026-03-13 10:00 A | 2026-03-13 11:00 A | 2394 | 100% |  |  | start no earlier than 2026-03-12 08:00 | Зорькин В | 1h | 1h |
| 2396 | 6.6.3 | доставка | 10d | 2026-03-13 11:00 A | 2026-03-27 11:00 A | 2395 | 100% |  |  | start no earlier than 2026-03-12 08:00 |  |  |  |
| 2397 | 6.6.4 | сборка насосная станция с фильром в 1ц | 4h | 2026-04-20 09:00 A | 2026-04-20 13:00 A | 2396 | 100% |  |  | start no earlier than 2026-04-20 09:00 | Тимофеев В | 4h | 4h |
| 2398 | 6.6.5 | оформление протокол испытаний | 2h | 2026-04-21 09:00 A | 2026-04-21 11:00 A |  | 100% |  |  | start no earlier than 2026-04-21 09:00 | Зорькин В | 2h | 2h |

| ID | WBS | Task | Type | Duration | Start | Finish | Predecessors | Complete | Remaining | Total slack | Constraint | Resources | Work | Actual work |
| --- | --- | --- | --- | --- | --- | --- | --- | --- | --- | --- | --- | --- | --- | --- |
| 2399 | 6.7 | **тест форсунки на гидролизат фильтрованный гидролизат** |  | 95.25d | 2026-04-21 11:00 A | 2026-09-01 13:00 | 2393 | 72% | 26.28d | 149.09d |  |  | 19h | 15h |
| 2400 | 6.7.1 | подготовить переходник |  | 2h | 2026-04-21 11:00 A | 2026-04-21 13:00 A |  | 100% |  |  | start no earlier than 2026-03-12 08:00 | Тимофеев В | 2h | 2h |
| 2401 | 6.7.2 | тестирование разных форсунок |  | 2h | 2026-04-21 13:00 A | 2026-04-21 16:00 A | 2400 | 100% |  |  | start no earlier than 2026-03-12 08:00 | Тимофеев В; Зорькин В | 4h | 4h |
| 2402 | 6.7.3 | контроль наличия фитингов для подключения насосной фильтровальной станции к еврокубу |  | 30min | 2026-04-24 08:00 A | 2026-04-24 09:30 A |  | 100% |  |  | start no earlier than 2026-04-24 08:00 | Зорькин В; Тимофеев В | 1h | 1h |
| 2403 | 6.7.4 | тест - наполнить канистру с куба гидролизатом через станцию+фильтр |  | 2h | 2026-04-27 09:00 A | 2026-04-27 11:00 A |  | 100% |  |  | start no earlier than 2026-04-27 09:00 | Зорькин В; Тимофеев В | 3h | 3h |
| 2404 | 6.7.5 | фильтрованный гдз распылить форсунками штатным насосом - забивакет |  | 4h | 2026-05-13 09:00 A | 2026-05-13 13:00 A | 2403 | 100% |  |  | start no earlier than 2026-05-13 09:00 | Зорькин В; Тимофеев В | 5h | 5h |
| 2405 | 6.7.6 | проект распыление моторчиком |  | 4h | 2026-09-01 09:00 | 2026-09-01 13:00 |  |  |  | 149.09d | start no earlier than 2026-09-01 09:00 | Домоводов К | 4h |  |
| 2406 | 6.8 | **станция фильтраци куринный жир с еврокуба в промежут емкость. Насос + фильтр** |  | 36.75d? | 2026-03-05 09:00 A | 2026-04-24 16:00 A |  | 100% |  |  |  |  | 46h | 46h |
| 2407 | 6.8.1 | подбор производительный насос и фильтр для жира. Закачка с еврокуба, перекачка через фильтр |  | 1d? | 2026-03-05 09:00 A | 2026-03-05 18:00 A |  | 100% |  |  | start no earlier than 2026-03-05 09:00 | Домоводов К; Зорькин В | 16h | 16h |
| 2408 | 6.8.2 | заявка материалы |  | 1d? | 2026-03-06 09:00 A | 2026-03-06 18:00 A | 2407 | 100% |  |  | start no earlier than 2026-02-27 08:00 | Зорькин В | 8h | 8h |
| 2409 | 6.8.3 | тест насосной станцией с фильтром |  | 1d? | 2026-04-20 09:00 A | 2026-04-20 18:00 A |  | 100% |  |  | start no earlier than 2026-04-20 09:00 | Зорькин В; Тимофеев В | 16h | 16h |
| 2410 | 6.8.4 | сборка второй станции для жира на БГ11А |  | 6h | 2026-04-24 08:00 A | 2026-04-24 16:00 A |  | 100% |  |  | start no earlier than 2026-04-24 08:00 | Тимофеев В | 6h | 6h |
| 2411 | 6.9 | **мешалка гидролизата** |  | 131.12d | 2026-03-03 09:00 A | 2026-09-02 10:00 A |  | 100% |  |  |  |  | 37.08h | 37.08h |
| 2412 | 6.9.1 | определить диаметр вала / где инструкция? Выяснить |  | 20min | 2026-08-28 09:00 A | 2026-08-28 09:20 A |  | 100% |  |  | start no earlier than 2026-08-28 09:00 | Зорькин В | 0.33h | 0.33h |
| 2413 | 6.9.2 | согласовать договор /оплата счет |  | 1h | 2026-03-03 09:00 A | 2026-03-03 10:00 A |  | 100% |  |  | start no earlier than 2026-03-03 09:00 | Домоводов К | 1h | 1h |
| 2414 | 6.9.3 | доставка | milestone | 0d | 2026-08-10 08:00 A | 2026-08-10 08:00 A |  | 100% |  |  | start no earlier than 2026-08-10 08:00 |  |  |  |
| 2415 | 6.9.4 | планирование технологии работы / какие нужны доработки |  | 15min | 2026-08-12 09:00 A | 2026-08-12 09:15 A |  | 100% |  |  | start no earlier than 2026-08-12 09:00 | Домоводов К | 0.25h | 0.25h |
| 2416 | 6.9.5 | сборка и тест с операторами в 1ц. Можно приварить кронштейны под штабелер |  | 4h | 2026-08-12 09:00 A | 2026-08-12 13:00 A |  | 100% |  |  | start no earlier than 2026-08-12 09:00 | Макаревич А | 4h | 4h |
| 2417 | 6.9.6 | составить чертеж кронштейна |  | 1h | 2026-08-17 09:00 A | 2026-08-17 10:00 A |  | 100% |  |  | start no earlier than 2026-08-17 09:00 | Шуранов Ю | 1h | 1h |
| 2418 | 6.9.7 | заявка на лебедка |  | 15min | 2026-08-17 10:00 A | 2026-08-17 10:15 A | 2417 | 100% |  |  | start no earlier than 2026-08-14 09:00 | Шуранов Ю | 0.25h | 0.25h |
| 2419 | 6.9.8 | конроль доставки |  | 15min | 2026-08-22 10:15 A | 2026-08-24 09:15 A | 2418FS+5d | 100% |  |  | start no earlier than 2026-08-14 09:00 | Шуранов Ю | 0.25h | 0.25h |
| 2420 | 6.9.9 | монтаж лебедка |  | 6h | 2026-08-31 09:00 A | 2026-08-31 16:00 A | 2419FS+1d | 100% |  |  | start no earlier than 2026-08-31 09:00 | Некрасов А; Труфанов А | 12h | 12h |
| 2421 | 6.9.10 | монтаж кронштейн под лебедку |  | 6h | 2026-08-31 16:00 A | 2026-09-01 13:00 A | 2420 | 100% |  |  | start no earlier than 2026-08-31 09:00 | Некрасов А; Труфанов А | 12h | 12h |
| 2422 | 6.9.11 | Установить 3-х фазную вилку для мешалки рядом с частотником |  | 2h | 2026-08-31 08:00 A | 2026-08-31 11:00 A |  | 100% |  |  | start no earlier than 2026-08-31 08:00 | Дедов В | 2h | 2h |
| 2423 | 6.9.12 | Установить розетку для электротали, проложить кабель к розетке возле мухобойки |  | 3h | 2026-08-31 08:00 A | 2026-08-31 12:00 A |  | 100% |  |  | start no earlier than 2026-08-31 08:00 | Дедов В | 3h | 3h |
| 2424 | 6.9.13 | Подключить таль к розетке, проложить гофру |  | 1h | 2026-09-02 09:00 A | 2026-09-02 10:00 A |  | 100% |  |  | start no earlier than 2026-09-02 09:00 | Бундин В | 1h | 1h |

| ID | WBS | Task | Duration | Start | Finish | Predecessors | Complete | Remaining | Total slack | Constraint | Resources | Work | Actual work |
| --- | --- | --- | --- | --- | --- | --- | --- | --- | --- | --- | --- | --- | --- |
| 2425 | 6.10 | **качественное нанесение жира тесты** | 275.5d? | 2026-03-02 09:00 A | 2027-03-03 13:00 A |  | 100% |  |  |  |  | 2102h | 2102h |
| 2426 | 6.10.1 | **испытания форсунка 2х фазная 1ц** | 2.25d | 2026-03-02 09:00 A | 2026-03-04 11:00 A |  | 100% |  |  |  |  | 5.5h | 5.5h |
| 2427 | 6.10.1.1 | подготовить кронштейн крепления форсунки к конвейеру | 2h | 2026-03-02 09:00 A | 2026-03-02 11:00 A |  | 100% |  |  | start no earlier than 2026-03-02 09:00 | Тимофеев В | 2h | 2h |
| 2428 | 6.10.1.2 | подготовить пневморедуктор, временно с НОТИС 3ц | 1h | 2026-03-02 11:00 A | 2026-03-02 12:00 A | 2427 | 100% |  |  | start no earlier than 2026-02-27 08:00 | Тимофеев В | 1h | 1h |
| 2429 | 6.10.1.3 | подготовить фильтр 1шт | 30min | 2026-03-02 12:00 A | 2026-03-02 12:30 A | 2428 | 100% |  |  | start no earlier than 2026-02-27 08:00 | Тимофеев В | 0.5h | 0.5h |
| 2430 | 6.10.1.4 | Тест форсунки на жирах, скооперироваться с технологами | 2h | 2026-03-04 09:00 A | 2026-03-04 11:00 A |  | 100% |  |  | start no earlier than 2026-03-04 09:00 | Тимофеев В | 2h | 2h |
| 2431 | 6.10.2 | **монтаж форсунки в линию** | 268.5d? | 2026-03-11 09:00 A | 2027-03-03 13:00 A |  | 100% |  |  |  | Тимофеев В | 2096.5h | 2096.5h |
| 2432 | 6.10.2.1 | **тест однофазная форсунка** | 30.25d? | 2026-03-11 09:00 A | 2026-04-22 11:00 A |  | 100% |  |  |  |  | 52.5h | 52.5h |
| 2433 | 6.10.2.1.1 | заявка пневморедуктор, фитинги насос - кран - 3х ходовой | 30min | 2026-03-11 09:00 A | 2026-03-11 09:30 A |  | 100% |  |  | start no earlier than 2026-03-11 09:00 | Зорькин В | 0.5h | 0.5h |
| 2434 | 6.10.2.1.2 | проект рама для монтаж фильтров, редуктор, кронштейн форсунки | 1d? | 2026-03-11 09:30 A | 2026-03-12 09:30 A | 2433 | 100% |  |  | start no earlier than 2026-02-27 08:00 | Домоводов К | 8h | 8h |
| 2435 | 6.10.2.1.3 | доставка | 5d | 2026-03-30 09:00 A | 2026-04-03 18:00 A |  | 100% |  |  | start no earlier than 2026-03-30 09:00 | Карабанов | 40h | 40h |
| 2436 | 6.10.2.1.4 | сборка рама, покраска | 2h | 2026-04-22 09:00 A | 2026-04-22 11:00 A | 2434 | 100% |  |  | start no earlier than 2026-04-22 09:00 | Тимофеев В | 2h | 2h |
| 2437 | 6.10.2.1.5 | монтаж 0,3 форсунки | 2h | 2026-04-22 09:00 A | 2026-04-22 11:00 A | 2435 | 100% |  |  | start no earlier than 2026-04-22 09:00 | Тимофеев В | 2h | 2h |
| 2438 | 6.11 | **тест однофазная форсунка** | 0.02d | 2026-03-16 09:00 A | 2026-03-16 09:10 A |  | 100% |  |  |  |  | 0.17h | 0.17h |
| 2439 | 6.11.1 | получить счет | 10min | 2026-03-16 09:00 A | 2026-03-16 09:10 A |  | 100% |  |  | start no earlier than 2026-03-16 09:00 | Домоводов К | 0.17h | 0.17h |
| 2440 | 6.12 | **установить фильтры жир на 1 и 2 линию** | 71.25d | 2026-03-17 09:00 A | 2026-06-24 11:00 |  | 83% | 11.88d | 198.34d |  |  | 14h | 12h |
| 2441 | 6.12.1 | сборка система фильтров 2 фильтра на 2 линии подготовиь + рама | 4h | 2026-03-17 09:00 A | 2026-03-17 13:00 A |  | 100% |  |  | start no earlier than 2026-03-17 09:00 | Тимофеев В | 4h | 4h |
| 2442 | 6.12.2 | монтаж стационарно рама под фильтры | 4h | 2026-04-22 09:00 A | 2026-04-22 13:00 A | 2441 | 100% |  |  | start no earlier than 2026-04-22 09:00 | Тимофеев В | 4h | 4h |
| 2443 | 6.12.3 | калибровка PID регулятора подачи жира | 2h | 2026-05-13 09:00 A | 2026-05-13 11:00 A |  | 100% |  |  | start no earlier than 2026-05-13 09:00 | Зорькин В; Домоводов К | 4h | 4h |
| 2444 | 6.12.4 | подготовка для установить на 1 линию | 2h | 2026-06-24 09:00 | 2026-06-24 11:00 |  |  |  | 198.34d | start no earlier than 2026-06-24 09:00 | Тимофеев В | 2h |  |
| 2445 | 6.13 | **ТЕКО 0,4 или 1,5 поставить пленку с БЕСТРОМА 620мм** | 6.09d | 2026-03-13 09:00 A | 2026-03-23 09:45 A |  | 100% |  |  |  |  | 0.75h | 0.75h |
| 2446 | 6.13.1 | запрос возможности в ТЕКО | 30min | 2026-03-13 09:00 A | 2026-03-13 09:30 A |  | 100% |  |  | start no earlier than 2026-03-13 09:00 | Зорькин В | 0.5h | 0.5h |
| 2447 | 6.13.2 | контроль ответ | 15min | 2026-03-23 09:30 A | 2026-03-23 09:45 A | 2446FS+10d | 100% |  |  | start no earlier than 2026-03-12 08:00 | Зорькин В | 0.25h | 0.25h |
| 2448 | 6.14 | **фильера с вставками для 2ц** | 0.02d | 2025-02-21 09:00 A | 2025-02-21 09:10 A |  | 100% |  |  |  |  | 0.17h | 0.17h |
| 2449 | 6.14.1 | контроль изготовления | 10min | 2025-02-21 09:00 A | 2025-02-21 09:10 A |  | 100% |  |  | start no earlier than 2025-02-21 09:00 | Шуранов Ю | 0.17h | 0.17h |

| ID | WBS | Task | Duration | Start | Finish | Predecessors | Complete | Total slack | Free slack | Constraint | Resources | Work | Actual work |
| --- | --- | --- | --- | --- | --- | --- | --- | --- | --- | --- | --- | --- | --- |
| 2450 | 6.15 | **ручка для экструдера крутиьт мотор на 1 и 2 линию** | 138d? | 2024-08-09 09:00 | 2025-02-18 18:00 |  |  | 548.59d |  |  |  | 9h |  |
| 2451 | 6.15.1 | изготовление | 1d? | 2025-02-18 09:00 | 2025-02-18 18:00 |  |  | 548.59d |  | start no earlier than 2025-02-18 09:00 | Черепанов И | 8h |  |
| 2452 | 6.15.2 | составить чертежи / разместить изготовление | 1h | 2024-08-09 09:00 | 2024-08-09 10:00 |  |  | 686.47d |  | start no earlier than 2024-08-09 09:00 | Шуранов Ю | 1h |  |
| 2453 | 6.16 | **охлаждение шкафов управления печью 1 2 3 линия** | 5d? | 2024-04-18 09:00 | 2024-04-24 18:00 |  |  | 762.59d |  |  |  | 40h |  |
| 2454 | 6.16.1 | выбор и заявка кондиционеры для щитов управления | 1d? | 2024-04-18 09:00 | 2024-04-18 18:00 |  |  | 762.59d | 0d | start no earlier than 2024-04-18 09:00 | Домоводов К | 8h |  |
| 2455 | 6.16.2 | оплата / доставка | 1d? | 2024-04-19 09:00 | 2024-04-19 18:00 | 2454 |  | 762.59d | 0d | start no earlier than 2024-04-04 09:00 | Мультан | 8h |  |
| 2456 | 6.16.3 | монтаж | 3d | 2024-04-22 09:00 | 2024-04-24 18:00 | 2455 |  | 762.59d |  | start no earlier than 2024-04-11 09:00 | Некрасов А | 24h |  |
| 2457 | 6.17 | **подача гидролизат в смеситель насосом** | 25d? | 2024-03-25 09:00 | 2024-04-26 18:00 |  |  | 760.59d |  |  |  | 200h |  |
| 2458 | 6.17.1 | выбор насоса / заявка на насос | 1d? | 2024-03-25 09:00 | 2024-03-25 18:00 |  |  | 760.59d | 0d | start no earlier than 2024-03-25 09:00 | Домоводов К | 8h |  |
| 2459 | 6.17.2 | проректирование автоматика, монтажная часть / заявка | 1d? | 2024-03-26 09:00 | 2024-03-26 18:00 | 2458 |  | 760.59d | 0d | start no earlier than 2024-03-22 09:00 | Домоводов К | 8h |  |
| 2460 | 6.17.3 | поставка оборудования | 20d | 2024-03-27 09:00 | 2024-04-23 18:00 | 2459 |  | 760.59d | 0d | start no earlier than 2024-03-22 09:00 | Мультан | 160h |  |
| 2461 | 6.17.4 | монтаж электрика | 1d? | 2024-04-24 09:00 | 2024-04-24 18:00 | 2460 |  | 760.59d | 0d | start no earlier than 2024-03-22 09:00 | Некрасов А | 8h |  |
| 2462 | 6.17.5 | монтаж трубопровод | 1d? | 2024-04-25 09:00 | 2024-04-25 18:00 | 2461 |  | 760.59d | 0d | start no earlier than 2024-03-22 09:00 | Некрасов А | 8h |  |
| 2463 | 6.17.6 | монтаж автоматика | 1d? | 2024-04-26 09:00 | 2024-04-26 18:00 | 2462 |  | 760.59d |  | start no earlier than 2024-03-22 09:00 | Некрасов А | 8h |  |
| 2464 | 6.18 | **установить форсунки на подачу жир и гидролизат** | 106.38d | 2024-03-26 09:00 A | 2024-08-21 12:00 A |  | 100% |  |  |  |  | 187h | 187h |
| 2465 | 6.18.1 | выбор тип форсунок, заявка | 1d | 2024-03-26 09:00 A | 2024-03-26 18:00 A |  | 100% |  |  | start no earlier than 2024-03-26 09:00 | Домоводов К | 8h | 8h |
| 2466 | 6.18.2 | проректирование / заявка на пневматику и электрику для управления форсунками | 1d | 2024-03-27 09:00 A | 2024-03-27 18:00 A | 2465 | 100% |  |  | start no earlier than 2024-03-22 09:00 | Домоводов К | 8h | 8h |
| 2467 | 6.18.3 | тех решение / чертеж крепления форсунок | 1d | 2024-03-28 09:00 A | 2024-03-28 18:00 A | 2466 | 100% |  |  | start no earlier than 2024-03-22 09:00 | Домоводов К | 8h | 8h |
| 2468 | 6.18.4 | доставка | 20d | 2024-03-29 09:00 A | 2024-04-25 18:00 A | 2465, 2467 | 100% |  |  | start no earlier than 2024-03-22 09:00 | Мультан | 160h | 160h |
| 2469 | 6.18.5 | монтаж механника | 2h | 2024-08-21 09:00 A | 2024-08-21 11:00 A | 2468 | 100% |  |  | start no earlier than 2024-08-21 09:00 | Тимофеев В | 2h | 2h |
| 2470 | 6.18.6 | монтаж пневматика | 1h | 2024-08-21 11:00 A | 2024-08-21 12:00 A | 2469 | 100% |  |  | start no earlier than 2024-03-22 09:00 | Тимофеев В | 1h | 1h |
| 2471 | 6.19 | **модернизация откидной воронка загрузки в барабан дрожировки** | 10.62d | 2024-05-14 09:00 A | 2024-05-28 15:00 A |  | 100% |  |  |  |  | 89h | 89h |
| 2472 | 6.19.1 | составить эскиз / заказ шарниры (при остановке экструдера) | 1h | 2024-05-14 09:00 A | 2024-05-14 10:00 A |  | 100% |  |  | start no earlier than 2024-05-14 09:00 | Шуранов Ю | 1h | 1h |
| 2473 | 6.19.2 | доставка | 10d | 2024-05-14 10:00 A | 2024-05-28 10:00 A | 2472 | 100% |  |  | start no earlier than 2024-03-14 09:00 | Мультан | 80h | 80h |
| 2474 | 6.19.3 | монгтаж | 4h | 2024-05-28 10:00 A | 2024-05-28 15:00 A | 2473 | 100% |  |  | start no earlier than 2024-05-14 09:00 | Макаревич А; Некрасов А | 8h | 8h |
| 2475 | 6.20 | модернизация ножевого узла | 1d? | 2023-12-28 09:00 | 2023-12-28 18:00 |  |  | 846.59d |  | start no earlier than 2023-12-28 09:00 |  |  |  |

| ID | WBS | Task | Duration | Start | Finish | Predecessors | Complete | Remaining | Total slack | Free slack | Constraint | Resources | Work | Actual work |
| --- | --- | --- | --- | --- | --- | --- | --- | --- | --- | --- | --- | --- | --- | --- |
| 2476 | 6.21 | **модернизация дозации воды в прекондиционер** | 0.62d | 2023-12-25 09:00 A | 2023-12-25 15:00 A |  | 100% |  |  |  |  |  | 5h | 5h |
| 2477 | 6.21.1 | установить балансировочный кран 2 линия | 1h | 2023-12-25 09:00 A | 2023-12-25 10:00 A |  | 100% |  |  |  | start no earlier than 2023-12-25 09:00 | Дедов В | 1h | 1h |
| 2478 | 6.21.2 | установить расходомер 2 линия | 2h | 2023-12-25 10:00 A | 2023-12-25 12:00 A | 2477 | 100% |  |  |  | start no earlier than 2023-12-20 09:00 | Дедов В | 2h | 2h |
| 2479 | 6.21.3 | установить расходомер 2 линия | 2h | 2023-12-25 12:00 A | 2023-12-25 15:00 A | 2478 | 100% |  |  |  | start no earlier than 2023-12-20 09:00 | Дедов В | 2h | 2h |
| 2480 | 6.22 | **заменить шланг на высоктемпературный на жир** | 1.62d? | 2024-05-14 09:00 A | 2024-05-15 15:00 A |  | 100% |  |  |  |  |  | 13h | 13h |
| 2481 | 6.22.1 | заявка / подбор | 1h | 2024-05-14 09:00 A | 2024-05-14 10:00 A |  | 100% |  |  |  | start no earlier than 2024-05-14 09:00 | Шуранов Ю | 1h | 1h |
| 2482 | 6.22.2 | доставка | 1d? | 2024-05-14 10:00 A | 2024-05-15 10:00 A | 2481 | 100% |  |  |  | start no earlier than 2023-12-13 08:00 | Малинина М | 8h | 8h |
| 2483 | 6.22.3 | замена | 4h | 2024-05-15 10:00 A | 2024-05-15 15:00 A | 2482 | 100% |  |  |  | start no earlier than 2024-01-15 09:00 | Тимофеев В | 4h | 4h |
| 2484 | 6.23 | **тепловая защита электромоторов мехнизмов** | 108.75d | 2023-12-28 09:00 A | 2024-05-28 16:00 |  | 2% | 106.58d | 738.84d |  |  |  | 100h | 2h |
| 2485 | 6.23.1 | **составить список эл моторов (нужен ток ) без теплового реле - от вибросита - до упаковки вся технология** | 75.25d | 2024-01-30 09:00 A | 2024-05-14 11:00 |  | 17% | 62.71d | 749.34d |  |  |  | 12h | 2h |
| 2486 | 6.23.1.1 | 5 цех | 2h | 2024-01-30 09:00 A | 2024-01-30 11:00 A |  | 100% |  |  |  | start no earlier than 2024-01-30 09:00 | Дедов В | 2h | 2h |
| 2487 | 6.23.1.2 | 1 цех | 4h | 2024-01-30 09:00 | 2024-01-30 13:00 |  |  |  | 824.09d |  | start no earlier than 2024-01-30 09:00 | Дедов В | 4h |  |
| 2488 | 6.23.1.3 | 2 цех | 4h | 2024-01-30 09:00 | 2024-01-30 13:00 |  |  |  | 824.09d |  | start no earlier than 2024-01-30 09:00 | Дедов В | 4h |  |
| 2489 | 6.23.1.4 | заполнитьт таблицу для заявки место-двиг-ток | 2h | 2024-05-14 09:00 | 2024-05-14 11:00 |  |  |  | 749.34d |  | start no earlier than 2024-05-14 09:00 | Шуранов Ю | 2h |  |
| 2490 | 6.23.2 | переписать список мотор-редукторов | 2h | 2023-12-28 09:00 | 2023-12-28 11:00 |  |  |  | 835.59d | 96.75d | start no earlier than 2023-12-28 09:00 | Дедов В | 2h |  |
| 2491 | 6.23.3 | заявка тепл реле | 2h | 2024-05-14 09:00 | 2024-05-14 11:00 | 2490FS+1d |  |  | 738.84d | 0d | start no earlier than 2024-05-14 09:00 | Шуранов Ю | 2h |  |
| 2492 | 6.23.4 | дост авка | 10d | 2024-05-14 11:00 | 2024-05-28 11:00 | 2491 |  |  | 738.84d | 0d | start no earlier than 2023-12-13 08:00 | Малинина М | 80h |  |
| 2493 | 6.23.5 | монтаж конвейер 2ц | 2h | 2024-05-28 11:00 | 2024-05-28 13:00 | 2491, 2492 |  |  | 738.84d | 0d | start no earlier than 2024-01-19 09:00 | Дедов В | 2h |  |
| 2494 | 6.23.6 | монтаж составить список | 2h | 2024-05-28 14:00 | 2024-05-28 16:00 | 2493 |  |  | 738.84d |  | start no earlier than 2023-12-13 08:00 | Домоводов К | 2h |  |
| 2495 | 6.24 | **устройство контроля уровня сырья в большом бункере** | 14.03d | 2023-08-16 09:00 A | 2023-09-05 09:15 |  |  | 14d | 929.56d |  |  |  | 192.25h | 0.25h |
| 2496 | 6.24.1 | заявка на датчик | 15min | 2023-08-16 09:00 A | 2023-08-16 09:15 A |  | 100% |  |  |  | start no earlier than 2023-08-14 09:00 | Лобанов И | 0.25h | 0.25h |
| 2497 | 6.24.2 | доставка | 10d | 2023-08-16 09:15 | 2023-08-30 09:15 | 2496 |  |  | 929.56d | 0d | start no earlier than 2023-03-10 09:00 | Малинина М; Домоводов К | 160h |  |
| 2498 | 6.24.3 | выполнение монажных работ | 4d | 2023-08-30 09:15 | 2023-09-05 09:15 | 2497 |  |  | 929.56d |  | start no earlier than 2023-03-10 09:00 | Подрядчик | 32h |  |
| 2499 | 6.25 | **конвейер с охладителя регулировка ленты - модернизация** | 6.25d | 2024-05-14 09:00 A | 2024-05-22 11:00 A |  | 100% |  |  |  |  |  | 50h | 50h |
| 2500 | 6.25.1 | выбор и заявка натяжные буксы | 2h | 2024-05-14 09:00 A | 2024-05-14 11:00 A |  | 100% |  |  |  | start no earlier than 2024-05-14 09:00 | Шуранов Ю | 2h | 2h |
| 2501 | 6.25.2 | доставка | 5d | 2024-05-14 11:00 A | 2024-05-21 11:00 A | 2500 | 100% |  |  |  | start no earlier than 2023-10-30 09:00 | Малинина М | 40h | 40h |
| 2502 | 6.25.3 | монтаж | 1d | 2024-05-21 11:00 A | 2024-05-22 11:00 A | 2501 | 100% |  |  |  | start no earlier than 2023-12-01 09:00 | Тимофеев В | 8h | 8h |

| ID | WBS | Task | Duration | Start | Finish | Predecessors | Complete | Remaining | Actual start | Total slack | Free slack | Constraint | Resources | Work | Actual work |
| --- | --- | --- | --- | --- | --- | --- | --- | --- | --- | --- | --- | --- | --- | --- | --- |
| 2503 | 6.26 | **прекондиционер забивается отслоением слипшегося сырья** | 204d? | 2023-08-03 09:00 | 2024-05-14 18:00 |  |  |  |  | 0d |  |  |  | 24h |  |
| 2504 | 6.26.1 | **решение тех совет** | 1d? | 2023-08-03 09:00 | 2023-08-03 18:00 |  |  |  |  |  |  |  |  | 24h |  |
| 2505 | 6.26.1.1 | вар1 - доп лопатки на выходе | 1d? | 2024-05-14 09:00 | 2024-05-14 18:00 |  |  |  |  | 748.59d |  | start no earlier than 2024-05-14 09:00 | Шуранов Ю | 8h |  |
| 2506 | 6.26.1.2 | вар 2 - вертикальные ворошители | 1d? | 2024-05-14 09:00 | 2024-05-14 18:00 |  |  |  |  | 748.59d |  | start no earlier than 2024-05-14 09:00 | Шуранов Ю | 8h |  |
| 2507 | 6.26.1.3 | вар 3 - подача пара | 1d? | 2024-05-14 09:00 | 2024-05-14 18:00 |  |  |  |  | 748.59d |  | start no earlier than 2024-05-14 09:00 | Шуранов Ю | 8h |  |
| 2508 | 6.27 | **фильтры на баки жиров перед насосами** | 439.12d | 2023-07-20 09:00 A | 2025-03-26 10:00 A |  | 100% |  |  |  |  |  |  | 4.75h | 4.75h |
| 2509 | 6.27.1 | утвердить тех решение | 1h | 2023-07-20 09:00 A | 2023-07-20 10:00 A |  | 100% |  |  |  |  | start no earlier than 2023-07-20 09:00 | Лобанов И; Домоводов К; Сапелин С | 3h | 3h |
| 2510 | 6.27.2 | купить сетку в корпусе | 30min | 2024-05-14 09:00 A | 2024-05-14 09:30 A |  | 100% |  |  |  |  | start no earlier than 2024-05-14 09:00 | Шуранов Ю | 0.5h | 0.5h |
| 2511 | 6.27.3 | купить 1/2 муфта для установки фитингов | 15min | 2025-03-26 09:00 A | 2025-03-26 09:15 A |  | 100% |  |  |  |  | start no earlier than 2025-03-26 08:00 | Шуранов Ю | 0.25h | 0.25h |
| 2512 | 6.27.4 | проверка фитингов | 1h | 2025-03-26 09:00 A | 2025-03-26 10:00 A |  | 100% |  |  |  |  | start no earlier than 2025-03-26 08:00 | Зорькин В | 1h | 1h |
| 2513 | 6.28 | **защита редутора шнеков при отказе маслянного насоса** | 20.12d? | 2023-08-02 09:00 | 2023-08-30 10:00 |  | 33% | 13.52d? | 2023-07-28 09:00 |  |  |  |  | 126.5h | 41.5h |
| 2514 | 6.28.1 | поиск фитинг для замера реле давления | 30min | 2023-07-28 09:00 A | 2023-07-28 09:30 A |  | 100% |  |  |  |  | start no earlier than 2023-07-28 09:00 | Тимофеев В | 0.5h | 0.5h |
| 2515 | 6.28.2 | заявка на фитинг | 1h | 2023-07-31 09:00 A | 2023-07-31 10:00 A | 2514 | 100% |  |  |  |  | start no earlier than 2023-07-31 09:00 | Лобанов И | 1h | 1h |
| 2516 | 6.28.3 | доставка | 5d | 2023-07-31 10:00 A | 2023-08-07 10:00 A | 2515 | 100% |  |  |  |  | start no earlier than 2023-07-31 09:00 | Малинина М | 40h | 40h |
| 2517 | 6.28.4 | заявка реле потока 1/2 или 3/4 | 1h | 2026-03-19 09:00 | 2026-03-19 10:00 |  |  |  |  | 256.97d | 0d | start no earlier than 2026-03-19 09:00 | Шуранов Ю | 1h |  |
| 2518 | 6.28.5 | доставка | 10d | 2026-03-19 10:00 | 2026-04-02 10:00 | 2517 |  |  |  | 256.97d | 1.88d | start no earlier than 2026-03-12 08:00 | Карабанов | 80h |  |
| 2519 | 6.28.6 | монтаж гидравлика | 2h | 2026-04-06 09:00 | 2026-04-06 11:00 | 2518 |  |  |  | 255.09d | 0d | start no earlier than 2026-04-06 09:00 | Тимофеев В | 2h |  |
| 2520 | 6.28.7 | монтаж электрика схема защиты + привязка к частотному приводу | 2h | 2026-04-06 11:00 | 2026-04-06 13:00 | 2519 |  |  |  | 255.09d |  | start no earlier than 2023-07-20 09:00 | Тимофеев В | 2h |  |
| 2521 | 6.29 | **подача сырья в упаковщки 1 цех** | 199.5d? | 2023-06-07 09:00 A | 2024-03-12 13:00 |  | 12% | 175.32d? |  | 794.09d |  |  |  | 37h | 8h |
| 2522 | 6.29.1 | испытание пневмотранспорта напорная магистраль | 4h | 2024-03-12 09:00 A | 2024-03-12 13:00 A |  | 100% |  |  |  |  | start no earlier than 2024-03-12 09:00 | Бобренок В; Некрасов А | 8h | 8h |
| 2523 | 6.29.2 | технологическая схема подачи продукта в упаковщики | 1d? | 2023-06-19 09:00 | 2023-06-19 18:00 |  |  |  |  | 984.59d |  | start no earlier than 2023-06-19 09:00 | Технолог | 8h |  |
| 2524 | 6.29.3 | поиск / запрорс цен на диверторы | 2h | 2023-06-07 09:00 | 2023-06-07 11:00 |  |  |  |  | 990.97d | 0d | start no earlier than 2023-06-07 09:00 | Домоводов К | 2h |  |
| 2525 | 6.29.4 | поиск / запрос цены на эжекторный приемник | 2h | 2023-06-07 11:00 | 2023-06-07 13:00 | 2524 |  |  |  | 990.97d | 0d | start no earlier than 2023-05-10 08:00 | Домоводов К | 2h |  |
| 2526 | 6.29.5 | расчет трассы | 2d | 2023-06-07 14:00 | 2023-06-09 13:00 | 2525 |  |  |  | 990.97d | 0d | start no earlier than 2023-05-10 08:00 | Домоводов К | 16h |  |
| 2527 | 6.29.6 | подбор приобритение вентилятора | 1h | 2023-06-09 14:00 | 2023-06-09 15:00 | 2526 |  |  |  | 990.97d |  | start no earlier than 2023-04-27 09:00 | Домоводов К | 1h |  |

| ID | WBS | Task | Type | Duration | Start | Finish | Predecessors | Complete | Remaining | Total slack | Free slack | Constraint | Resources | Work | Actual work |
| --- | --- | --- | --- | --- | --- | --- | --- | --- | --- | --- | --- | --- | --- | --- | --- |
| 2528 | 6.30 | **защита тэн печи при отключении вентиляторов** |  | 160.25d? | 2023-06-09 09:00 | 2024-01-19 11:00 |  |  |  | 831.34d |  |  |  | 66h |  |
| 2529 | 6.30.1 | устиановить защиту на пускателе 380 1 линия |  | 2h | 2024-01-19 09:00 | 2024-01-19 11:00 |  |  |  | 831.34d |  | start no earlier than 2024-01-19 09:00 | Тимофеев В | 2h |  |
| 2530 | 6.30.2 | составить схему защиты |  | 1d? | 2023-06-09 09:00 | 2023-06-09 18:00 |  |  |  | 983.59d | 0d | start no earlier than 2023-06-09 09:00 | Домоводов К | 8h |  |
| 2531 | 6.30.3 | заявка |  | 1d? | 2023-06-12 09:00 | 2023-06-12 18:00 | 2530 |  |  | 983.59d | 0d | start no earlier than 2023-04-25 09:00 | Домоводов К | 8h |  |
| 2532 | 6.30.4 | оплата поставка |  | 5d | 2023-06-13 09:00 | 2023-06-19 18:00 | 2531 |  |  | 983.59d | 5d | start no earlier than 2023-05-02 09:00 | Малинина М | 40h |  |
| 2533 | 6.30.5 | сборка и монтаж |  | 1d? | 2023-06-27 09:00 | 2023-06-27 18:00 | 2532 |  |  | 978.59d |  | start no earlier than 2023-06-27 09:00 | Бобренок В | 8h |  |
| 2534 | 6.31 | Настройка даты на пробнике, нужно приподнять на 3-5 мм (ждем решение технологов, информация поменялась, читать письмо от 01.09.2026) |  | 3h | 2026-09-03 09:00 A | 2026-09-03 12:00 A |  | 100% |  |  |  | start no earlier than 2026-09-03 09:00 | Тимофеев В | 3h | 3h |
| 2535 | 7 | **техника** |  | 661.25d? | 2024-05-14 09:00 A | 2026-11-10 11:00 |  | 98% | 11.9d? | 88.34d |  |  |  | 56.58h | 55.58h |
| 2536 | 7.1 | ремонт генератора - замена реле / покупка с курьером |  | 2h | 2026-11-10 09:00 A | 2026-11-10 11:00 A |  | 100% |  |  |  | start no earlier than 2026-11-10 09:00 | Некрасов А; Труфанов А | 4h | 4h |
| 2537 | 7.2 | **KAMATSU #1** |  | 1d | 2026-10-19 09:00 A | 2026-10-20 09:00 |  | 99% | 0d | 105.59d |  |  |  | 0.08h | 0.08h |
| 2538 | 7.2.1 | **заявка 19_10** |  | 1d | 2026-10-19 09:00 A | 2026-10-20 09:00 |  | 99% | 0d | 105.59d |  |  |  | 0.08h | 0.08h |
| 2539 | 7.2.1.1 | вызов АВТОБЕСТ |  | 5min | 2026-10-19 09:00 A | 2026-10-19 09:05 A |  | 100% |  |  |  | start no earlier than 2026-10-19 08:00 | Зорькин В | 0.08h | 0.08h |
| 2540 | 7.2.1.2 | рвет ремень генератора | milestone | 0d | 2026-10-20 09:00 A | 2026-10-20 09:00 A | 2539 | 100% |  |  |  | start no earlier than 2026-10-20 09:00 | Автобест |  |  |
| 2541 | 7.2.1.3 | течь "всех" патрубков - комплексная замена | milestone | 0d | 2026-10-20 09:00 A | 2026-10-20 09:00 A | 2540 | 100% |  |  |  | start no earlier than 2026-10-19 08:00 | Автобест |  |  |
| 2542 | 7.2.1.4 | течь с масл наоса гидравлики - 1р/нет подливка уровень | milestone | 0d | 2026-10-20 09:00 | 2026-10-20 09:00 | 2541 |  |  | 105.59d |  | start no earlier than 2026-10-19 08:00 | Автобест |  |  |
| 2543 | 7.3 | не заводится TRF, сломана шпилька колесо. Контроль приезда приемка работ |  | 1h | 2026-08-17 09:00 A | 2026-08-17 10:00 A |  | 100% |  |  |  | start no earlier than 2026-08-17 09:00 | Шуранов Ю | 1h | 1h |
| 2544 | 7.4 | **капремонт погрузчика коматсу короткий** |  | 51.03d | 2026-08-13 09:00 A | 2026-10-13 09:15 A |  | 100% |  |  |  |  |  | 2.75h | 2.75h |
| 2545 | 7.4.1 | заявка получить цену в тракресурс |  | 15min | 2026-08-13 09:00 A | 2026-08-13 09:15 A |  | 100% |  |  |  | start no earlier than 2026-08-13 09:00 | Домоводов К | 0.25h | 0.25h |
| 2546 | 7.4.2 | заявка получить цену в форклифт |  | 15min | 2026-08-13 09:15 A | 2026-08-13 09:30 A | 2545 | 100% |  |  |  | start no earlier than 2026-08-13 09:00 | Домоводов К | 0.25h | 0.25h |
| 2547 | 7.4.3 | получить КП 2 | milestone | 0d | 2026-08-17 09:00 A | 2026-08-17 09:00 A |  | 100% |  |  |  | start no earlier than 2026-08-17 09:00 | Домоводов К |  |  |
| 2548 | 7.4.4 | решение о дате | milestone | 0d | 2026-09-07 09:00 A | 2026-09-07 09:00 A | 2546FS+1d | 100% |  |  |  | start no earlier than 2026-09-07 09:00 | Домоводов К |  |  |
| 2549 | 7.4.5 | орг отправить погрузчик в ремонт / составить акт |  | 2h | 2026-09-01 09:00 A | 2026-09-01 11:00 A | 2546, 2548FS+1d | 100% |  |  |  | start no earlier than 2026-08-26 09:00 | Шуранов Ю | 2h | 2h |
| 2550 | 7.4.6 | контроль сроков ремонта |  | 15min | 2026-10-13 09:00 A | 2026-10-13 09:15 A | 2549FS+20d | 100% |  |  |  | start no earlier than 2026-10-13 09:00 | Зорькин В | 0.25h | 0.25h |
| 2551 | 7.5 | заказать по комплекту воздушных фильтров для погрузчиков |  | 1h | 2026-08-18 09:00 A | 2026-08-18 10:00 A |  | 100% |  |  |  | start no earlier than 2026-08-18 09:00 | Шуранов Ю | 1h | 1h |
| 2552 | 7.6 | провкрить моточасы для проведения ТО |  | 1h | 2026-08-18 09:00 A | 2026-08-18 10:00 A |  | 100% |  |  |  | start no earlier than 2026-08-18 09:00 | Шуранов Ю | 1h | 1h |
| 2553 | 7.7 | не заводиться trf погрузчик, посмотреть подачу топлива |  | 1h | 2026-05-25 08:00 A | 2026-05-25 10:00 A |  | 100% |  |  |  | start no earlier than 2026-05-25 08:00 | Тимофеев В; Шуранов Ю | 2h | 2h |
| 2554 | 7.8 | ТО карбюратора ТРФ организовать |  | 1h | 2026-05-27 09:00 A | 2026-05-27 10:00 A |  | 100% |  |  |  | start no earlier than 2026-05-27 09:00 | Шуранов Ю | 1h | 1h |
| 2555 | 7.9 | ренгулировка ремня погрузчик желтый №209490 контроль |  | 1h | 2026-05-14 09:00 A | 2026-05-14 10:00 A |  | 100% |  |  |  | start no earlier than 2026-05-14 09:00 | Шуранов Ю | 1h | 1h |
| 2556 | 7.10 | ремонт генераторов -найти фирму |  | 1d? | 2026-05-07 09:00 A | 2026-05-07 18:00 A |  | 100% |  |  |  | start no earlier than 2026-05-07 09:00 | Шуранов Ю | 8h | 8h |
| 2557 | 7.11 | греется мотор сменный погрузчик (вероятно помпа). Орг визит |  | 15min | 2026-04-27 09:00 A | 2026-04-27 09:15 A |  | 100% |  |  |  | start no earlier than 2026-04-27 08:00 | Шуранов Ю | 0.25h | 0.25h |
| 2558 | 7.12 | установить вентиляторы на погрузчики |  | 2h | 2026-04-27 08:00 A | 2026-04-27 11:00 A |  | 100% |  |  |  | start no earlier than 2026-04-27 08:00 | Тимофеев В | 2h | 2h |
| 2559 | 7.13 | заменить шланги гидравлики погрузчик ТРФ |  | 1d? | 2026-04-21 09:00 A | 2026-04-21 18:00 A |  | 100% |  |  |  | start no earlier than 2026-04-21 09:00 |  |  |  |
| 2560 | 7.14 | пригласить тракресурс |  | 1h | 2026-04-21 09:00 A | 2026-04-21 10:00 A |  | 100% |  |  |  | start no earlier than 2026-04-21 09:00 | Шуранов Ю | 1h | 1h |
| 2561 | 7.15 | проварить ковш трактора в слесарке |  | 4h | 2026-03-24 08:00 A | 2026-03-24 13:00 A |  | 100% |  |  |  | start no earlier than 2026-03-24 08:00 | Бобренок В | 4h | 4h |
| 2562 | 7.16 | контроль доставки / приемка погрузчи коматсу |  | 1h | 2026-03-13 09:00 A | 2026-03-13 10:00 A |  | 100% |  |  |  | start no earlier than 2026-03-13 09:00 | Шуранов Ю | 1h | 1h |
| 2563 | 7.17 | ремонт штабелер 5 цех ролик и опрное колесо. Контроль |  | 30min | 2026-03-13 09:00 A | 2026-03-13 09:30 A |  | 100% |  |  |  | start no earlier than 2026-03-13 09:00 | Шуранов Ю | 0.5h | 0.5h |
| 2564 | 7.18 | ремонт ковш трактор |  | 6h | 2026-03-03 09:00 A | 2026-03-03 16:00 A |  | 100% |  |  |  | start no earlier than 2026-03-03 08:00 | Некрасов А; Труфанов А | 12h | 12h |

| ID | WBS | Task | Type | Duration | Start | Finish | Predecessors | Complete | Remaining | Total slack | Constraint | Resources | Work | Actual work |
| --- | --- | --- | --- | --- | --- | --- | --- | --- | --- | --- | --- | --- | --- | --- |
| 2565 | 7.19 | **ремонт цепи желтый вилочный + ручник** |  | 0.16d | 2025-07-28 09:00 A | 2025-07-28 10:15 A |  | 100% |  |  |  |  | 1.25h | 1.25h |
| 2566 | 7.19.1 | контроль даты визита |  | 15min | 2025-07-28 09:00 A | 2025-07-28 09:15 A |  | 100% |  |  | start no earlier than 2025-07-28 09:00 | Шуранов Ю | 0.25h | 0.25h |
| 2567 | 7.19.2 | ремонт контроль \принять работы |  | 1h | 2025-07-28 09:15 A | 2025-07-28 10:15 A | 2566 | 100% |  |  | start no earlier than 2025-07-23 09:00 | Шуранов Ю | 1h | 1h |
| 2568 | 7.20 | реморнт педаль газ на 3d принтере |  | 1h | 2025-07-23 09:00 A | 2025-07-23 10:00 A |  | 100% |  |  | start no earlier than 2025-07-23 09:00 | Шуранов Ю | 1h | 1h |
| 2569 | 7.21 | реморнт педаль газ на 3d принтере |  | 1h | 2026-09-01 09:00 | 2026-09-01 10:00 |  |  |  | 149.47d | start no earlier than 2026-09-01 09:00 | Домоводов К | 1h |  |
| 2570 | 7.22 | ТО штабелеры кайтымовская орг |  | 1h | 2025-07-23 09:00 A | 2025-07-23 10:00 A |  | 100% |  |  | start no earlier than 2025-07-23 09:00 | Шуранов Ю | 1h | 1h |
| 2571 | 7.23 | заявка доводчик двери желт коматсу |  | 15min | 2024-05-14 09:00 A | 2024-05-14 09:15 A |  | 100% |  |  | start no earlier than 2024-05-14 09:00 | Шуранов Ю | 0.25h | 0.25h |
| 2572 | 7.24 | **ошибка 02а22 штабелер PS16N 414** |  | 0.12d | 2024-05-14 09:00 A | 2024-05-14 10:00 A |  | 100% |  |  |  |  | 1h | 1h |
| 2573 | 7.24.1 | составить рекламацию / вызов специалистов |  | 1h | 2024-05-14 09:00 A | 2024-05-14 10:00 A |  | 100% |  |  | start no earlier than 2024-05-14 09:00 | Шуранов Ю | 1h | 1h |
| 2574 | 7.25 | **неисправна кнопка стоп штабелер 5 цех** |  | 0.19d | 2024-05-14 09:00 A | 2024-05-14 10:30 A |  | 100% |  |  |  |  | 1.5h | 1.5h |
| 2575 | 7.25.1 | орг работы по замене калеса штабелера |  | 1h | 2024-05-14 09:00 A | 2024-05-14 10:00 A |  | 100% |  |  | start no earlier than 2024-05-14 09:00 | Шуранов Ю | 1h | 1h |
| 2576 | 7.25.2 | орг забор штабелера на ремонт гидроциондра. Договор с сервисной компанией о дате, обменть штабелер с 2 цеха |  | 30min | 2024-05-14 10:00 A | 2024-05-14 10:30 A | 2575 | 100% |  |  | start no earlier than 2024-05-14 09:00 | Шуранов Ю | 0.5h | 0.5h |
| 2577 | 7.26 | **ремонт стеклоочиститель вилочного** |  | 0.5d | 2024-05-14 09:00 A | 2024-05-14 13:00 A |  | 100% |  |  |  |  | 5h | 5h |
| 2578 | 7.26.1 | осмотр механизма чтто сломалось |  | 4h | 2024-05-14 09:00 A | 2024-05-14 13:00 A |  | 100% |  |  | start no earlier than 2024-05-14 09:00 | Шуранов Ю | 4h | 4h |
| 2579 | 7.26.2 | заявка на покупку стеклоочист |  | 1h | 2024-05-14 09:00 A | 2024-05-14 10:00 A |  | 100% |  |  | start no earlier than 2024-05-14 09:00 | Шуранов Ю | 1h | 1h |
| 2580 | 7.27 | купить ремень на генератор |  | 2h | 2024-05-14 09:00 A | 2024-05-14 11:00 A |  | 100% |  |  | start no earlier than 2024-05-14 09:00 | Шуранов Ю | 2h | 2h |
| 2581 | 8 | **Лаборатория** |  | 0.06d | 2026-04-20 09:00 A | 2026-04-20 09:30 A |  | 100% |  |  |  |  | 1h | 1h |
| 2582 | 8.1 | Отнести старый бульбулятор в архив |  | 30min | 2026-04-20 09:00 A | 2026-04-20 09:30 A |  | 100% |  |  | start no earlier than 2026-04-20 09:00 | Тимофеев В | 0.5h | 0.5h |
| 2583 | 8.2 | Отнести короб от нового бульбулятора тоже в архив |  | 30min | 2026-04-20 09:00 A | 2026-04-20 09:30 A |  | 100% |  |  | start no earlier than 2026-04-20 09:00 | Тимофеев В | 0.5h | 0.5h |
| 2584 | 9 | **слесарное помещение** |  | 135d? | 2026-06-11 09:00 A | 2026-11-29 13:00 |  | 74% | 35.47d? | 72.59d |  |  | 87.83h | 60.33h |
| 2585 | 9.1 | Изготовить и установить козырьки над кнопками ворот (2ц, там где ключ, там где звонок), посмотреть, где еще можно поставить | manual | 3h | 2026-11-29 09:00 | 2026-11-29 12:00 |  |  |  |  | start no earlier than 2026-11-29 09:00 | Некрасов А | 3h |  |
| 2586 | 9.2 | С желтого склада утащить всю ненужную требуху на синий, освободить полки. Утащить вентиляцию. | manual | 4h | 2026-11-29 09:00 | 2026-11-29 13:00 |  |  |  |  | start no earlier than 2026-11-29 09:00 | Некрасов А | 4h |  |
| 2587 | 9.3 | Подготовка к инвентаризации |  | 6h | 2026-11-16 09:00 | 2026-11-16 16:00 |  |  |  | 81.84d | start no earlier than 2026-11-16 08:00 | Тимофеев В | 6h |  |
| 2588 | 9.4 | Собрать вакуумный насос от поломоечной машинки |  | 2h | 2026-11-10 09:00 | 2026-11-10 11:00 |  |  |  | 88.34d | start no earlier than 2026-11-10 09:00 | Макаревич А; Николаев | 4h |  |
| 2589 | 9.5 | Доделать 3 треугольника - покрасить / расставить | manual | 3h | 2026-11-10 09:00 | 2026-11-10 12:00 |  |  |  |  | start no earlier than 2026-11-10 09:00 | Макаревич А; Николаев | 6h |  |
| 2590 | 9.6 | Пересобрать редуктор привода печи, привезли 02.11.26, собран только что бы проверить венец. Обязательно смазать вручную подшипник на валу солидолом или синькой. |  | 2h | 2026-11-04 09:00 A | 2026-11-04 11:00 A |  | 100% |  |  | start no earlier than 2026-11-04 09:00 | Макаревич А | 2h | 2h |
| 2591 | 9.7 | Изучение инструкции по водоподготовке воды 1 цех/ предложения по запуску и реализации |  | 3h | 2026-11-03 09:00 | 2026-11-03 12:00 |  |  |  | 95.22d | start no earlier than 2026-11-03 09:00 | Николаев | 3h |  |

| ID | WBS | Task | Type | Duration | Start | Finish | Predecessors | Complete | Total slack | Constraint | Resources | Work | Actual work |
| --- | --- | --- | --- | --- | --- | --- | --- | --- | --- | --- | --- | --- | --- |
| 2592 | 9.8 | **Модернизация люльки** |  | 1d | 2026-10-31 09:00 A | 2026-11-02 18:00 A |  | 100% |  |  |  | 16h | 16h |
| 2593 | 9.8.1 | сделать вставку в люльку со ступенькой и перилами, для возможности подниматься выше. Высота ступеньки по нижнюю перилину, высота перила нужно определить внутреннюю часть скреплять на болты | manual | 2d | 2026-10-31 09:00 A | 2026-11-02 18:00 A |  | 100% |  | start no earlier than 2026-10-31 09:00 | Макаревич А | 16h | 16h |
| 2594 | 9.9 | Доработка кронштейна для оснастки Бестрома по ТЗ труфанова |  | 3h | 2026-10-23 09:00 A | 2026-10-23 12:00 A |  | 100% |  | start no earlier than 2026-10-23 08:00 | Макаревич А | 3h | 3h |
| 2595 | 9.10 | Ремонт насоса для гидролизата 2 цех, который снимали в четверг 22.10.26 |  | 2h | 2026-10-23 09:00 A | 2026-10-23 11:00 A |  | 100% |  | start no earlier than 2026-10-23 08:00 | Макаревич А | 2h | 2h |
| 2596 | 9.11 | Дефектовка болера со склада упаковки, выяснить почему не работает с проверкой под водой, болер снят |  | 2h | 2026-10-20 09:00 A | 2026-10-20 11:00 A |  | 100% |  | start no earlier than 2026-10-20 09:00 | Бобренок В | 2h | 2h |
| 2597 | 9.12 | Заварить обруч от сеялки, лежит в слесарке |  | 1h | 2026-10-13 09:00 A | 2026-10-13 10:00 A |  | 100% |  | start no earlier than 2026-10-13 08:00 | Бобренок В | 1h | 1h |
| 2598 | 9.13 | Собрать насосы НШГ какие можно и какие есть в слесарке. Сообщить по количеству Б/У насосов, новых и количество ремкомплекта |  | 2h | 2026-10-14 09:00 A | 2026-10-14 11:00 A |  | 100% |  | start no earlier than 2026-10-14 08:00 | Бобренок В | 2h | 2h |
| 2599 | 9.14 | **Ремонт двигателя от поломоечной машинки** |  | 13.25d | 2026-10-13 09:00 A | 2026-10-29 11:00 A |  | 100% |  |  |  | 3.33h | 3.33h |
| 2600 | 9.14.1 | Заявка на подшипник |  | 10min | 2026-10-13 09:00 A | 2026-10-13 09:10 A |  | 100% |  | start no earlier than 2026-10-13 09:00 | Зорькин В | 0.17h | 0.17h |
| 2601 | 9.14.2 | контроль |  | 10min | 2026-10-20 09:00 A | 2026-10-20 09:10 A | 2600 | 100% |  | start no earlier than 2026-10-20 09:00 | Зорькин В | 0.17h | 0.17h |
| 2602 | 9.14.3 | Сборка двигателя обратно |  | 2h | 2026-10-29 09:00 A | 2026-10-29 11:00 A | 2601 | 100% |  | start no earlier than 2026-10-29 09:00 | Бобренок В | 2h | 2h |
| 2603 | 9.14.4 | Снять прикипевшую часть подшипника с вала насоса поломоечной машинки. |  | 1h | 2026-10-13 09:00 A | 2026-10-13 10:00 A | 2602 | 100% |  | start no earlier than 2026-10-13 08:00 | Бобренок В | 1h | 1h |
| 2604 | 9.15 | Доделать электрод | manual | 2h | 2026-10-11 09:00 A | 2026-10-11 11:00 A | 2605 | 100% |  |  | Бобренок В | 2h | 2h |
| 2605 | 9.16 | Разбор полок на большом стеллаже, наведенеие порядка | manual | 3h | 2026-10-10 09:00 A | 2026-10-10 12:00 A |  | 100% |  | start no earlier than 2026-10-10 09:00 | Бундин В | 3h | 3h |
| 2606 | 9.17 | Ремонт электродов парогенератора, один из электродов травит, пересобрать |  | 3h | 2026-10-05 09:00 A | 2026-10-05 12:00 A |  | 100% |  | start no earlier than 2026-10-05 09:00 | Бобренок В | 3h | 3h |
| 2607 | 9.18 | **уборка и сортировка. Приготовить, дневные проверят и продолжат** |  | 3.25d | 2026-09-22 09:00 A | 2026-09-25 11:00 A |  | 100% |  |  |  | 9h | 9h |
| 2608 | 9.18.1 | освободить стеллаж для оперативного хранения с ФИО |  | 1h | 2026-09-22 16:00 A | 2026-09-22 17:00 A | 2611 | 100% |  | start no earlier than 2026-09-22 09:00 | Макаревич А | 1h | 1h |
| 2609 | 9.18.2 | куча №1 - не годное на выброс |  | 2h | 2026-09-22 09:00 A | 2026-09-22 11:00 A |  | 100% |  | start no earlier than 2026-09-22 09:00 | Макаревич А | 2h | 2h |
| 2610 | 9.18.3 | куча №2 - годное, но хранить нужно на дальних складах |  | 2h | 2026-09-22 11:00 A | 2026-09-22 13:00 A | 2609 | 100% |  | start no earlier than 2026-09-21 09:00 | Макаревич А | 2h | 2h |
| 2611 | 9.18.4 | куча №3 - не понятно где хранить. |  | 2h | 2026-09-22 14:00 A | 2026-09-22 16:00 A | 2610 | 100% |  | start no earlier than 2026-09-18 08:00 | Макаревич А | 2h | 2h |
| 2612 | 9.18.5 | сортировка и перемещение мусор / металлолм/ дальние стеллажи |  | 2h | 2026-09-25 09:00 A | 2026-09-25 11:00 A |  | 100% |  | start no earlier than 2026-09-25 09:00 | Бундин В | 2h | 2h |
| 2613 | 9.19 | отвезти паллет возле слесарки в синий | manual | 1h | 2026-08-30 09:00 A | 2026-08-30 10:00 A |  | 100% |  | start no earlier than 2026-08-30 09:00 | Бундин В | 1h | 1h |
| 2614 | 9.20 | заварить хомут от деко 5 ц. |  | 2h | 2026-07-02 09:00 A | 2026-07-02 11:00 A |  | 100% |  | start no earlier than 2026-07-02 09:00 | Тимофеев В | 2h | 2h |
| 2615 | 9.21 | доставить временно наш компрессор на 3 склад для обдува погрузчиков | manual | 1h | 2026-06-29 09:00 A | 2026-06-29 10:00 A |  | 100% |  | start no earlier than 2026-06-29 09:00 | Тимофеев В | 1h | 1h |
| 2616 | 9.22 | ремонт 2-х ручных запайщиков- запчасти на складе (нагревательные блоки, тены) | manual | 2h | 2026-06-27 09:00 A | 2026-06-27 11:00 A |  | 100% |  | start no earlier than 2026-06-27 09:00 | Дедов В | 2h | 2h |
| 2617 | 9.23 | оставляем порядок после своей смены в слесарке |  | 0.5h | 2026-06-12 09:00 | 2026-06-12 09:30 |  |  | 206.53d | start no earlier than 2026-06-12 09:00 | Дедов В; Бобренок В; Бундин В | 1.5h |  |
| 2618 | 9.24 | Проверка напольных весов, почему не работают, возможно отошел контакт |  | 2h | 2026-07-24 09:00 A | 2026-07-24 11:00 A |  | 100% |  | start no earlier than 2026-07-24 09:00 | Бундин В | 2h | 2h |
| 2619 | 9.25 | уборка |  | 0.25d? | 2026-06-11 09:00 A | 2026-06-11 11:00 A |  | 100% |  |  | Труфанов А | 2h | 2h |
| 2620 | 9.26 | проверить весы настольные (показывают вес больше, если получится калибровать) |  | 2h | 2026-06-11 09:00 A | 2026-06-11 11:00 A |  | 100% |  | start no earlier than 2026-06-11 09:00 | Дедов В | 2h | 2h |

| ID | WBS | Task | Type | Duration | Start | Finish | Predecessors | Complete | Remaining | Total slack | Constraint | Resources | Work | Actual work |
| --- | --- | --- | --- | --- | --- | --- | --- | --- | --- | --- | --- | --- | --- | --- |
| 2621 | 10 | **ЗИП ремонт** |  | 687.25d? | 2024-05-09 09:00 A | 2026-12-09 11:00 |  | 55% | 309.45d? | 65.34d |  |  | 865.42h | 426.58h |
| 2622 | 10.1 | ремонт электродов с парогенератора, которые в врестаке |  | 3h | 2026-11-25 09:00 A | 2026-11-25 12:00 A |  | 100% |  |  | start no earlier than 2026-11-25 09:00 | Николаев | 3h | 3h |
| 2623 | 10.2 | ремонт обручей от вибросит |  | 3h | 2026-11-24 09:00 | 2026-11-24 12:00 |  |  |  | 76.22d | start no earlier than 2026-11-24 09:00 | Николаев | 3h |  |
| 2624 | 10.3 | ремонт сеток от печек. Если не сверлиться - не сверлить. Нарезать пластины и заготовки , сверлить |  | 3h | 2026-11-24 09:00 | 2026-11-24 12:00 |  |  |  | 76.22d | start no earlier than 2026-11-24 09:00 | Николаев | 3h |  |
| 2625 | 10.4 | Со 2 цеха привезти редуктор от прекондиционера в слесарку и поставить на рабочий стол, мычалками перецепить и вилами положить на стол, раскидать его, отдефектовать | manual | 4h | 2026-11-21 09:00 | 2026-11-21 13:00 |  |  |  |  | start no earlier than 2026-11-21 09:00 | Бундин В | 4h |  |
| 2626 | 10.5 | Ремонт электродов в слесарке (1 и 2 цех) нержа в доль стелажа, пластины на желтом складе | manual | 3h | 2026-11-21 09:00 A | 2026-11-21 12:00 A |  | 100% |  |  | start no earlier than 2026-11-21 09:00 | Тимофеев В | 3h | 3h |
| 2627 | 10.6 | Перебрать насос гидрализата винтовой |  | 1h | 2026-11-17 09:00 A | 2026-11-17 10:00 A |  | 100% |  |  | start no earlier than 2026-11-17 08:00 | Тимофеев В | 1h | 1h |
| 2628 | 10.7 | Восстановление электродов в слесарке |  | 3h | 2026-11-17 09:00 A | 2026-11-17 12:00 A |  | 100% |  |  | start no earlier than 2026-11-17 09:00 | Макаревич А; Николаев | 6h | 6h |
| 2629 | 10.8 | бойлер с 2ц на ремонт / проверка потенциометра |  | 2h | 2026-11-13 09:00 A | 2026-11-13 11:00 A |  | 100% |  |  | start no earlier than 2026-11-13 08:00 | Бундин В | 2h | 2h |
| 2630 | 10.9 | Восстановление платы от пробника, зачистка контактов, где погоревшие пины соединение через внешний клемник (отметить статус задачи) | manual | 2h | 2026-11-03 09:00 | 2026-11-03 11:00 |  |  |  |  | start no earlier than 2026-11-03 09:00 | Дедов В | 2h |  |
| 2631 | 10.10 | **ремонт блоков управления датерами** |  | 0.38d | 2026-10-02 09:00 A | 2026-10-02 12:00 A |  | 100% |  |  |  |  | 3h | 3h |
| 2632 | 10.10.1 | составить схему подключения - мотор / датчик / тен / -- первые компоненты на плате блока (основной упор на эту задачу) Продолжаем делать |  | 3h | 2026-10-02 09:00 A | 2026-10-02 12:00 A |  | 100% |  |  | start no earlier than 2026-10-02 09:00 | Дедов В | 3h | 3h |
| 2633 | 10.11 | **Собрать редуктор питателя, который разобранный на верстаке** |  | 7.09d | 2026-09-28 09:00 A | 2026-10-06 09:45 A |  | 100% |  |  |  |  | 2.75h | 2.75h |
| 2634 | 10.11.1 | отпраитвь на перемонтку |  | 15min | 2026-09-28 09:00 A | 2026-09-28 09:15 A |  | 100% |  |  | start no earlier than 2026-09-28 09:00 | Зорькин В | 0.25h | 0.25h |
| 2635 | 10.11.2 | контроль |  | 15min | 2026-10-04 09:15 A | 2026-10-04 09:30 A | 2634FS+5d | 100% |  |  | start no earlier than 2026-09-25 08:00 | Зорькин В | 0.25h | 0.25h |
| 2636 | 10.11.3 | орг забрать |  | 15min | 2026-10-06 09:30 A | 2026-10-06 09:45 A | 2635FS+2d | 100% |  |  | start no earlier than 2026-09-25 08:00 | Зорькин В | 0.25h | 0.25h |
| 2637 | 10.11.4 | сборка |  | 2h | 2026-09-29 09:00 A | 2026-09-29 11:00 A | 2636FS+1d | 100% |  |  | start no earlier than 2026-09-25 08:00 | Бундин В | 2h | 2h |
| 2638 | 10.12 | **Дефектовка двигателя от питателя прекондиционера/ прозвонить (возможно подготовить для сдачи на перемотку)** |  | 8.25d | 2026-09-04 09:00 A | 2026-09-13 11:00 A |  | 100% |  |  |  |  | 4h | 4h |
| 2639 | 10.12.1 | разбрка тест |  | 1h | 2026-09-04 09:00 A | 2026-09-04 10:00 A |  | 100% |  |  | start no earlier than 2026-09-04 09:00 | Бобренок В | 1h | 1h |
| 2640 | 10.12.2 | тест 2 с редуктором |  | 1h | 2026-09-08 09:00 A | 2026-09-08 10:00 A |  | 100% |  |  | start no earlier than 2026-09-08 08:00 | Тимофеев В | 1h | 1h |
| 2641 | 10.12.3 | разборка ревизия |  | 2h | 2026-09-13 09:00 A | 2026-09-13 11:00 A |  | 100% |  |  | start no earlier than 2026-09-13 09:00 | Макаревич А | 2h | 2h |
| 2642 | 10.13 | **ремонт редутор печи №?** |  | 26.31d | 2026-09-05 09:00 A | 2026-10-02 11:30 A |  | 100% |  |  |  |  | 5.25h | 5.25h |
| 2643 | 10.13.1 | дефектовка редуктора печи 2 цех, лежит в слесарке |  | 2h | 2026-09-05 09:00 A | 2026-09-05 11:00 A |  | 100% |  |  | start no earlier than 2026-09-05 09:00 | Макаревич А | 2h | 2h |
| 2644 | 10.13.2 | возможно ли установить тавотницу на подшипник червяка? |  | 15min | 2026-09-10 09:00 A | 2026-09-10 09:15 A |  | 100% |  |  | start no earlier than 2026-09-10 09:00 | Тимофеев В | 0.25h | 0.25h |
| 2645 | 10.13.3 | заказ шестерни червя в ЗИП - отправить курьера |  | 15min | 2026-09-09 09:00 A | 2026-09-09 09:15 A | 2643 | 100% |  |  | start no earlier than 2026-09-09 09:00 | Зорькин В | 0.25h | 0.25h |
| 2646 | 10.13.4 | контроль изг шетесиерен |  | 15min | 2026-09-19 09:15 A | 2026-09-19 09:30 A | 2645FS+10d | 100% |  |  | start no earlier than 2026-09-08 08:00 | Зорькин В | 0.25h | 0.25h |
| 2647 | 10.13.5 | заказ шестерни червя в ЗИП - отправить курьера |  | 15min | 2026-09-21 09:00 A | 2026-09-21 09:15 A | 2643 | 100% |  |  | start no earlier than 2026-09-21 09:00 | Зорькин В | 0.25h | 0.25h |
| 2648 | 10.13.6 | контроль изг шетесиерен |  | 15min | 2026-10-01 09:15 A | 2026-10-01 09:30 A | 2647FS+10d | 100% |  |  | start no earlier than 2026-09-08 08:00 | Зорькин В | 0.25h | 0.25h |
| 2649 | 10.13.7 | сборка редутор венец |  | 2h | 2026-10-02 09:30 A | 2026-10-02 11:30 A | 2646FS+1d, 2648FS+1d | 100% |  |  | start no earlier than 2026-09-20 09:00 | Макаревич А | 2h | 2h |
| 2650 | 10.14 | ремонт оборотные сетки-поддоны от печи от 2ц |  | 2h | 2026-09-13 09:00 A | 2026-09-13 11:00 A |  | 100% |  |  | start no earlier than 2026-09-13 09:00 | Макаревич А | 2h | 2h |
| 2651 | 10.15 | подготовить электродную группу для 2 цеха |  | 3h | 2026-08-25 09:00 A | 2026-08-25 12:00 A |  | 100% |  |  | start no earlier than 2026-08-25 08:00 | Бундин В | 3h | 3h |
| 2652 | 10.16 | пепенос трубы нерж с 3ц на синий склад |  | 1h | 2026-08-24 09:00 A | 2026-08-24 10:00 A |  | 100% |  |  | start no earlier than 2026-08-24 09:00 | Некрасов А; Тимофеев В | 2h | 2h |
| 2653 | 10.17 | ремонт электрод парогенертора для 2ц |  | 4h | 2026-08-18 09:00 A | 2026-08-18 13:00 A |  | 100% |  |  | start no earlier than 2026-08-18 09:00 | Бобренок В | 4h | 4h |
| 2654 | 10.18 | перевоз батареи свинец от погрузчика на синий склад |  | 30min | 2026-08-12 09:00 A | 2026-08-12 09:30 A |  | 100% |  |  | start no earlier than 2026-08-12 09:00 | Макаревич А | 0.5h | 0.5h |

| ID | WBS | Task | Type | Duration | Start | Finish | Predecessors | Complete | Actual start | Actual finish | Constraint | Resources | Work | Actual work |
| --- | --- | --- | --- | --- | --- | --- | --- | --- | --- | --- | --- | --- | --- | --- |
| 2655 | 10.19 | **заточка ножей** |  | 6.03d | 2026-08-13 09:00 A | 2026-08-21 09:15 A |  | 100% |  |  |  |  | 0.5h | 0.5h |
| 2656 | 10.19.1 | разместить ЛТ70 курьеру, отметиь журнал |  | 15min | 2026-08-13 09:00 A | 2026-08-13 09:15 A |  | 100% |  |  | start no earlier than 2026-08-13 09:00 | Зорькин В | 0.25h | 0.25h |
| 2657 | 10.19.2 | контроль, орг забрать |  | 15min | 2026-08-21 09:00 A | 2026-08-21 09:15 A |  | 100% |  |  | start no earlier than 2026-08-21 09:00 | Шуранов Ю | 0.25h | 0.25h |
| 2658 | 10.20 | **ножевой узел для 1ц** |  | 0.03d | 2026-08-13 09:00 A | 2026-08-13 09:15 A |  | 100% |  |  |  |  | 0.25h | 0.25h |
| 2659 | 10.20.1 | контроль поставки |  | 15min | 2026-08-13 09:00 A | 2026-08-13 09:15 A |  | 100% |  |  | start no earlier than 2026-08-13 09:00 | Домоводов К | 0.25h | 0.25h |
| 2660 | 10.21 | подготовить электроды для парогенератора цех 1 |  | 4h | 2026-08-05 08:00 A | 2026-08-05 13:00 A |  | 100% |  |  | start no earlier than 2026-08-05 08:00 | Макаревич А | 4h | 4h |
| 2661 | 10.22 | восстановить голову насоса гидрализата (в слесарке) подписать | manual | 2h | 2026-08-01 09:00 A | 2026-08-01 11:00 A |  | 100% |  |  | start no earlier than 2026-08-01 09:00 | Бундин В | 2h | 2h |
| 2662 | 10.23 | **восстановить сетку спечи (она в слесарке)** |  | 1d? | 2026-08-14 09:00 | 2026-08-14 18:00 |  | 100% | 2026-08-03 09:00 | 2026-08-03 18:00 |  |  | 8h | 8h |
| 2663 | 10.23.1 | заказать сверла по нерж. М5 и М6 |  | 1d? | 2026-08-03 09:00 A | 2026-08-03 18:00 A |  | 100% |  |  | start no earlier than 2026-08-03 08:00 | Шуранов Ю | 8h | 8h |
| 2664 | 10.24 | подготовить антиэлектроды по аналогии с нашими (все на складе) | manual | 5h | 2026-08-01 09:00 A | 2026-08-01 15:00 A |  | 100% |  |  | start no earlier than 2026-08-01 09:00 | Бундин В | 5h | 5h |
| 2665 | 10.25 | подготовить электродную группу для парогенератора |  | 3h | 2026-06-12 09:00 A | 2026-06-12 12:00 A |  | 100% |  |  | start no earlier than 2026-06-12 09:00 | Бундин В | 3h | 3h |
| 2666 | 10.26 | собрать 2 стула для ИТР |  | 2h | 2026-06-07 09:00 A | 2026-06-08 11:00 A |  | 100% |  |  | start no earlier than 2026-06-07 09:00 | Бобренок В | 2h | 2h |
| 2667 | 10.27 | **покрасить швейлеры возле слесарки(грунтовка, затем серый цвет)** |  | 0.25d | 2026-06-12 09:00 A | 2026-06-12 11:00 A |  | 100% |  |  |  | Бобренок В | 4h | 4h |
| 2668 | 10.27.1 | болгаркой убрать сварочные сопли и покрасить |  | 2h | 2026-06-12 09:00 A | 2026-06-12 11:00 A |  | 100% |  |  | start no earlier than 2026-06-12 09:00 | Бундин В | 2h | 2h |
| 2669 | 10.28 | подготовить фильтры для кондиционеров, замена фильтр ткани. Находятся в слесарке | manual | 2h | 2026-06-14 09:00 A | 2026-06-14 11:00 A |  | 100% |  |  | start no earlier than 2026-06-14 09:00 | Бундин В | 2h | 2h |
| 2670 | 10.29 | **заявка на фильеры от 02.06 1ц и 2ц** |  | 7.19d | 2026-06-02 09:00 A | 2026-06-11 10:30 A |  | 100% |  |  |  |  | 4.5h | 4.5h |
| 2671 | 10.29.1 | подготовить чертежи по ТЗ |  | 2h | 2026-06-02 09:00 A | 2026-06-02 11:00 A |  | 100% |  |  | start no earlier than 2026-06-02 09:00 | Домоводов К | 2h | 2h |
| 2672 | 10.29.2 | **партия 1** |  | 6.19d | 2026-06-03 09:00 A | 2026-06-11 10:30 A |  | 100% |  |  |  |  | 1.5h | 1.5h |
| 2673 | 10.29.2.1 | разместить токарю заварка фильер + шлифвка |  | 30min | 2026-06-03 09:00 A | 2026-06-03 09:30 A |  | 100% |  |  | start no earlier than 2026-06-03 08:00 | Шуранов Ю | 0.5h | 0.5h |
| 2674 | 10.29.2.2 | забрать заваренные / разместить на изготовление дюз |  | 30min | 2026-06-07 09:30 A | 2026-06-08 09:30 A | 2673FS+4d | 100% |  |  | start no earlier than 2026-06-03 08:00 | Шуранов Ю | 0.5h | 0.5h |
| 2675 | 10.29.2.3 | забрать готовые |  | 30min | 2026-06-11 10:00 A | 2026-06-11 10:30 A | 2674FS+4d | 100% |  |  | start no earlier than 2026-06-03 08:00 | Шуранов Ю | 0.5h | 0.5h |
| 2676 | 10.29.3 | **партия 2** |  | 3.12d | 2026-06-04 09:00 A | 2026-06-09 10:00 A |  | 100% |  |  |  |  | 1h | 1h |
| 2677 | 10.29.3.1 | разместить готовые балванки на прожиг отверстий |  | 30min | 2026-06-04 09:00 A | 2026-06-04 09:30 A |  | 100% |  |  | start no earlier than 2026-06-04 09:00 | Шуранов Ю | 0.5h | 0.5h |
| 2678 | 10.29.3.2 | забрать готовые |  | 30min | 2026-06-09 09:30 A | 2026-06-09 10:00 A | 2677FS+5d | 100% |  |  | start no earlier than 2026-06-03 08:00 | Шуранов Ю | 0.5h | 0.5h |

| ID | WBS | Task | Duration | Start | Finish | Predecessors | Complete | Total slack | Free slack | Constraint | Resources | Work | Actual work |
| --- | --- | --- | --- | --- | --- | --- | --- | --- | --- | --- | --- | --- | --- |
| 2679 | 10.30 | **зип тенов на печь 70 и 85 + шестерни питатель 70** | 30.06d | 2026-05-28 09:00 A | 2026-07-09 09:30 A |  | 100% |  |  |  |  | 0.75h | 0.75h |
| 2680 | 10.30.1 | запрос Настя, получить счет | 15min | 2026-05-28 09:00 A | 2026-05-28 09:15 A |  | 100% |  |  | start no earlier than 2026-05-28 09:00 | Домоводов К | 0.25h | 0.25h |
| 2681 | 10.30.2 | оплата | 15min | 2026-06-04 09:00 A | 2026-06-04 09:15 A | 2680FS+2d | 100% |  |  | start no earlier than 2026-06-04 09:00 | Домоводов К | 0.25h | 0.25h |
| 2682 | 10.30.3 | контроль поставки | 15min | 2026-07-09 09:15 A | 2026-07-09 09:30 A | 2681FS+30d | 100% |  |  | start no earlier than 2026-05-27 08:00 | Зорькин В | 0.25h | 0.25h |
| 2683 | 10.31 | подготовка к инвентаризации | 3h | 2026-05-26 09:00 A | 2026-05-26 12:00 A |  | 100% |  |  | start no earlier than 2026-05-26 09:00 | Бундин В | 3h | 3h |
| 2684 | 10.32 | посчитать и записать какие и какое количество автоматов и контакторов есть в слесарке | 1h | 2026-05-23 09:00 A | 2026-05-25 10:00 A |  | 100% |  |  | start no earlier than 2026-05-23 09:00 | Макаревич А | 1h | 1h |
| 2685 | 10.33 | передать весы (малые в 1 цех, большие в 5 цех) со слесарки | 1h | 2026-05-22 09:00 A | 2026-05-22 10:00 A |  | 100% |  |  | start no earlier than 2026-05-22 09:00 | Макаревич А | 1h | 1h |
| 2686 | 10.34 | проверить работает или нет двигатель с накопительного стола цех 1- Валентин покажет. | 1h | 2026-05-19 08:00 A | 2026-05-19 10:00 A |  | 100% |  |  | start no earlier than 2026-05-19 08:00 | Дедов В | 1h | 1h |
| 2687 | 10.35 | наточить ножи для ц.2 | 1h | 2026-05-19 09:00 A | 2026-05-19 10:00 A |  | 100% |  |  | start no earlier than 2026-05-19 09:00 | Тимофеев В | 1h | 1h |
| 2688 | 10.36 | подготовка к инвентаризации (посчитать какие и метраж кабеля в слесарке и желтом нашей половине) | 2h | 2026-05-24 09:00 A | 2026-05-25 11:00 A |  | 100% |  |  | start no earlier than 2026-05-24 09:00 | Дедов В | 2h | 2h |
| 2689 | 10.37 | подготовить рабочее место в слесарке для работы на кровле Олега | 1h | 2026-05-15 09:00 A | 2026-05-15 10:00 A |  | 100% |  |  | start no earlier than 2026-05-15 09:00 | Некрасов А; Труфанов А; Тимофеев В; Макаревич А | 4h | 4h |
| 2690 | 10.38 | **ремонт инсекютер с 1ц в слесарке. Повесить в цехе, зафиксировать в журнал мастера** | 0.12d | 2026-05-19 09:00 A | 2026-05-19 10:00 A |  | 100% |  |  |  |  | 1h | 1h |
| 2691 | 10.38.1 | взять светильник "антимуха" у Луговских и повесить на входе в корридор между раздевалками | 1h | 2026-05-19 09:00 A | 2026-05-19 10:00 A |  | 100% |  |  | start no earlier than 2026-05-19 09:00 | Дедов В | 1h | 1h |
| 2692 | 10.39 | **орг ремонт мотор с вращаюбщего барабана 1ц** | 0.16d | 2026-09-01 09:00 | 2026-09-01 10:15 |  |  | 149.44d |  |  |  | 1.25h |  |
| 2693 | 10.39.1 | подписать шильдик. На веревочке картонка / пластик | 15min | 2026-09-01 09:00 | 2026-09-01 09:15 |  |  | 149.44d | 0d | start no earlier than 2026-09-01 09:00 | Шуранов Ю | 0.25h |  |
| 2694 | 10.39.2 | орг ремонт | 1h | 2026-09-01 09:15 | 2026-09-01 10:15 | 2693 |  | 149.44d |  | start no earlier than 2026-09-01 09:00 | Шуранов Ю | 1h |  |
| 2695 | 10.40 | получить на складе резинки на двери прекондиционеров и выдать цех 1 и 2 | 1h | 2026-05-11 09:00 A | 2026-05-11 10:00 A |  | 100% |  |  | start no earlier than 2026-05-11 09:00 |  |  |  |
| 2696 | 10.41 | подготовить электродную группу для 1 цеха | 3h | 2026-05-11 09:00 A | 2026-05-11 12:00 A |  | 100% |  |  | start no earlier than 2026-05-11 09:00 | Бундин В | 3h | 3h |
| 2697 | 10.42 | на емкость нерж сделать сгон и поплавок | 4h | 2026-05-09 09:00 A | 2026-05-11 13:00 A |  | 100% |  |  | start no earlier than 2026-05-09 09:00 | Макаревич А | 4h | 4h |
| 2698 | 10.43 | отвезти термоодеяло с слесарки в синий склад | 1h | 2026-05-11 09:00 A | 2026-05-11 10:00 A |  | 100% |  |  | start no earlier than 2026-05-11 09:00 | Бундин В | 1h | 1h |
| 2699 | 10.44 | приехали дроселя для светильников, восстановить не рабочие | 4h | 2026-05-12 09:00 A | 2026-05-12 13:00 A |  | 100% |  |  | start no earlier than 2026-05-12 09:00 | Бундин В | 4h | 4h |
| 2700 | 10.45 | **орг ремонт мотор с конв №2 1 линия 1ц** | 0.25d | 2026-09-01 09:00 | 2026-09-01 11:00 |  |  | 149.34d |  |  |  | 2h |  |
| 2701 | 10.45.1 | подписать шильдик | 60min | 2026-09-01 09:00 | 2026-09-01 10:00 |  |  | 149.34d | 0d | start no earlier than 2026-09-01 09:00 | Шуранов Ю | 1h |  |
| 2702 | 10.45.2 | орг ремонт | 1h | 2026-09-01 10:00 | 2026-09-01 11:00 | 2701 |  | 149.34d |  | start no earlier than 2026-05-14 09:00 | Шуранов Ю | 1h |  |
| 2703 | 10.46 | сборка редуктор с шлюз питателя (фото в чате 14.05) | 3h | 2026-08-31 09:00 A | 2026-08-31 12:00 A |  | 100% |  |  | start no earlier than 2026-09-02 09:00 | Тимофеев В | 3h | 3h |

| ID | WBS | Task | Type | Duration | Start | Finish | Predecessors | Complete | Constraint | Resources | Work | Actual work |
| --- | --- | --- | --- | --- | --- | --- | --- | --- | --- | --- | --- | --- |
| 2704 | 10.47 | **собрать мотор-редуктор прекондиционера в слесарке (сальники на складе в лотках снизу подписаны)** |  | 0.12d | 2026-06-15 09:00 A | 2026-06-15 10:00 A |  | 100% |  | Бундин В | 3h | 3h |
| 2705 | 10.47.1 | транспортировка в синий склад |  | 1h | 2026-06-15 09:00 A | 2026-06-15 10:00 A |  | 100% | start no earlier than 2026-06-15 09:00 | Тимофеев В; Некрасов А | 2h | 2h |
| 2706 | 10.48 | **вскрыть листогиб** |  | 4.5d | 2026-05-09 09:00 A | 2026-05-15 13:00 A |  | 100% |  |  | 11.17h | 11.17h |
| 2707 | 10.48.1 | проверить работу листогиба (попробовать загнуть нерж) |  | 1h | 2026-05-09 09:00 A | 2026-05-11 10:00 A |  | 100% | start no earlier than 2026-05-09 09:00 | Макаревич А | 1h | 1h |
| 2708 | 10.48.2 | как удлинить ручки, предложение |  | 5min | 2026-05-13 09:00 A | 2026-05-13 09:05 A |  | 100% | start no earlier than 2026-05-13 09:00 | Труфанов А | 0.08h | 0.08h |
| 2709 | 10.48.3 | куда крепить стационарно. Синий склад /контейнер. Предложения. |  | 5min | 2026-05-13 09:00 A | 2026-05-13 09:05 A |  | 100% | start no earlier than 2026-05-13 09:00 | Труфанов А | 0.08h | 0.08h |
| 2710 | 10.48.4 | изготовить раму для крепления к полу |  | 4h | 2026-05-15 09:00 A | 2026-05-15 13:00 A |  | 100% | start no earlier than 2026-05-15 09:00 | Тимофеев В; Макаревич А | 8h | 8h |
| 2711 | 10.48.5 | усилить ручки |  | 1h | 2026-05-15 09:00 A | 2026-05-15 10:00 A |  | 100% | start no earlier than 2026-05-15 09:00 | Тимофеев В; Макаревич А | 2h | 2h |
| 2712 | 10.49 | вывезти питатель на синий склад |  | 1h | 2026-05-05 09:00 A | 2026-05-05 10:00 A |  | 100% | start no earlier than 2026-05-05 09:00 | Тимофеев В | 1h | 1h |
| 2713 | 10.50 | транспортировка гильз и шнеков на синий склад (уложить по приходам из китая) |  | 3h | 2026-05-05 09:00 A | 2026-05-05 12:00 A |  | 100% | start no earlier than 2026-05-05 09:00 | Тимофеев В; Бобренок В; Шуранов Ю | 9h | 9h |
| 2714 | 10.51 | найти на синем складе комплектующие для инвентаризации с Алексеем |  | 3h | 2026-05-05 09:00 A | 2026-05-05 12:00 A |  | 100% | start no earlier than 2026-05-05 08:00 | Шуранов Ю | 3h | 3h |
| 2715 | 10.52 | посчитать все валы от транспортеров, занести в таблицу учета |  | 4h | 2026-05-11 09:00 A | 2026-05-11 13:00 A |  | 100% | start no earlier than 2026-05-09 09:00 | Шуранов Ю | 4h | 4h |
| 2716 | 10.53 | посчитать сколько валов для транспортеров Теко в слесарке |  | 1h | 2026-04-30 09:00 A | 2026-04-30 10:00 A |  | 100% | start no earlier than 2026-04-30 09:00 | Шуранов Ю | 1h | 1h |
| 2717 | 10.54 | уборка остатки металл в контейнер |  | 1h | 2026-04-29 09:00 A | 2026-04-29 10:00 A |  | 100% | start no earlier than 2026-04-29 09:00 | Некрасов А; Тимофеев В; Труфанов А; Бундин В | 4h | 4h |
| 2718 | 10.55 | **ЗИП на ПГ антиэлектрод** |  | 33d? | 2026-05-13 09:00 A | 2026-06-26 18:00 A |  | 100% |  |  | 9.5h | 9.5h |
| 2719 | 10.55.1 | поиск в продаже труба нерж ф205 (проверить у Тимофеева диамтр) |  | 1h | 2026-05-13 09:00 A | 2026-05-13 10:00 A |  | 100% | start no earlier than 2026-05-13 09:00 | Зорькин В | 1h | 1h |
| 2720 | 10.55.2 | заявка |  | 15min | 2026-05-13 10:00 A | 2026-05-13 10:15 A | 2719 | 100% | start no earlier than 2026-04-24 08:00 | Зорькин В | 0.25h | 0.25h |
| 2721 | 10.55.3 | контроль доставки. Карабанов размещает у свои |  | 15min | 2026-05-19 09:00 A | 2026-05-19 09:15 A | 2720FS+5d | 100% | start no earlier than 2026-05-19 09:00 | Зорькин В | 0.25h | 0.25h |
| 2722 | 10.55.4 | монтаж |  | 1d? | 2026-06-26 09:00 A | 2026-06-26 18:00 A | 2721FS+2d | 100% | start no earlier than 2026-06-26 09:00 | Тимофеев В | 8h | 8h |
| 2723 | 10.56 | **ремонт шуруповерт макита** |  | 40d | 2026-04-19 09:00 A | 2026-06-14 11:00 A |  | 100% |  |  | 5h | 5h |
| 2724 | 10.56.1 | разобрать шуруповерт макита, выяснить с редуктором проблема или нет | manual | 2h | 2026-04-19 09:00 A | 2026-04-19 11:00 A |  | 100% | start no earlier than 2026-04-19 09:00 | Дедов В | 2h | 2h |
| 2725 | 10.56.2 | отправить фидео запрос о ремонте в сервисн центр |  | 1h | 2026-04-20 09:00 A | 2026-04-20 10:00 A |  | 100% | start no earlier than 2026-04-20 08:00 | Зорькин В | 1h | 1h |
| 2726 | 10.56.3 | конртроль / решение о списании | milestone | 0d | 2026-04-27 09:00 A | 2026-04-27 09:00 A |  | 100% | start no earlier than 2026-04-27 09:00 | Зорькин В |  |  |
| 2727 | 10.56.4 | попробовать собрать шуроповерт, находится в слесарке | manual | 2h | 2026-06-14 09:00 A | 2026-06-14 11:00 A |  | 100% | start no earlier than 2026-06-14 09:00 | Бундин В | 2h | 2h |
| 2728 | 10.57 | взять винты пота м6х25 и перекрутить на сетке для печи | manual | 1h | 2026-04-20 09:00 A | 2026-04-20 10:00 A |  | 100% | start no earlier than 2026-04-20 09:00 | Тимофеев В | 1h | 1h |

| ID | WBS | Task | Type | Duration | Start | Finish | Predecessors | Complete | Remaining | Total slack | Constraint | Resources | Work | Actual work |
| --- | --- | --- | --- | --- | --- | --- | --- | --- | --- | --- | --- | --- | --- | --- |
| 2729 | 10.58 | **шестерня питателя LT85** |  | 7.01d | 2026-04-08 09:00 A | 2026-04-17 09:05 |  | 94% | 0.44d | 246.58d |  |  | 1.33h | 1.25h |
| 2730 | 10.58.1 | **1. заказ с китая** |  | 7.01d | 2026-04-08 09:00 A | 2026-04-17 09:05 |  | 75% | 1.75d | 246.58d |  |  | 0.33h | 0.25h |
| 2731 | 10.58.1.1 | запрос / контроль |  | 15min | 2026-04-08 09:00 A | 2026-04-08 09:15 A |  | 100% |  |  | start no earlier than 2026-04-08 09:00 | Шуранов Ю | 0.25h | 0.25h |
| 2732 | 10.58.1.2 | контроль |  | 5min | 2026-04-17 09:00 | 2026-04-17 09:05 |  |  |  | 246.58d | start no earlier than 2026-04-17 09:00 | Шуранов Ю | 0.08h |  |
| 2733 | 10.58.2 | **2. изготовление по образцу** |  | 5.03d | 2026-04-08 09:00 A | 2026-04-15 09:15 A |  | 100% |  |  |  |  | 1h | 1h |
| 2734 | 10.58.2.1 | выяснить возможносить изготвления |  | 30min | 2026-04-08 09:00 A | 2026-04-08 09:30 A |  | 100% |  |  | start no earlier than 2026-04-08 09:00 | Зорькин В | 0.5h | 0.5h |
| 2735 | 10.58.2.2 | отправить курьера |  | 15min | 2026-04-08 09:30 A | 2026-04-08 09:45 A | 2734 | 100% |  |  | start no earlier than 2026-04-06 09:00 | Зорькин В | 0.25h | 0.25h |
| 2736 | 10.58.2.3 | контроль |  | 15min | 2026-04-15 09:00 A | 2026-04-15 09:15 A | 2735 | 100% |  |  | start no earlier than 2026-04-15 09:00 | Зорькин В | 0.25h | 0.25h |
| 2737 | 10.59 | проверить наличие лент в ЗИП перед утилизаций б/у |  | 2h | 2026-03-31 09:00 A | 2026-03-31 11:00 A |  | 100% |  |  | start no earlier than 2026-03-31 08:00 | Зорькин В | 2h | 2h |
| 2738 | 10.60 | соединители лент траснспортеры линий - проверить остаток |  | 30min | 2026-08-31 09:00 | 2026-08-31 09:30 |  |  |  | 150.53d | start no earlier than 2026-08-31 09:00 | Зорькин В | 0.5h |  |
| 2739 | 10.61 | **освободить место на син склад / перенос в новый контейнер** |  | 1.5d | 2026-03-30 08:00 A | 2026-03-31 13:00 A |  | 100% |  |  |  |  | 38h | 38h |
| 2740 | 10.61.1 | перенести метал, норию в контейнер с синего склада |  | 4h | 2026-03-30 09:00 A | 2026-03-30 13:00 A |  | 100% |  |  | start no earlier than 2026-03-30 09:00 | Бобренок В; Некрасов А; Тимофеев В | 12h | 12h |
| 2741 | 10.61.2 | сборка стеллаж хранения металла |  | 4h | 2026-03-30 08:00 A | 2026-03-30 13:00 A |  | 100% |  |  | start no earlier than 2026-03-30 08:00 | Некрасов А; Труфанов А; Тимофеев В | 10h | 10h |
| 2742 | 10.61.3 | монтаж стеллаж хранения металла |  | 4h | 2026-03-31 09:00 A | 2026-03-31 13:00 A |  | 100% |  |  | start no earlier than 2026-03-31 09:00 | Некрасов А; Труфанов А | 8h | 8h |
| 2743 | 10.61.4 | загрузка мусор в трактор дерево, отход |  | 4h | 2026-03-31 09:00 A | 2026-03-31 13:00 A |  | 100% |  |  | start no earlier than 2026-03-31 08:00 | Некрасов А; Труфанов А | 8h | 8h |
| 2744 | 10.62 | заточка ножей 2ц орг |  | 30min | 2026-03-25 09:00 A | 2026-03-25 09:30 A |  | 100% |  |  | start no earlier than 2026-03-25 08:00 | Зорькин В | 0.5h | 0.5h |
| 2745 | 10.63 | ремонт водонагреватель орг |  | 1h | 2026-03-23 09:00 A | 2026-03-23 10:00 A |  | 100% |  |  | start no earlier than 2026-03-23 09:00 | Шуранов Ю | 1h | 1h |
| 2746 | 10.64 | ремонт парогенератор орг |  | 1h | 2026-03-23 09:00 A | 2026-03-23 10:00 A |  | 100% |  |  | start no earlier than 2026-03-23 09:00 | Шуранов Ю | 1h | 1h |
| 2747 | 10.65 | **стеллаж для организации хранения металла** |  | 11.5d | 2026-03-23 09:00 A | 2026-04-07 13:00 A |  | 100% |  |  |  |  | 84h | 84h |
| 2748 | 10.65.1 | составить эскиз / расчет заявка металл |  | 4h | 2026-03-23 09:00 A | 2026-03-23 13:00 A |  | 100% |  |  | start no earlier than 2026-03-23 09:00 | Зорькин В | 4h | 4h |
| 2749 | 10.65.2 | доставка |  | 10d | 2026-03-23 14:00 A | 2026-04-06 13:00 A | 2748 | 100% |  |  | start no earlier than 2026-03-20 08:00 | Карабанов | 80h | 80h |
| 2750 | 10.65.3 | сборка |  | 2d | 2026-04-03 14:00 A | 2026-04-07 13:00 A | 2749 | 100% |  |  | start no earlier than 2026-03-20 08:00 |  |  |  |
| 2751 | 10.66 | установить крыльчатку мотор-редуктор смесителя / перенос в контейнер |  | 30min | 2026-08-31 09:00 A | 2026-08-31 09:30 A |  | 100% |  |  | start no earlier than 2026-09-02 09:00 | Тимофеев В | 0.5h | 0.5h |
| 2752 | 10.67 | **изготовить ножевой узел для 2ц** |  | 10.02d | 2026-03-17 09:00 A | 2026-03-31 09:10 A |  | 100% |  |  |  |  | 80.33h | 80.33h |
| 2753 | 10.67.1 | получить счет |  | 10min | 2026-03-17 09:00 A | 2026-03-17 09:10 A |  | 100% |  |  | start no earlier than 2026-03-17 08:00 | Домоводов К | 0.17h | 0.17h |
| 2754 | 10.67.2 | изготовление |  | 10d | 2026-03-17 09:10 A | 2026-03-31 09:10 A | 2753 | 100% |  |  | start no earlier than 2026-03-17 08:00 | Фрезер ЧПУ | 80h | 80h |
| 2755 | 10.67.3 | контроль |  | 5min | 2026-03-28 09:10 A | 2026-03-30 09:05 A | 2754FS+1d | 100% |  |  | start no earlier than 2026-03-17 08:00 | Зорькин В | 0.08h | 0.08h |
| 2756 | 10.67.4 | орг доставка |  | 5min | 2026-03-28 09:15 A | 2026-03-30 09:05 A | 2755 | 100% |  |  | start no earlier than 2026-03-17 08:00 | Зорькин В | 0.08h | 0.08h |
| 2757 | 10.68 | сгоревшие двигатели унести в контенер в коробку |  | 1h | 2026-03-15 09:00 A | 2026-03-16 10:00 A |  | 100% |  |  | start no earlier than 2026-03-15 09:00 | Бобренок В | 1h | 1h |
| 2758 | 10.69 | ремонт головы насоса нгш57 гидродлизат 2шт |  | 2h | 2026-03-16 09:00 A | 2026-03-16 11:00 A |  | 100% |  |  | start no earlier than 2026-03-16 09:00 | Труфанов А | 2h | 2h |
| 2759 | 10.70 | изготовить ножевой узел для 2ц | milestone | 0d | 2026-03-16 09:00 A | 2026-03-16 09:00 A |  | 100% |  |  | start no earlier than 2026-03-16 09:00 | Домоводов К |  |  |
| 2760 | 10.71 | по всем цехам обход, проверка обратный клпан бойлеры / настройка температуры . Составить список под замену |  | 2h | 2026-09-01 09:00 | 2026-09-01 11:00 |  |  |  | 149.34d | start no earlier than 2026-09-01 09:00 | Дедов В | 2h |  |

| ID | WBS | Task | Type | Duration | Start | Finish | Predecessors | Complete | Remaining | Total slack | Free slack | Constraint | Resources | Work | Actual work |
| --- | --- | --- | --- | --- | --- | --- | --- | --- | --- | --- | --- | --- | --- | --- | --- |
| 2761 | 10.72 | **ремонт датчик расхода пара с линия 3** |  | 33.04d | 2026-09-01 09:00 A | 2026-10-06 09:20 |  |  | 33.04d | 116.55d |  |  |  | 0.92h |  |
| 2762 | 10.72.1 | заявка взип |  | 15min | 2026-09-01 09:00 | 2026-09-01 09:15 |  |  |  | 124.48d | 0d | start no earlier than 2026-09-01 09:00 | Шуранов Ю | 0.25h |  |
| 2763 | 10.72.2 | орг отправить в ремонт |  | 20min | 2026-09-01 09:15 | 2026-09-01 09:35 | 2762 |  |  | 124.48d | 7.93d | start no earlier than 2026-03-12 08:00 | Шуранов Ю | 0.33h |  |
| 2764 | 10.72.3 | контроль | milestone | 0d | 2026-09-22 09:35 A | 2026-09-22 09:35 A | 2763FS+20d | 100% |  |  |  | start no earlier than 2026-04-17 09:00 | Зорькин В |  |  |
| 2765 | 10.72.4 | контроль | milestone | 0d | 2026-09-30 09:00 | 2026-09-30 09:00 | 2763FS+20d |  |  | 116.55d | 0d | start no earlier than 2026-09-30 09:00 | Зорькин В |  |  |
| 2766 | 10.72.5 | орг забрать сремонта |  | 20min | 2026-10-06 09:00 | 2026-10-06 09:20 | 2764FS+5d, 2765FS+5d |  |  | 116.55d |  | start no earlier than 2026-03-12 08:00 | Шуранов Ю | 0.33h |  |
| 2767 | 10.73 | реставрация вал с охладителя. Полполнить расход ЗИП |  | 1h | 2026-09-01 09:00 | 2026-09-01 10:00 |  |  |  | 149.47d |  | start no earlier than 2026-09-01 09:00 | Шуранов Ю | 1h |  |
| 2768 | 10.74 | ремонт датчик наличия сырья / собрать из 2х один |  | 3h | 2026-09-01 09:00 | 2026-09-01 12:00 |  |  |  | 149.22d |  | start no earlier than 2026-09-01 09:00 | Дедов В | 3h |  |
| 2769 | 10.75 | **ремонт бойлер с 5ц гардероб** |  | 7.04d | 2026-03-13 09:00 A | 2026-03-24 09:20 |  | 57% | 3.02d | 264.55d |  |  |  | 0.58h | 0.33h |
| 2770 | 10.75.1 | орг отправить в ремонт |  | 15min | 2026-03-13 09:00 A | 2026-03-13 09:15 A |  | 100% |  |  |  | start no earlier than 2026-03-13 09:00 | Шуранов Ю | 0.25h | 0.25h |
| 2771 | 10.75.2 | контроль доставка / оплата |  | 5min | 2026-03-23 09:00 A | 2026-03-23 09:05 A | 2770FS+5d | 100% |  |  |  | start no earlier than 2026-03-23 09:00 | Шуранов Ю | 0.08h | 0.08h |
| 2772 | 10.75.3 | орг доставка |  | 15min | 2026-03-24 09:05 | 2026-03-24 09:20 | 2771FS+1d |  |  | 264.55d |  | start no earlier than 2026-03-12 08:00 | Шуранов Ю | 0.25h |  |
| 2773 | 10.76 | диагностика двигателей и редукторов в слесарке. Подробности Шуранов по тлф |  | 2h | 2026-09-01 09:00 A | 2026-09-01 11:00 A |  | 100% |  |  |  | start no earlier than 2026-09-02 09:00 | Бундин В | 2h | 2h |
| 2774 | 10.77 | которые в коробке с них снять крыльчатки |  | 2h | 2026-09-01 09:00 A | 2026-09-01 11:00 A | 2773 | 100% |  |  |  | start no earlier than 2026-03-06 08:00 | Бундин В | 2h | 2h |
| 2775 | 10.78 | ножевой узел 2ц заменаить подшипники. У мастера |  | 1h | 2026-03-04 08:00 A | 2026-03-04 10:00 A |  | 100% |  |  |  | start no earlier than 2026-03-04 08:00 | Дедов В | 1h | 1h |
| 2776 | 10.79 | **ремонт электродов ПГ в ЗИП** |  | 2.75d | 2026-03-08 09:00 A | 2026-03-11 16:00 A |  | 100% |  |  |  |  |  | 12h | 12h |
| 2777 | 10.79.1 | 2шт - шт |  | 6h | 2026-03-08 09:00 A | 2026-03-09 16:00 A |  | 100% |  |  |  | start no earlier than 2026-03-08 09:00 | Макаревич А | 6h | 6h |
| 2778 | 10.79.2 | 1шт = 2ц |  | 6h | 2026-03-11 09:00 A | 2026-03-11 16:00 A |  | 100% |  |  |  | start no earlier than 2026-03-11 09:00 | Макаревич А | 6h | 6h |
| 2779 | 10.80 | промер изношенных шнеков, подготовить таблицу и инструкцию для делегировать |  | 1h | 2026-03-03 09:00 A | 2026-03-03 10:00 A |  | 100% |  |  |  | start no earlier than 2026-03-03 09:00 | Зорькин В | 1h | 1h |
| 2780 | 10.81 | заказ нутромер утерянные детали |  | 30min | 2026-03-06 09:00 A | 2026-03-06 09:30 A |  | 100% |  |  |  | start no earlier than 2026-03-06 09:00 | Зорькин В | 0.5h | 0.5h |
| 2781 | 10.82 | **стопорнное кольцо для валов шнеков** |  | 0.09d | 2026-03-02 09:00 A | 2026-03-02 09:45 A |  | 100% |  |  |  |  |  | 0.75h | 0.75h |
| 2782 | 10.82.1 | заявка снабжение |  | 15min | 2026-03-02 09:00 A | 2026-03-02 09:15 A |  | 100% |  |  |  | start no earlier than 2026-03-02 09:00 | Зорькин В | 0.25h | 0.25h |
| 2783 | 10.82.2 | заявка токарь |  | 15min | 2026-03-02 09:15 A | 2026-03-02 09:30 A | 2782 | 100% |  |  |  | start no earlier than 2026-02-27 08:00 | Зорькин В | 0.25h | 0.25h |
| 2784 | 10.82.3 | заявка кита |  | 15min | 2026-03-02 09:30 A | 2026-03-02 09:45 A | 2783 | 100% |  |  |  | start no earlier than 2026-02-27 08:00 | Зорькин В | 0.25h | 0.25h |

| ID | WBS | Task | Duration | Start | Finish | Predecessors | Complete | Remaining | Total slack | Free slack | Constraint | Resources | Work | Actual work |
| --- | --- | --- | --- | --- | --- | --- | --- | --- | --- | --- | --- | --- | --- | --- |
| 2785 | 10.83 | **быстрая замена шнеков - кондуктор для хранения и перемещения подготвленного ствола** | 3.25d | 2026-12-04 09:00 | 2026-12-09 11:00 |  |  |  | 65.34d |  |  |  | 20h |  |
| 2786 | 10.83.1 | проект кондуктора и траверсы перемещения ствола штабелером | 2h | 2026-12-04 09:00 | 2026-12-04 11:00 |  |  |  | 65.34d | 0d | start no earlier than 2026-12-04 09:00 | Тимофеев В; Бундин В | 4h |  |
| 2787 | 10.83.2 | сборка | 2d | 2026-12-07 11:00 | 2026-12-09 11:00 | 2786FS+1d |  |  | 65.34d |  | start no earlier than 2026-04-16 09:00 | Бобренок В | 16h |  |
| 2788 | 10.84 | **заявка шкив на вал прекондиционер + разрезная вставка + спец шпильки** | 0.12d | 2025-08-04 09:00 | 2025-08-04 10:00 |  |  |  | 430.47d |  |  |  | 1h |  |
| 2789 | 10.84.1 | подбор шкив / заявка | 1h | 2025-08-04 09:00 | 2025-08-04 10:00 |  |  |  | 430.47d |  | start no earlier than 2025-08-04 09:00 | Зорькин В | 1h |  |
| 2790 | 10.85 | **ремонт вал прекондиционер** | 12.02d | 2025-07-31 09:00 A | 2025-08-18 09:10 |  | 86% | 1.72d | 420.57d |  |  |  | 1.17h | 1h |
| 2791 | 10.85.1 | подготовить к отправке очистить | 1h | 2025-07-31 09:00 A | 2025-07-31 10:00 A |  | 100% |  |  |  | start no earlier than 2025-07-31 09:00 | Пинчук А | 1h | 1h |
| 2792 | 10.85.2 | орг курьера / отправить | 5min | 2025-08-04 09:00 | 2025-08-04 09:05 | 2791 |  |  | 420.57d | 0d | start no earlier than 2025-08-04 09:00 | Зорькин В | 0.08h |  |
| 2793 | 10.85.3 | контроль / забрать | 5min | 2025-08-18 09:05 | 2025-08-18 09:10 | 2792FS+10d |  |  | 420.57d |  | start no earlier than 2025-07-31 09:00 | Зорькин В | 0.08h |  |
| 2794 | 10.86 | **ремонт вал в барабана жир 2л** | 152.01d | 2025-08-04 09:00 A | 2026-03-04 09:05 |  | 50% | 76.01d | 278.58d |  |  |  | 0.17h | 0.08h |
| 2795 | 10.86.1 | отправить на ремонт | 5min | 2025-08-04 09:00 | 2025-08-04 09:05 |  |  |  | 430.58d |  | start no earlier than 2025-08-04 09:00 | Зорькин В | 0.08h |  |
| 2796 | 10.86.2 | контроль забрать | 5min | 2026-03-04 09:00 A | 2026-03-04 09:05 A | 2795FS+10d | 100% |  |  |  | start no earlier than 2026-03-04 09:00 | Зорькин В | 0.08h | 0.08h |
| 2797 | 10.87 | **заявка эл мотор шибера в ЗИП** | 0.01d | 2025-02-19 09:00 | 2025-02-19 09:05 |  |  |  | 548.58d |  |  |  | 0.08h |  |
| 2798 | 10.87.1 | контроль | 5min | 2025-02-19 09:00 | 2025-02-19 09:05 |  |  |  | 548.58d |  | start no earlier than 2025-02-19 09:00 | Шуранов Ю | 0.08h |  |
| 2799 | 10.88 | составить таблицу ЗИП наличия редукторов / где используется | 4h | 2025-02-21 09:00 | 2025-02-21 13:00 |  |  |  | 546.09d |  | start no earlier than 2025-02-21 09:00 | Тимофеев В; Шуранов Ю | 8h |  |
| 2800 | 10.89 | составить таблицу соответсвия номеров подшипников - где используется | 4h | 2025-02-21 09:00 | 2025-02-21 13:00 |  |  |  | 546.09d |  | start no earlier than 2025-02-21 09:00 | Тимофеев В; Шуранов Ю | 8h |  |
| 2801 | 10.90 | ремонт болгарки замена кнопки | 1h | 2024-10-21 09:00 A | 2024-10-21 10:00 A |  | 100% |  |  |  | start no earlier than 2024-10-21 09:00 | Зорькин В | 1h | 1h |
| 2802 | 10.91 | сборка редуктор LT70 замена пружинные шайбы | 1d? | 2024-09-29 09:00 A | 2024-09-30 18:00 A |  | 100% |  |  |  | start no earlier than 2024-09-29 09:00 | Макаревич А | 8h | 8h |
| 2803 | 10.92 | **прорверить наличие остатков** | 0.01d | 2024-09-25 08:00 A | 2024-09-25 09:05 A |  | 100% |  |  |  |  |  | 2h | 2h |
| 2804 | 10.92.1 | Манжет (армированная 2,2-75*100*10 ГОСТ 8752-79) | 5min | 2024-09-25 08:00 A | 2024-09-25 09:05 A |  | 100% |  |  |  | start no earlier than 2024-09-25 08:00 | Дедов В | 0.08h | 0.08h |
| 2805 | 10.92.2 | Манжет (армированная 1,2-80*105*10) | 5min | 2024-09-25 08:00 A | 2024-09-25 09:05 A |  | 100% |  |  |  | start no earlier than 2024-09-25 08:00 | Дедов В | 0.08h | 0.08h |
| 2806 | 10.92.3 | Манжет (армированная 2,2-80*105*10 ГОСТ 8752-79) | 5min | 2024-09-25 08:00 A | 2024-09-25 09:05 A |  | 100% |  |  |  | start no earlier than 2024-09-25 08:00 | Дедов В | 0.08h | 0.08h |
| 2807 | 10.92.4 | Манжет (армированная 2,2-55*80*10 ГОСТ 8752-79) | 5min | 2024-09-25 08:00 A | 2024-09-25 09:05 A |  | 100% |  |  |  | start no earlier than 2024-09-25 08:00 | Дедов В | 0.08h | 0.08h |
| 2808 | 10.92.5 | Масло (Для швейных машин) | 0.01d | 2024-09-25 08:00 A | 2024-09-25 09:05 A |  | 100% |  |  |  | start no earlier than 2024-09-25 08:00 | Дедов В | 0.08h | 0.08h |
| 2809 | 10.92.6 | Наконечник (ТМЛ 16-10-6 медный луженый) | 0.01d | 2024-09-25 08:00 A | 2024-09-25 09:05 A |  | 100% |  |  |  | start no earlier than 2024-09-25 08:00 | Дедов В | 0.08h | 0.08h |
| 2810 | 10.92.7 | Наконечник (ТМЛ 10-8-5 медный луженый) | 0.01d | 2024-09-25 08:00 A | 2024-09-25 09:05 A |  | 100% |  |  |  | start no earlier than 2024-09-25 08:00 | Дедов В | 0.08h | 0.08h |
| 2811 | 10.92.8 | Подшипник (56006-2RS (180106)SKF (30*5*10)) | 0.01d | 2024-09-25 08:00 A | 2024-09-25 09:05 A |  | 100% |  |  |  | start no earlier than 2024-09-25 08:00 | Дедов В | 0.08h | 0.08h |
| 2812 | 10.92.9 | Подшипник (51410/ART) | 0.01d | 2024-09-25 08:00 A | 2024-09-25 09:05 A |  | 100% |  |  |  | start no earlier than 2024-09-25 08:00 | Дедов В | 0.08h | 0.08h |
| 2813 | 10.92.10 | Подшипник (UCF 208 (40)) | 0.01d | 2024-09-25 08:00 A | 2024-09-25 09:05 A |  | 100% |  |  |  | start no earlier than 2024-09-25 08:00 | Дедов В | 0.08h | 0.08h |
| 2814 | 10.92.11 | Подшипник (6203.LLU/2ASU1/NTN) | 0.01d | 2024-09-25 08:00 A | 2024-09-25 09:05 A |  | 100% |  |  |  | start no earlier than 2024-09-25 08:00 | Дедов В | 0.08h | 0.08h |
| 2815 | 10.92.12 | Подшипник (22212(53512) SKF (60*110*28)) | 0.01d | 2024-09-25 08:00 A | 2024-09-25 09:05 A |  | 100% |  |  |  | start no earlier than 2024-09-25 08:00 | Дедов В | 0.08h | 0.08h |
| 2816 | 10.92.13 | Подшипник (UC 204 (480204) (20х47х17/31)) | 0.01d | 2024-09-25 08:00 A | 2024-09-25 09:05 A |  | 100% |  |  |  | start no earlier than 2024-09-25 08:00 | Дедов В | 0.08h | 0.08h |
| 2817 | 10.92.14 | Подшипник (6906-2RS (30*47*9)) | 0.01d | 2024-09-25 08:00 A | 2024-09-25 09:05 A |  | 100% |  |  |  | start no earlier than 2024-09-25 08:00 | Дедов В | 0.08h | 0.08h |
| 2818 | 10.92.15 | Подшипник (6003-2RS (180103) (17*35*10)) | 0.01d | 2024-09-25 08:00 A | 2024-09-25 09:05 A |  | 100% |  |  |  | start no earlier than 2024-09-25 08:00 | Дедов В | 0.08h | 0.08h |
| 2819 | 10.92.16 | Подшипник (6203-2RS (180203) (17*40*12)) | 0.01d | 2024-09-25 08:00 A | 2024-09-25 09:05 A |  | 100% |  |  |  | start no earlier than 2024-09-25 08:00 | Дедов В | 0.08h | 0.08h |
| 2820 | 10.92.17 | Подшипник (6002 2RS, SKF (180102, 15*32*9)) | 0.01d | 2024-09-25 08:00 A | 2024-09-25 09:05 A |  | 100% |  |  |  | start no earlier than 2024-09-25 08:00 | Дедов В | 0.08h | 0.08h |
| 2821 | 10.92.18 | Провод ПЩ-4 | 0.01d | 2024-09-25 08:00 A | 2024-09-25 09:05 A |  | 100% |  |  |  | start no earlier than 2024-09-25 08:00 | Дедов В | 0.08h | 0.08h |
| 2822 | 10.92.19 | Ремень клиновый А-1400 | 0.01d | 2024-09-25 08:00 A | 2024-09-25 09:05 A |  | 100% |  |  |  | start no earlier than 2024-09-25 08:00 | Дедов В | 0.08h | 0.08h |
| 2823 | 10.92.20 | Ремень клиновый В (Б)-1320 | 0.01d | 2024-09-25 08:00 A | 2024-09-25 09:05 A |  | 100% |  |  |  | start no earlier than 2024-09-25 08:00 | Дедов В | 0.08h | 0.08h |
| 2824 | 10.92.21 | Реле (тепловое РТИ-3353 23-32А) | 0.01d | 2024-09-25 08:00 A | 2024-09-25 09:05 A |  | 100% |  |  |  | start no earlier than 2024-09-25 08:00 | Дедов В | 0.08h | 0.08h |
| 2825 | 10.92.22 | Шланг (для дозирующих насосов черного цвета 6,4х9,6 мм) | 0.01d | 2024-09-25 08:00 A | 2024-09-25 09:05 A |  | 100% |  |  |  | start no earlier than 2024-09-25 08:00 | Дедов В | 0.08h | 0.08h |
| 2826 | 10.92.23 | Труба гофрированная (ПВХ 25мм с протяжкой легкая серая) | 0.01d | 2024-09-25 08:00 A | 2024-09-25 09:05 A |  | 100% |  |  |  | start no earlier than 2024-09-25 08:00 | Дедов В | 0.08h | 0.08h |
| 2827 | 10.92.24 | Шпонка призматическая (DIN 6885 A 18х11х 90мм) | 0.01d | 2024-09-25 08:00 A | 2024-09-25 09:05 A |  | 100% |  |  |  | start no earlier than 2024-09-25 08:00 | Дедов В | 0.08h | 0.08h |

| ID | WBS | Task | Duration | Start | Finish | Predecessors | Complete | Remaining | Total slack | Free slack | Constraint | Resources | Work | Actual work |
| --- | --- | --- | --- | --- | --- | --- | --- | --- | --- | --- | --- | --- | --- | --- |
| 2828 | 10.93 | **прорверить остатки подшипников** | 0.01d | 2024-09-10 08:00 A | 2024-09-10 09:05 A |  | 100% |  |  |  |  |  | 1.17h | 1.17h |
| 2829 | 10.93.1 | 180101АС17/6 ГПЗ | 5min | 2024-09-10 08:00 A | 2024-09-10 09:05 A |  | 100% |  |  |  | start no earlier than 2024-09-10 08:00 | Дедов В | 0.08h | 0.08h |
| 2830 | 10.93.2 | 180202 (6202 2RS) (15*35*11) SKF | 0.01d | 2024-09-10 08:00 A | 2024-09-10 09:05 A |  | 100% |  |  |  | start no earlier than 2024-09-10 08:00 | Дедов В | 0.08h | 0.08h |
| 2831 | 10.93.3 | 180206 (6206 2RS) (30*62*16) HIKI | 0.01d | 2024-09-10 08:00 A | 2024-09-10 09:05 A |  | 100% |  |  |  | start no earlier than 2024-09-10 08:00 | Дедов В | 0.08h | 0.08h |
| 2832 | 10.93.4 | 22212.EAW33C3 / SNR | 0.01d | 2024-09-10 08:00 A | 2024-09-10 09:05 A |  | 100% |  |  |  | start no earlier than 2024-09-10 08:00 | Дедов В | 0.08h | 0.08h |
| 2833 | 10.93.5 | 51407/NEUTR | 0.01d | 2024-09-10 08:00 A | 2024-09-10 09:05 A |  | 100% |  |  |  | start no earlier than 2024-09-10 08:00 | Дедов В | 0.08h | 0.08h |
| 2834 | 10.93.6 | 6001 ZZ.CM | 0.01d | 2024-09-10 08:00 A | 2024-09-10 09:05 A |  | 100% |  |  |  | start no earlier than 2024-09-10 08:00 | Дедов В | 0.08h | 0.08h |
| 2835 | 10.93.7 | 6201.VVC3/ITJ | 0.01d | 2024-09-10 08:00 A | 2024-09-10 09:05 A |  | 100% |  |  |  | start no earlier than 2024-09-10 08:00 | Дедов В | 0.08h | 0.08h |
| 2836 | 10.93.8 | 6205LLU (NTN) | 0.01d | 2024-09-10 08:00 A | 2024-09-10 09:05 A |  | 100% |  |  |  | start no earlier than 2024-09-10 08:00 | Дедов В | 0.08h | 0.08h |
| 2837 | 10.93.9 | 6206. VVC3/ITJ | 0.01d | 2024-09-10 08:00 A | 2024-09-10 09:05 A |  | 100% |  |  |  | start no earlier than 2024-09-10 08:00 | Дедов В | 0.08h | 0.08h |
| 2838 | 10.93.10 | 686-2RS/ART | 0.01d | 2024-09-10 08:00 A | 2024-09-10 09:05 A |  | 100% |  |  |  | start no earlier than 2024-09-10 08:00 | Дедов В | 0.08h | 0.08h |
| 2839 | 10.93.11 | 7512 (32212)(60*110*24) | 0.01d | 2024-09-10 08:00 A | 2024-09-10 09:05 A |  | 100% |  |  |  | start no earlier than 2024-09-10 08:00 | Дедов В | 0.08h | 0.08h |
| 2840 | 10.93.12 | HK1210/NEUTR | 0.01d | 2024-09-10 08:00 A | 2024-09-10 09:05 A |  | 100% |  |  |  | start no earlier than 2024-09-10 08:00 | Дедов В | 0.08h | 0.08h |
| 2841 | 10.93.13 | UC 205 Neutr | 0.01d | 2024-09-10 08:00 A | 2024-09-10 09:05 A |  | 100% |  |  |  | start no earlier than 2024-09-10 08:00 | Дедов В | 0.08h | 0.08h |
| 2842 | 10.93.14 | UCFC 210 ASAHI | 0.01d | 2024-09-10 08:00 A | 2024-09-10 09:05 A |  | 100% |  |  |  | start no earlier than 2024-09-10 08:00 | Дедов В | 0.08h | 0.08h |
| 2843 | 10.94 | **создать реестр документации на оборудование** | 2d? | 2024-09-10 09:00 | 2024-09-11 18:00 |  |  |  | 662.59d |  |  |  | 8h |  |
| 2844 | 10.94.1 | опись документации в наличии, сортировка | 1d? | 2024-09-10 09:00 | 2024-09-10 18:00 |  |  |  | 662.59d | 0d | start no earlier than 2024-09-10 09:00 | Зорькин В | 8h |  |
| 2845 | 10.94.2 | оформление реестра наличия документации | 1d? | 2024-09-11 09:00 | 2024-09-11 18:00 | 2844 |  |  | 662.59d |  | start no earlier than 2024-09-06 08:00 |  |  |  |
| 2846 | 10.95 | **ремонт двигатель с шлюз питатель** | 0.02d | 2024-08-09 09:00 | 2024-08-09 09:10 |  |  |  | 686.57d |  |  |  | 0.17h |  |
| 2847 | 10.95.1 | контроль / орг курьер - | 10min | 2024-08-09 09:00 | 2024-08-09 09:10 |  |  |  | 686.57d |  | start no earlier than 2024-08-09 09:00 | Шуранов Ю | 0.17h |  |
| 2848 | 10.96 | **организовать хранение зап. частей для производства в одном месте, создать склад и нести полную материальную ответственность** | 18d? | 2024-05-09 09:00 A | 2024-06-03 18:00 |  | 15% | 15.3d? | 734.59d |  |  |  | 272h | 24h |
| 2849 | 10.96.1 | монтаж забор / ворота | 3d | 2024-05-09 09:00 A | 2024-05-13 18:00 A |  | 100% |  |  |  | start no earlier than 2024-05-09 09:00 | Макаревич А | 24h | 24h |
| 2850 | 10.96.2 | монтаж ворота, забор | 1d? | 2024-05-14 09:00 | 2024-05-14 18:00 | 2849 |  |  | 734.59d | 0d | start no earlier than 2024-05-13 09:00 | Некрасов А; Черепанов И | 16h |  |
| 2851 | 10.96.3 | подготови доски для стеллажей на 3 складе | 1d? | 2024-05-20 09:00 | 2024-05-20 18:00 |  |  |  | 744.59d |  | start no earlier than 2024-05-18 09:00 | КИнжекул | 8h |  |
| 2852 | 10.96.4 | переместить стеллажи на 2 этаж ГП + сборка | 1d? | 2024-05-15 09:00 | 2024-05-15 18:00 | 2850 |  |  | 741.59d | 7d | start no earlier than 2024-05-08 08:00 | Некрасов А; Черепанов И | 16h |  |
| 2853 | 10.96.5 | составить список всех позиций за забором для учета | 2d | 2024-05-15 09:00 | 2024-05-16 18:00 | 2850 |  |  | 734.59d | 0d | start no earlier than 2024-05-14 09:00 | Шуранов Ю | 16h |  |
| 2854 | 10.96.6 | состаить список ЗИП склад 3 цех | 2d | 2024-05-17 09:00 | 2024-05-20 18:00 | 2853 |  |  | 734.59d | 0d | start no earlier than 2024-05-08 09:00 | Шуранов Ю | 16h |  |
| 2855 | 10.96.7 | состаить список ЗИП склад слесарное помещение | 2d | 2024-05-21 09:00 | 2024-05-22 18:00 | 2854 |  |  | 734.59d | 0d | start no earlier than 2024-05-14 09:00 | Шуранов Ю | 16h |  |
| 2856 | 10.96.8 | составить список ЗИП Контейнер | 2d | 2024-05-23 09:00 | 2024-05-24 18:00 | 2855 |  |  | 734.59d | 0d | start no earlier than 2024-05-14 09:00 | Шуранов Ю | 16h |  |
| 2857 | 10.96.9 | перемещение ЗИП с 3 цеха на 2 этаж ГП | 2d | 2024-05-27 09:00 | 2024-05-28 18:00 | 2852, 2856 |  |  | 734.59d | 0d | start no earlier than 2024-05-14 09:00 | Шуранов Ю; Некрасов А; Черепанов И | 48h |  |
| 2858 | 10.96.10 | перемещение ЗИП с контейнера на 2 этаж ГП | 2d | 2024-05-29 09:00 | 2024-05-30 18:00 | 2857 |  |  | 734.59d | 0d | start no earlier than 2024-05-14 09:00 | Шуранов Ю; Некрасов А; Черепанов И | 48h |  |
| 2859 | 10.96.11 | перемещение ЗИП с слесарного помещения на 2 этаж ГП | 2d | 2024-05-31 09:00 | 2024-06-03 18:00 | 2858 |  |  | 734.59d |  | start no earlier than 2024-05-14 09:00 | Шуранов Ю; Некрасов А; Черепанов И | 48h |  |

| ID | WBS | Task | Type | Duration | Start | Finish | Predecessors | Complete | Remaining | Actual start | Total slack | Free slack | Constraint | Resources | Work | Actual work |
| --- | --- | --- | --- | --- | --- | --- | --- | --- | --- | --- | --- | --- | --- | --- | --- | --- |
| 2860 | 10.97 | **клапан эл магнитный для парогенератора на подачу воды** |  | 0.06d | 2025-01-16 09:00 | 2025-01-16 09:30 |  |  |  |  | 572.53d |  |  |  | 0.5h |  |
| 2861 | 10.97.1 | контролль остатков, заявка на катушку |  | 30min | 2025-01-16 09:00 | 2025-01-16 09:30 |  |  |  |  | 572.53d |  | start no earlier than 2025-01-16 09:00 | Шуранов Ю | 0.5h |  |
| 2862 | 10.98 | **вал с конвейера №1 разместить на ремонт** |  | 15.06d | 2024-05-14 09:00 | 2024-06-04 09:30 |  |  |  |  | 734.53d |  |  |  | 120.5h |  |
| 2863 | 10.98.1 | орг курьера |  | 15min | 2024-05-14 09:00 | 2024-05-14 09:15 |  |  |  |  | 734.53d | 0d | start no earlier than 2024-05-14 09:00 | Шуранов Ю | 0.25h |  |
| 2864 | 10.98.2 | ремонт |  | 15d | 2024-05-14 09:15 | 2024-06-04 09:15 | 2863 |  |  |  | 734.53d | 0d | start no earlier than 2024-05-08 08:00 | Подрядчик | 120h |  |
| 2865 | 10.98.3 | контроль, орг курьера забрать |  | 15min | 2024-06-04 09:15 | 2024-06-04 09:30 | 2864 |  |  |  | 734.53d |  | start no earlier than 2024-05-14 09:00 | Шуранов Ю | 0.25h |  |
| 2866 | 10.99 | подшипник LMK20.UU/FBJ или NEUTR - 4шт ТЕКО после замены |  | 10min | 2024-05-14 09:00 | 2024-05-14 09:10 |  |  |  |  | 749.57d |  | start no earlier than 2024-05-14 09:00 | Шуранов Ю | 0.17h |  |
| 2867 | 10.100 | UC204 подшипники |  | 10min | 2024-05-14 09:00 | 2024-05-14 09:10 |  |  |  |  | 749.57d |  | start no earlier than 2024-05-14 09:00 | Шуранов Ю | 0.17h |  |
| 2868 | 10.101 | сетка на дробилку 37квт 5 цех 0,5мм и 0,7 мм - заявка ЕВРОМЕД |  | 1h | 2024-05-14 09:00 | 2024-05-14 10:00 |  |  |  |  | 749.47d |  | start no earlier than 2024-05-14 09:00 | Шуранов Ю | 1h |  |
| 2869 | 11 | **ЗИП заказ (заявки)** |  | 49.06d | 2026-09-04 09:00 A | 2026-10-30 09:30 |  | 25% | 36.8d |  | 97.53d |  |  |  | 1.67h | 0.42h |
| 2870 | 11.1 | шкив для привода печи LT85 |  | 30min | 2026-10-30 09:00 | 2026-10-30 09:30 |  |  |  |  | 97.53d |  | start no earlier than 2026-10-30 08:00 | Зорькин В | 0.5h |  |
| 2871 | 11.2 | ножевой узел LT85 |  | 20min | 2026-10-22 09:00 | 2026-10-22 09:20 |  |  |  |  | 103.55d |  | start no earlier than 2026-10-22 09:00 | Зорькин В | 0.33h |  |
| 2872 | 11.3 | втулка на шланг РВД для датчика давления |  | 15min | 2026-10-20 09:00 | 2026-10-20 09:15 |  |  |  |  | 105.56d |  | start no earlier than 2026-10-20 09:00 | Зорькин В | 0.25h |  |
| 2873 | 11.4 | контактор для тельфера 5ц 24 переменка |  | 15min | 2026-09-04 09:00 A | 2026-09-04 09:15 A |  | 100% |  |  |  |  | start no earlier than 2026-09-04 09:00 | Зорькин В | 0.25h | 0.25h |
| 2874 | 11.5 | Наконечники штырьевые для сборки схем (получить инфу у Тимофеева) |  | 10min | 2026-09-09 09:00 | 2026-09-09 09:10 |  |  |  |  | 142.57d |  | start no earlier than 2026-09-09 09:00 | Зорькин В | 0.17h |  |
| 2875 | 11.6 | Газ в слесарку, закончился |  | 10min | 2026-09-07 09:00 A | 2026-09-07 09:10 A |  | 100% |  |  |  |  | start no earlier than 2026-09-07 09:00 | Зорькин В | 0.17h | 0.17h |
| 2876 | 12 | **ТО** |  | 780.38d? | 2023-12-28 09:00 A | 2026-12-07 12:00 |  | 51% | 382.71d? |  | 67.22d |  |  |  | 27238.1h | 16593h |
| 2877 | 12.1 | Замена валов линия 1 гильзы вход и выход |  | 3h | 2026-10-14 09:00 A | 2026-10-14 12:00 A |  | 100% |  |  |  |  | start no earlier than 2026-10-14 09:00 | Макаревич А; Труфанов А | 6h | 6h |
| 2878 | 12.2 | Замена валов линия 2 гильзы вход и выход |  | 3h | 2026-10-14 09:00 A | 2026-10-14 12:00 A |  | 100% |  |  |  |  | start no earlier than 2026-10-14 09:00 | Макаревич А; Труфанов А | 6h | 6h |
| 2879 | 12.3 | **1 цех** |  | 134.25d? | 2024-04-04 09:00 | 2024-10-09 11:00 |  | 84% | 22.09d? | 2024-05-07 09:00 |  |  |  |  | 155.75h | 113.08h |
| 2880 | 12.3.1 | **Разобрать улитки с охладителя 2 линия, 4 улитки на печах и улитки циклонов - замена подшипников, каких нет сообщить** |  | 16.25d | 2026-09-07 09:00 A | 2026-09-23 11:00 |  | 95% | 0.79d |  | 128.34d |  |  |  | 22.5h | 21.5h |
| 2881 | 12.3.1.1 | очистка моторов шлюз питателей циклонов от пыли |  | 30min | 2026-09-11 09:00 A | 2026-09-11 09:30 A |  | 100% |  |  |  |  | start no earlier than 2026-09-11 08:00 | Бобренок В | 0.5h | 0.5h |
| 2882 | 12.3.1.2 | очистка центрального вала от налипей грязи через смотровое окно |  | 1h | 2026-09-11 09:00 A | 2026-09-11 10:00 A |  | 100% |  |  |  |  | start no earlier than 2026-09-11 08:00 | Бобренок В | 1h | 1h |
| 2883 | 12.3.1.3 | монтаж шильдиков на которые починил |  | 1h | 2026-09-15 09:00 | 2026-09-15 10:00 |  |  |  |  | 136.47d |  | start no earlier than 2026-09-15 09:00 | Бундин В | 1h |  |
| 2884 | 12.3.1.4 | вентилятор охладителя | manual | 4h | 2026-09-07 09:00 A | 2026-09-07 13:00 A |  | 100% |  |  |  |  |  | Бундин В | 4h | 4h |
| 2885 | 12.3.1.5 | линия 1 вентилятор печи 1 |  | 4h | 2026-09-08 09:00 A | 2026-09-08 13:00 A |  | 100% |  |  |  |  | start no earlier than 2026-09-08 09:00 | Бундин В | 4h | 4h |
| 2886 | 12.3.1.6 | линия 1 вентилятор печи 2 | manual | 4h | 2026-09-09 09:00 A | 2026-09-09 13:00 A |  | 100% |  |  |  |  |  | Бундин В | 4h | 4h |
| 2887 | 12.3.1.7 | линия 2 вентилятор циклона 1 | manual | 4h | 2026-09-09 14:00 A | 2026-09-09 18:00 A | 2886 | 100% |  |  |  |  |  | Бундин В | 4h | 4h |
| 2888 | 12.3.1.8 | линия 2 вентилятор циклона 2 | manual | 2h | 2026-09-23 09:00 A | 2026-09-23 11:00 A | 2887 | 100% |  |  |  |  |  | Бундин В; Некрасов А | 4h | 4h |
| 2889 | 12.3.2 | ТО ШУ печи №1 (замена кабеля, наконечников…) |  | 1h | 2026-08-27 09:00 A | 2026-08-27 10:00 A |  | 100% |  |  |  |  | start no earlier than 2026-08-27 09:00 | Тимофеев В | 1h | 1h |
| 2890 | 12.3.3 | очистка моторов шлюз питателей циклонов от пыли |  | 30min | 2026-10-29 09:00 A | 2026-10-29 09:30 A |  | 100% |  |  |  |  | start no earlier than 2026-10-29 08:00 | Макаревич А; Николаев | 1h | 1h |

| ID | WBS | Task | Duration | Start | Finish | Complete | Remaining | Total slack | Constraint | Resources | Work | Actual work |
| --- | --- | --- | --- | --- | --- | --- | --- | --- | --- | --- | --- | --- |
| 2891 | 12.3.4 | **приточная вентиляция** | 168.12d | 2026-03-04 09:00 A | 2026-10-14 10:00 | 75% | 42.03d | 110.47d |  |  | 4h | 3h |
| 2892 | 12.3.4.1 | замена оба фильтра | 1h | 2026-03-04 09:00 A | 2026-03-04 10:00 A | 100% |  |  | start no earlier than 2026-03-04 08:00 | Труфанов А | 1h | 1h |
| 2893 | 12.3.4.2 | замена фильтра | 1h | 2026-04-15 09:00 A | 2026-04-15 10:00 A | 100% |  |  | start no earlier than 2026-04-15 09:00 | Труфанов А | 1h | 1h |
| 2894 | 12.3.4.3 | Замена фильтра | 1h | 2026-07-29 09:00 A | 2026-07-29 10:00 A | 100% |  |  | start no earlier than 2026-07-29 08:00 | Бундин В | 1h | 1h |
| 2895 | 12.3.4.4 | Проверка фильтра, по необходимости замена | 1h | 2026-10-14 09:00 | 2026-10-14 10:00 |  |  | 110.47d | start no earlier than 2026-10-14 09:00 | Дедов В | 1h |  |
| 2896 | 12.3.5 | **техническая вода** | 169.02d | 2026-03-11 09:00 A | 2026-10-21 09:10 | 80% | 33.8d | 104.57d |  |  | 1.83h | 1.33h |
| 2897 | 12.3.5.1 | проверка гидроаккумулятора | 10min | 2026-03-11 09:00 A | 2026-03-11 09:10 A | 100% |  |  | start no earlier than 2026-03-11 09:00 | Некрасов А | 0.17h | 0.17h |
| 2898 | 12.3.5.2 | замена фильтров | 10min | 2026-03-11 09:00 A | 2026-03-11 09:10 A | 100% |  |  | start no earlier than 2026-03-11 09:00 | Некрасов А | 0.17h | 0.17h |
| 2899 | 12.3.5.3 | замена фильтров | 30min | 2026-05-27 09:00 A | 2026-05-27 09:30 A | 100% |  |  | start no earlier than 2026-03-11 09:00 | Бундин В | 0.5h | 0.5h |
| 2900 | 12.3.5.4 | замена фильтров | 30min | 2026-03-12 09:00 A | 2026-03-12 09:30 A | 100% |  |  | start no earlier than 2026-03-12 09:00 | Бобренок В | 0.5h | 0.5h |
| 2901 | 12.3.5.5 | проверка гидроаккумулятора | 10min | 2026-10-07 09:00 | 2026-10-07 09:10 |  |  | 115.57d | start no earlier than 2026-10-07 09:00 | Тимофеев В | 0.17h |  |
| 2902 | 12.3.5.6 | проверка гидроаккумулятора | 10min | 2026-10-21 09:00 | 2026-10-21 09:10 |  |  | 104.57d | start no earlier than 2026-10-21 09:00 | Тимофеев В; Николаев | 0.33h |  |
| 2903 | 12.3.6 | **линия 1** | 188.12d? | 2026-03-18 09:00 A | 2026-11-18 10:00 | 95% | 9.41d? | 80.47d |  |  | 42.5h | 40.75h |
| 2904 | 12.3.6.1 | **шнек подачи в питатель экструдера** | 7.12d | 2026-11-11 09:00 A | 2026-11-18 10:00 | 50% | 3.56d | 80.47d |  |  | 2h | 1h |
| 2905 | 12.3.6.1.1 | Замена подшипников (все целые) | 1h | 2026-11-11 09:00 A | 2026-11-11 10:00 A | 100% |  |  | start no earlier than 2026-11-11 09:00 | Тимофеев В | 1h | 1h |
| 2906 | 12.3.6.1.2 | Замена подшипников | 1h | 2026-11-18 09:00 | 2026-11-18 10:00 |  |  | 80.47d | start no earlier than 2026-11-18 09:00 | Бундин В | 1h |  |
| 2907 | 12.3.6.2 | **питатель экструдера** | 188.06d? | 2026-03-18 09:00 A | 2026-11-18 09:30 | 96% | 7.23d? | 80.53d |  |  | 14h | 13.5h |
| 2908 | 12.3.6.2.1 | замена подшипники | 1d? | 2026-04-08 09:00 A | 2026-04-08 18:00 A | 100% |  |  | start no earlier than 2026-04-08 09:00 | Тимофеев В | 8h | 8h |
| 2909 | 12.3.6.2.2 | контроль палстик втулки | 1h | 2026-05-13 09:00 A | 2026-05-13 10:00 A | 100% |  |  | start no earlier than 2026-05-13 09:00 | Бобренок В | 1h | 1h |
| 2910 | 12.3.6.2.3 | контроль шестерен привода, редуктора | 10min | 2026-03-18 09:00 A | 2026-03-18 09:10 A | 100% |  |  | start no earlier than 2026-03-18 09:00 | Труфанов А | 0.17h | 0.17h |
| 2911 | 12.3.6.2.4 | контроль состояние пластик втулки | 30min | 2026-06-02 09:00 A | 2026-06-02 09:30 A | 100% |  |  | start no earlier than 2026-06-02 09:00 | Некрасов А | 0.5h | 0.5h |
| 2912 | 12.3.6.2.5 | Ревизия питателя | 20min | 2026-07-29 09:00 A | 2026-07-29 09:20 A | 100% |  |  | start no earlier than 2026-07-29 08:00 | Бундин В | 0.33h | 0.33h |
| 2913 | 12.3.6.2.6 | Ревизия питателя, контроль состояния подшипников/втулки/шестерен | 30min | 2026-09-23 09:00 A | 2026-09-23 09:30 A | 100% |  |  | start no earlier than 2026-09-23 09:00 | Некрасов А | 0.5h | 0.5h |
| 2914 | 12.3.6.2.7 | Ревизия питателя, контроль состояния подшипников/втулки/шестерен/втулки | 30min | 2026-09-30 09:00 A | 2026-09-30 09:30 A | 100% |  |  | start no earlier than 2026-09-30 09:00 | Тимофеев В | 0.5h | 0.5h |
| 2915 | 12.3.6.2.8 | Ревизия питателя, контроль состояния подшипников/втулки/шестерен/втулки | 30min | 2026-10-21 09:00 A | 2026-10-21 09:30 A | 100% |  |  | start no earlier than 2026-10-21 09:00 | Тимофеев В; Николаев | 1h | 1h |
| 2916 | 12.3.6.2.9 | Ревизия питателя, контроль состояния подшипников/втулки/шестерен/втулки | 30min | 2026-10-29 09:00 A | 2026-10-29 09:30 A | 100% |  |  | start no earlier than 2026-10-29 08:00 | Макаревич А; Николаев | 1h | 1h |
| 2917 | 12.3.6.2.10 | Ревизия питателя, контроль состояния подшипников/втулки/шестерен/втулки | 30min | 2026-11-11 09:00 A | 2026-11-11 09:30 A | 100% |  |  | start no earlier than 2026-11-11 09:00 | Тимофеев В | 0.5h | 0.5h |
| 2918 | 12.3.6.2.11 | Ревизия питателя, контроль состояния подшипников/втулки/шестерен/втулки | 30min | 2026-11-18 09:00 | 2026-11-18 09:30 |  |  | 80.53d | start no earlier than 2026-11-18 09:00 | Бундин В | 0.5h |  |

| ID | WBS | Task | Duration | Start | Finish | Complete | Remaining | Total slack | Constraint | Resources | Work | Actual work |
| --- | --- | --- | --- | --- | --- | --- | --- | --- | --- | --- | --- | --- |
| 2919 | 12.3.6.3 | **прекондицинер экструдера** | 148.03d | 2026-05-13 09:00 A | 2026-11-18 09:15 | 88% | 18.5d | 80.56d |  |  | 2.5h | 2.25h |
| 2920 | 12.3.6.3.1 | контроль привода, подшипников | 15min | 2026-05-13 09:00 A | 2026-05-13 09:15 A | 100% |  |  | start no earlier than 2026-05-13 09:00 | Бобренок В | 0.25h | 0.25h |
| 2921 | 12.3.6.3.2 | контроль привода, подшипников | 15min | 2026-07-29 09:00 A | 2026-07-29 09:15 A | 100% |  |  | start no earlier than 2026-07-29 08:00 | Труфанов А | 0.25h | 0.25h |
| 2922 | 12.3.6.3.3 | контроль привода, подшипников | 15min | 2026-09-23 09:00 A | 2026-09-23 09:15 A | 100% |  |  | start no earlier than 2026-09-23 09:00 | Некрасов А | 0.25h | 0.25h |
| 2923 | 12.3.6.3.4 | контроль привода, подшипников/при необходимости замена | 15min | 2026-09-30 09:00 A | 2026-09-30 09:15 A | 100% |  |  | start no earlier than 2026-09-30 09:00 | Тимофеев В | 0.25h | 0.25h |
| 2924 | 12.3.6.3.5 | контроль привода, подшипников/при необходимости замена | 15min | 2026-10-21 09:00 A | 2026-10-21 09:15 A | 100% |  |  | start no earlier than 2026-10-21 09:00 | Николаев; Тимофеев В | 0.5h | 0.5h |
| 2925 | 12.3.6.3.6 | контроль привода, подшипников/при необходимости замена | 15min | 2026-10-29 09:00 A | 2026-10-29 09:15 A | 100% |  |  | start no earlier than 2026-10-29 08:00 | Макаревич А; Николаев | 0.5h | 0.5h |
| 2926 | 12.3.6.3.7 | контроль привода, подшипников/при необходимости замена | 15min | 2026-11-11 09:00 A | 2026-11-11 09:15 A | 100% |  |  | start no earlier than 2026-11-11 09:00 | Тимофеев В | 0.25h | 0.25h |
| 2927 | 12.3.6.3.8 | контроль привода, подшипников/при необходимости замена | 15min | 2026-11-18 09:00 | 2026-11-18 09:15 |  |  | 80.56d | start no earlier than 2026-11-18 09:00 | Бундин В | 0.25h |  |
| 2928 | 12.3.6.4 | **парогенератор** | 172.12d | 2026-04-08 09:00 A | 2026-11-17 10:00 A | 100% |  |  |  |  | 24h | 24h |
| 2929 | 12.3.6.4.1 | вскрытие электородов, чистка | 1h | 2026-05-13 09:00 A | 2026-05-13 10:00 A | 100% |  |  | start no earlier than 2026-05-13 09:00 | Бобренок В | 1h | 1h |
| 2930 | 12.3.6.4.2 | замена реле вкл насоса. (не вкл) | 2h | 2026-05-13 09:00 A | 2026-05-13 11:00 A | 100% |  |  | start no earlier than 2026-05-13 09:00 | Бобренок В | 2h | 2h |
| 2931 | 12.3.6.4.3 | замена гофротрубы / закрепить жестко | 2h | 2026-04-08 09:00 A | 2026-04-08 11:00 A | 100% |  |  | start no earlier than 2026-04-08 09:00 | Бобренок В | 2h | 2h |
| 2932 | 12.3.6.4.4 | чистка парогенератора, если нужно замена электродов | 2h | 2026-06-10 09:00 A | 2026-06-10 11:00 A | 100% |  |  | start no earlier than 2026-06-10 09:00 | Дедов В | 2h | 2h |
| 2933 | 12.3.6.4.5 | читска парогенератора, если нужно замена электродов | 2h | 2026-05-20 09:00 A | 2026-05-20 11:00 A | 100% |  |  | start no earlier than 2026-05-20 09:00 | Некрасов А | 2h | 2h |
| 2934 | 12.3.6.4.6 | читска парогенератора, если нужно замена электродов | 1h | 2026-06-02 09:00 A | 2026-06-02 10:00 A | 100% |  |  | start no earlier than 2026-06-02 09:00 | Тимофеев В | 1h | 1h |
| 2935 | 12.3.6.4.7 | вскрытие электородов, чистка | 1h | 2026-08-12 09:00 A | 2026-08-12 10:00 A | 100% |  |  | start no earlier than 2026-08-12 09:00 | Некрасов А | 1h | 1h |
| 2936 | 12.3.6.4.8 | вскрытие электородов, чистка (при остановке линии на мойку, если не остановилась, передать по смене Бундину) | 1h | 2026-09-22 09:00 A | 2026-09-22 10:00 A | 100% |  |  | start no earlier than 2026-09-22 09:00 | Макаревич А; Бундин В | 2h | 2h |
| 2937 | 12.3.6.4.9 | вскрытие электородов, чистка (при остановке линии на мойку, если не остановилась, передать по смене Тимофееву) | 1h | 2026-09-29 09:00 A | 2026-09-29 10:00 A | 100% |  |  | start no earlier than 2026-09-29 09:00 | Бундин В; Тимофеев В | 2h | 2h |
| 2938 | 12.3.6.4.10 | Чистка парогенератора после остановки | 1h | 2026-10-13 09:00 A | 2026-10-13 10:00 A | 100% |  |  | start no earlier than 2026-10-13 08:00 | Бобренок В | 1h | 1h |
| 2939 | 12.3.6.4.11 | Чистка парогенератора | 1h | 2026-10-21 09:00 A | 2026-10-21 10:00 A | 100% |  |  | start no earlier than 2026-10-21 09:00 | Тимофеев В; Николаев | 2h | 2h |
| 2940 | 12.3.6.4.12 | Чистка парогенератора | 1h | 2026-10-29 09:00 A | 2026-10-29 10:00 A | 100% |  |  | start no earlier than 2026-10-29 08:00 | Макаревич А; Николаев | 2h | 2h |
| 2941 | 12.3.6.4.13 | Чистка парогенератора (чистим, как остановятся) | 1h | 2026-11-17 09:00 A | 2026-11-17 10:00 A | 100% |  |  | start no earlier than 2026-11-17 08:00 | Николаев; Макаревич А | 2h | 2h |
| 2942 | 12.3.6.4.14 | Чистка парогенератора (начать как встанут) | 1h | 2026-11-10 09:00 A | 2026-11-10 10:00 A | 100% |  |  | start no earlier than 2026-11-10 08:00 | Дедов В; Тимофеев В | 2h | 2h |

| ID | WBS | Task | Duration | Start | Finish | Complete | Remaining | Total slack | Constraint | Resources | Work | Actual work |
| --- | --- | --- | --- | --- | --- | --- | --- | --- | --- | --- | --- | --- |
| 2943 | 12.3.7 | **редуктор экструдера и маслянная станция** | 470.04d | 2025-02-17 09:00 A | 2026-11-18 09:20 | 65% | 163.87d | 80.55d |  |  | 20.83h | 14.5h |
| 2944 | 12.3.7.1 | чистка фильтра | 30min | 2026-06-02 09:00 A | 2026-06-02 09:30 A | 100% |  |  | start no earlier than 2026-06-02 09:00 | Тимофеев В | 0.5h | 0.5h |
| 2945 | 12.3.7.2 | муфта редутор-мотор | 15min | 2026-03-11 09:00 A | 2026-03-11 09:15 A | 100% |  |  | start no earlier than 2026-03-11 09:00 | Тимофеев В | 0.25h | 0.25h |
| 2946 | 12.3.7.3 | чистка фильтра | 30min | 2026-07-16 09:00 A | 2026-07-16 09:30 A | 100% |  |  | start no earlier than 2026-07-16 09:00 | Бобренок В | 0.5h | 0.5h |
| 2947 | 12.3.7.4 | тэны и термпары шнеков- прортяжка | 30min | 2025-02-25 09:00 A | 2025-02-25 09:30 A | 100% |  |  | start no earlier than 2025-02-25 09:00 | Дедов В | 0.5h | 0.5h |
| 2948 | 12.3.7.5 | Чистка фильтра | 30min | 2026-07-29 08:00 A | 2026-07-29 09:30 A | 100% |  |  | start no earlier than 2026-07-29 08:00 | Тимофеев В | 0.5h | 0.5h |
| 2949 | 12.3.7.6 | тэны и термпоры шнеков- прортяжка | 30min | 2026-09-23 09:00 A | 2026-09-23 09:30 A | 100% |  |  | start no earlier than 2026-09-23 09:00 | Некрасов А | 0.5h | 0.5h |
| 2950 | 12.3.7.7 | Чистка фильтра | 30min | 2026-09-23 09:00 A | 2026-09-23 09:30 A | 100% |  |  | start no earlier than 2026-09-23 09:00 | Бундин В | 0.5h | 0.5h |
| 2951 | 12.3.7.8 | Чистка фильтра/тэны и термопары шнеков - протяжка | 30min | 2026-09-30 09:00 A | 2026-09-30 09:30 A | 100% |  |  | start no earlier than 2026-09-30 09:00 | Тимофеев В | 0.5h | 0.5h |
| 2952 | 12.3.7.9 | Чистка фильтра | 30min | 2026-10-14 09:00 A | 2026-10-14 09:30 A | 100% |  |  | start no earlier than 2026-10-14 09:00 | Макаревич А | 0.5h | 0.5h |
| 2953 | 12.3.7.10 | Чистка фильтра/тэны и термопары шнеков - протяжка | 30min | 2026-10-21 09:00 A | 2026-10-21 09:30 A | 100% |  |  | start no earlier than 2026-10-21 09:00 | Тимофеев В; Николаев | 1h | 1h |
| 2954 | 12.3.7.11 | Чистка фильтра | 30min | 2026-10-29 09:00 A | 2026-10-29 09:30 A | 100% |  |  | start no earlier than 2026-10-29 08:00 | Макаревич А; Николаев | 1h | 1h |
| 2955 | 12.3.7.12 | Чистка фильтра | 15min | 2026-11-11 09:00 A | 2026-11-11 09:15 A | 100% |  |  | start no earlier than 2026-11-11 09:00 | Тимофеев В | 0.25h | 0.25h |
| 2956 | 12.3.7.13 | Чистка фильтра | 15min | 2026-11-18 09:00 | 2026-11-18 09:15 |  |  | 80.56d | start no earlier than 2026-11-18 09:00 | Бундин В | 0.25h |  |
| 2957 | 12.3.7.14 | **шкаф управления экструдером** | 179.03d | 2026-03-31 09:00 A | 2026-11-18 09:15 | 82% | 32.55d | 80.56d |  |  | 3.25h | 2.75h |
| 2958 | 12.3.7.14.1 | протяжка контактов | 30min | 2026-03-31 09:00 A | 2026-03-31 09:30 A | 100% |  |  | start no earlier than 2026-03-11 09:00 | Некрасов А | 0.5h | 0.5h |
| 2959 | 12.3.7.14.2 | частотные привода экструдера, ножей, питателя - продувка | 30min | 2026-05-27 09:00 A | 2026-05-27 09:30 A | 100% |  |  | start no earlier than 2026-05-27 09:00 | Бундин В | 0.5h | 0.5h |
| 2960 | 12.3.7.14.3 | частотные привода экструдера, ножей, питателя - продувка | 15min | 2026-07-29 09:00 A | 2026-07-29 09:15 A | 100% |  |  | start no earlier than 2026-07-29 08:00 | Труфанов А | 0.25h | 0.25h |
| 2961 | 12.3.7.14.4 | частотные привода экструдера, ножей, питателя - продувка | 15min | 2026-09-23 09:00 A | 2026-09-23 09:15 A | 100% |  |  | start no earlier than 2026-09-23 09:00 | Некрасов А | 0.25h | 0.25h |
| 2962 | 12.3.7.14.5 | частотные привода экструдера, ножей, питателя - продувка | 15min | 2026-10-07 09:00 A | 2026-10-07 09:15 A | 100% |  |  | start no earlier than 2026-10-07 09:00 | Тимофеев В | 0.25h | 0.25h |
| 2963 | 12.3.7.14.6 | частотные привода экструдера, ножей, питателя - продувка | 15min | 2026-10-21 09:00 A | 2026-10-21 09:15 A | 100% |  |  | start no earlier than 2026-10-21 09:00 | Тимофеев В; Николаев | 0.5h | 0.5h |
| 2964 | 12.3.7.14.7 | частотные привода экструдера, ножей, питателя - продувка | 15min | 2026-10-29 09:00 A | 2026-10-29 09:15 A | 100% |  |  | start no earlier than 2026-10-29 08:00 | Макаревич А; Николаев | 0.5h | 0.5h |
| 2965 | 12.3.7.14.8 | частотные привода экструдера, ножей, питателя - продувка | 15min | 2026-11-11 09:00 | 2026-11-11 09:15 |  |  | 87.56d | start no earlier than 2026-11-11 09:00 | Тимофеев В | 0.25h |  |
| 2966 | 12.3.7.14.9 | частотные привода экструдера, ножей, питателя - продувка | 15min | 2026-11-18 09:00 | 2026-11-18 09:15 |  |  | 80.56d | start no earlier than 2026-11-18 09:00 | Бундин В | 0.25h |  |

| ID | WBS | Task | Duration | Start | Finish | Complete | Remaining | Total slack | Constraint | Resources | Work | Actual work |
| --- | --- | --- | --- | --- | --- | --- | --- | --- | --- | --- | --- | --- |
| 2967 | 12.3.7.15 | **блок тэнов сушки** | 143.03d | 2026-05-20 09:00 A | 2026-11-18 09:15 | 82% | 26.01d | 80.56d |  |  | 3.25h | 2.75h |
| 2968 | 12.3.7.15.1 | ревизия, замена отгоревших жил, проверка токов | 1h | 2026-05-20 09:00 A | 2026-05-20 10:00 A | 100% |  |  | start no earlier than 2026-05-20 09:00 | Некрасов А | 1h | 1h |
| 2969 | 12.3.7.15.2 | ревизия/ проверка токов | 15min | 2026-08-26 09:00 A | 2026-08-26 09:15 A | 100% |  |  | start no earlier than 2026-08-26 09:00 | Некрасов А | 0.25h | 0.25h |
| 2970 | 12.3.7.15.3 | ревизия/ проверка токов | 15min | 2026-09-23 09:00 A | 2026-09-23 09:15 A | 100% |  |  | start no earlier than 2026-09-23 09:00 | Труфанов А | 0.25h | 0.25h |
| 2971 | 12.3.7.15.4 | ревизия/ проверка токов | 15min | 2026-10-07 09:00 A | 2026-10-07 09:15 A | 100% |  |  | start no earlier than 2026-10-07 09:00 | Тимофеев В | 0.25h | 0.25h |
| 2972 | 12.3.7.15.5 | ревизия/ проверка токов | 15min | 2026-10-21 09:00 A | 2026-10-21 09:15 A | 100% |  |  | start no earlier than 2026-10-21 09:00 | Тимофеев В; Николаев | 0.5h | 0.5h |
| 2973 | 12.3.7.15.6 | ревизия/ проверка токов | 15min | 2026-10-29 09:00 A | 2026-10-29 09:15 A | 100% |  |  | start no earlier than 2026-10-29 08:00 | Макаревич А; Николаев | 0.5h | 0.5h |
| 2974 | 12.3.7.15.7 | ревизия/ проверка токов | 15min | 2026-11-11 09:00 | 2026-11-11 09:15 |  |  | 87.56d | start no earlier than 2026-11-11 09:00 | Тимофеев В | 0.25h |  |
| 2975 | 12.3.7.15.8 | ревизия/ проверка токов | 15min | 2026-11-18 09:00 | 2026-11-18 09:15 |  |  | 80.56d | start no earlier than 2026-11-18 09:00 | Бундин В | 0.25h |  |
| 2976 | 12.3.7.16 | **шкаф управления тэнами сушки** | 68.5d | 2026-06-10 09:00 A | 2026-09-11 13:00 | 11% | 61.29d | 140.09d |  |  | 4.75h | 0.5h |
| 2977 | 12.3.7.16.1 | протяжка контактов | 15min | 2026-06-10 09:00 | 2026-06-10 09:15 |  |  | 208.56d | start no earlier than 2026-06-10 09:00 | Дедов В | 0.25h |  |
| 2978 | 12.3.7.16.2 | замена неисправных жил | 4h | 2026-09-11 09:00 | 2026-09-11 13:00 |  |  | 140.09d | start no earlier than 2026-09-11 09:00 | Тимофеев В | 4h |  |
| 2979 | 12.3.7.16.3 | частотные привода экструдера, ножей, питателя - продувка | 30min | 2026-07-16 09:00 A | 2026-07-16 09:30 A | 100% |  |  | start no earlier than 2026-07-16 09:00 | Бобренок В | 0.5h | 0.5h |
| 2980 | 12.3.7.17 | конвейер №1 с печи в дрожировщик прорверка подшипники, реуктор | 30min | 2025-02-17 09:00 | 2025-02-17 09:30 |  |  | 550.53d | start no earlier than 2025-02-15 09:00 | Дедов В | 0.5h |  |
| 2981 | 12.3.7.18 | Осмотр, продувка, протяжка контактов | 20min | 2026-09-23 09:00 A | 2026-09-23 09:20 A | 100% |  |  | start no earlier than 2026-09-23 09:00 | Труфанов А | 0.33h | 0.33h |
| 2982 | 12.3.7.19 | Осмотр, продувка, протяжка контактов | 20min | 2026-10-21 09:00 A | 2026-10-21 09:20 A | 100% |  |  | start no earlier than 2026-10-21 09:00 | Тимофеев В; Николаев | 0.67h | 0.67h |
| 2983 | 12.3.7.20 | Осмотр, продувка, протяжка контактов | 20min | 2026-10-29 09:00 A | 2026-10-29 09:20 A | 100% |  |  | start no earlier than 2026-10-29 08:00 | Макаревич А; Николаев | 0.67h | 0.67h |
| 2984 | 12.3.7.21 | Осмотр, продувка, протяжка контактов | 20min | 2026-11-11 09:00 A | 2026-11-11 09:20 A | 100% |  |  | start no earlier than 2026-11-11 09:00 | Тимофеев В | 0.33h | 0.33h |
| 2985 | 12.3.7.22 | Осмотр, продувка, протяжка контактов | 20min | 2026-11-18 09:00 | 2026-11-18 09:20 |  |  | 80.55d | start no earlier than 2026-11-18 09:00 | Бундин В | 0.33h |  |
| 2986 | 12.3.8 | **барабан смесительный дрожировка - прорверка подшипнки , реуктор** | 198.01d | 2026-03-04 08:00 A | 2026-11-18 09:05 | 98% | 4.6d | 80.58d |  |  | 4.08h | 4h |
| 2987 | 12.3.8.1 | замена вал № 4 час | 2h | 2026-03-04 08:00 A | 2026-03-04 11:00 A | 100% |  |  | start no earlier than 2026-03-04 08:00 | Тимофеев В | 2h | 2h |
| 2988 | 12.3.8.2 | Дефектовка - проверить подачу, вибрации, посторонние шумы. | 15min | 2026-07-29 08:00 A | 2026-07-29 09:15 A | 100% |  |  | start no earlier than 2026-07-29 08:00 | Тимофеев В | 0.25h | 0.25h |
| 2989 | 12.3.8.3 | Дефектовка - проверить подачу, вибрации, посторонние шумы. | 15min | 2026-09-23 09:00 A | 2026-09-23 09:15 A | 100% |  |  | start no earlier than 2026-09-23 09:00 | Некрасов А | 0.25h | 0.25h |
| 2990 | 12.3.8.4 | Дефектовка - проверить подачу, вибрации, посторонние шумы/проверка фильтров/насосов/фитингов | 15min | 2026-09-30 09:00 A | 2026-09-30 09:15 A | 100% |  |  | start no earlier than 2026-09-30 09:00 | Тимофеев В | 0.25h | 0.25h |
| 2991 | 12.3.8.5 | Дефектовка - проверить подачу, вибрации, посторонние шумы/проверка фильтров/насосов/фитингов | 15min | 2026-10-21 09:00 A | 2026-10-21 09:15 A | 100% |  |  | start no earlier than 2026-10-21 09:00 | Тимофеев В; Николаев | 0.5h | 0.5h |
| 2992 | 12.3.8.6 | Дефектовка - проверить подачу, вибрации, посторонние шумы/проверка фильтров/насосов/фитингов | 15min | 2026-10-29 09:00 A | 2026-10-29 09:15 A | 100% |  |  | start no earlier than 2026-10-29 08:00 | Макаревич А; Николаев | 0.5h | 0.5h |
| 2993 | 12.3.8.7 | Дефектовка - проверить подачу, вибрации, посторонние шумы/проверка фильтров/насосов/фитингов | 15min | 2026-11-11 09:00 A | 2026-11-11 09:15 A | 100% |  |  | start no earlier than 2026-11-11 09:00 | Тимофеев В | 0.25h | 0.25h |
| 2994 | 12.3.8.8 | Дефектовка - проверить подачу, вибрации, посторонние шумы/проверка фильтров/насосов/фитингов | 5min | 2026-11-18 09:00 | 2026-11-18 09:05 |  |  | 80.58d | start no earlier than 2026-11-18 09:00 | Бундин В | 0.08h |  |

| ID | WBS | Task | Duration | Start | Finish | Complete | Remaining | Total slack | Constraint | Resources | Work | Actual work |
| --- | --- | --- | --- | --- | --- | --- | --- | --- | --- | --- | --- | --- |
| 2995 | 12.3.9 | **печь** | 682d | 2024-05-07 09:00 A | 2026-11-27 18:00 | 71% | 194.86d | 72.59d |  |  | 58h | 26h |
| 2996 | 12.3.9.1 | проверка состояния сетки, ремонт шплинтов | 2h | 2026-07-16 09:00 A | 2026-07-16 11:00 A | 100% |  |  | start no earlier than 2026-07-16 09:00 | Бобренок В; Некрасов А; Труфанов А | 6h | 6h |
| 2997 | 12.3.9.2 | укоротить звено привода | 1h | 2026-07-16 09:00 A | 2026-07-16 10:00 A | 100% |  |  | start no earlier than 2026-07-16 09:00 | Некрасов А | 1h | 1h |
| 2998 | 12.3.9.3 | вентиляторы обдува сушки | 2h | 2024-06-14 09:00 A | 2024-06-14 11:00 A | 100% |  |  | start no earlier than 2024-06-14 09:00 | ТО_2 | 2h | 2h |
| 2999 | 12.3.9.4 | пневотранспорт вентилятор | 2h | 2024-05-07 09:00 A | 2024-05-07 11:00 A | 100% |  |  | start no earlier than 2024-05-07 09:00 | ТО_1 | 2h | 2h |
| 3000 | 12.3.9.5 | пневотранспорт роторный питатель - проверка масла | 30min | 2025-02-17 09:00 A | 2025-02-17 09:30 A | 100% |  |  | start no earlier than 2025-02-16 09:00 | Черепанов И | 0.5h | 0.5h |
| 3001 | 12.3.9.6 | пневотранспорт роторный питатель - проверка масла | 30min | 2026-07-29 09:00 A | 2026-07-29 09:30 A | 100% |  |  | start no earlier than 2026-07-29 08:00 | Труфанов А | 0.5h | 0.5h |
| 3002 | 12.3.9.7 | привод сетки ПЕЧИ сушки - прорверка масла | 30min | 2025-02-17 09:00 A | 2025-02-17 09:30 A | 100% |  |  | start no earlier than 2025-02-16 09:00 | Черепанов И | 0.5h | 0.5h |
| 3003 | 12.3.9.8 | привод сетки ПЕЧИ сушки - прорверка масла | 30min | 2026-07-29 09:00 A | 2026-07-29 09:30 A | 100% |  |  | start no earlier than 2026-07-29 08:00 | Труфанов А | 0.5h | 0.5h |
| 3004 | 12.3.9.9 | дозатор сухой гидролизат - разборка, чистка, замена подшипников | 2h | 2026-08-18 09:00 A | 2026-08-18 11:00 A | 100% |  |  | start no earlier than 2026-08-18 09:00 | Бундин В | 2h | 2h |
| 3005 | 12.3.9.10 | Осмотр цепи и сетки | 1h | 2026-07-29 09:00 A | 2026-07-29 10:00 A | 100% |  |  | start no earlier than 2026-07-29 08:00 | Труфанов А | 1h | 1h |
| 3006 | 12.3.9.11 | Контроль состояния сетки/цепи | 30min | 2026-09-23 09:00 A | 2026-09-23 09:30 A | 100% |  |  | start no earlier than 2026-09-23 09:00 | Некрасов А | 0.5h | 0.5h |
| 3007 | 12.3.9.12 | Смазка цепи (при наличии на складе) | 1h | 2026-09-23 09:00 A | 2026-09-23 10:00 A | 100% |  |  | start no earlier than 2026-09-23 09:00 | Некрасов А | 1h | 1h |
| 3008 | 12.3.9.13 | Контроль состояния сетки/цепи | 1h | 2026-10-07 09:00 A | 2026-10-07 10:00 A | 100% |  |  | start no earlier than 2026-10-07 09:00 | Тимофеев В | 1h | 1h |
| 3009 | 12.3.9.14 | Проверка масла на приводе/осмотр | 30min | 2026-10-07 09:00 A | 2026-10-07 09:30 A | 100% |  |  | start no earlier than 2026-10-07 09:00 | Тимофеев В | 0.5h | 0.5h |
| 3010 | 12.3.9.15 | Контроль состояния сетки/цепи | 1h | 2026-10-14 09:00 A | 2026-10-14 10:00 A | 100% |  |  | start no earlier than 2026-10-14 09:00 | Макаревич А | 1h | 1h |
| 3011 | 12.3.9.16 | Контроль состояния сетки/цепи | 1h | 2026-10-21 09:00 A | 2026-10-21 10:00 A | 100% |  |  | start no earlier than 2026-10-21 09:00 | Тимофеев В; Николаев | 2h | 2h |
| 3012 | 12.3.9.17 | Контроль состояния сетки/цепи | 1h | 2026-10-29 09:00 A | 2026-10-29 10:00 A | 100% |  |  | start no earlier than 2026-10-29 08:00 | Макаревич А; Николаев | 2h | 2h |
| 3013 | 12.3.9.18 | Контроль состояния сетки/цепи | 1h | 2026-11-11 09:00 A | 2026-11-11 10:00 A | 100% |  |  | start no earlier than 2026-11-11 09:00 | Тимофеев В | 1h | 1h |
| 3014 | 12.3.9.19 | Контроль состояния сетки/цепи | 1h | 2026-11-18 09:00 A | 2026-11-18 10:00 A | 100% |  |  | start no earlier than 2026-11-18 09:00 | Бундин В | 1h | 1h |
| 3015 | 12.3.9.20 | Замена сетки | 8h | 2026-11-27 09:00 | 2026-11-27 18:00 |  |  | 72.59d | start no earlier than 2026-11-27 08:00 | Макаревич А; Некрасов А; Николаев; Труфанов А | 32h |  |
| 3016 | 12.4 | **линия 2** | 0.25d? | 2023-12-29 09:00 A | 2023-12-29 11:00 | 58% | 0.11d? |  |  |  | 919.83h | 218.15h |
| 3017 | 12.4.1 | **шнек подачи в питатель экструдера** | 0.12d | 2026-11-18 09:00 A | 2026-11-18 10:00 A | 100% |  |  |  |  | 2h | 2h |
| 3018 | 12.4.1.1 | Замена подшипников | 1h | 2026-11-18 09:00 A | 2026-11-18 10:00 A | 100% |  |  | start no earlier than 2026-11-18 09:00 | Труфанов А; Некрасов А | 2h | 2h |

| ID | WBS | Task | Duration | Start | Finish | Complete | Remaining | Total slack | Constraint | Resources | Work | Actual work |
| --- | --- | --- | --- | --- | --- | --- | --- | --- | --- | --- | --- | --- |
| 3019 | 12.4.2 | **питатель экструдера** | 188.06d | 2026-03-18 09:00 A | 2026-11-18 09:30 A | 100% |  |  |  |  | 7.5h | 7.5h |
| 3020 | 12.4.2.1 | контроль состояние пластик втулки | 30min | 2026-06-02 09:00 A | 2026-06-02 09:30 A | 100% |  |  | start no earlier than 2026-06-02 09:00 | Некрасов А | 0.5h | 0.5h |
| 3021 | 12.4.2.2 | замена подшипники | 1h | 2026-04-08 09:00 A | 2026-04-08 10:00 A | 100% |  |  | start no earlier than 2026-04-08 09:00 |  |  |  |
| 3022 | 12.4.2.3 | замена шестеренок -взять у Веры на складе | 2h | 2026-05-20 09:00 A | 2026-05-20 11:00 A | 100% |  |  | start no earlier than 2026-05-20 09:00 | Бобренок В | 2h | 2h |
| 3023 | 12.4.2.4 | контроль пластик втулки | 30min | 2026-05-13 09:00 A | 2026-05-13 09:30 A | 100% |  |  | start no earlier than 2026-05-13 09:00 | Бобренок В | 0.5h | 0.5h |
| 3024 | 12.4.2.5 | контроль шестерен привода, редуктора | 10min | 2026-03-18 09:00 A | 2026-03-18 09:10 A | 100% |  |  | start no earlier than 2026-03-18 09:00 | Труфанов А | 0.17h | 0.17h |
| 3025 | 12.4.2.6 | Ревизия питателя | 20min | 2026-07-29 09:00 A | 2026-07-29 09:20 A | 100% |  |  | start no earlier than 2026-07-29 08:00 | Бундин В | 0.33h | 0.33h |
| 3026 | 12.4.2.7 | Ревизия питателя, контроль состояния подшипников/втулки/шестерен | 30min | 2026-09-23 09:00 A | 2026-09-23 09:30 A | 100% |  |  | start no earlier than 2026-09-23 09:00 | Бундин В | 0.5h | 0.5h |
| 3027 | 12.4.2.8 | Ревизия питателя, контроль состояния подшипников/втулки/шестерен | 30min | 2026-10-14 09:00 A | 2026-10-14 09:30 A | 100% |  |  | start no earlier than 2026-10-14 09:00 | Дедов В | 0.5h | 0.5h |
| 3028 | 12.4.2.9 | Ревизия питателя, контроль состояния подшипников/втулки/шестерен | 30min | 2026-10-21 09:00 A | 2026-10-21 09:30 A | 100% |  |  | start no earlier than 2026-10-21 09:00 | Макаревич А | 0.5h | 0.5h |
| 3029 | 12.4.2.10 | Ревизия питателя, контроль состояния подшипников/втулки/шестерен | 30min | 2026-10-29 09:00 A | 2026-10-29 09:30 A | 100% |  |  | start no earlier than 2026-10-29 08:00 | Труфанов А; Некрасов А | 1h | 1h |
| 3030 | 12.4.2.11 | Ревизия питателя, контроль состояния подшипников/втулки/шестерен | 30min | 2026-11-11 09:00 A | 2026-11-11 09:30 A | 100% |  |  | start no earlier than 2026-11-11 09:00 | Бундин В | 0.5h | 0.5h |
| 3031 | 12.4.2.12 | Ревизия питателя, контроль состояния подшипников/втулки/шестерен | 30min | 2026-11-18 09:00 A | 2026-11-18 09:30 A | 100% |  |  | start no earlier than 2026-11-18 09:00 | Труфанов А; Некрасов А | 1h | 1h |
| 3032 | 12.4.3 | **прекондицинер экструдера** | 148.03d | 2026-05-13 09:00 A | 2026-11-18 09:15 A | 100% |  |  |  |  | 2.5h | 2.5h |
| 3033 | 12.4.3.1 | контроль привода, подшипников | 15min | 2026-05-13 09:00 A | 2026-05-13 09:15 A | 100% |  |  | start no earlier than 2026-05-13 09:00 | Бобренок В | 0.25h | 0.25h |
| 3034 | 12.4.3.2 | контроль привода, подшипников | 15min | 2026-07-29 09:00 A | 2026-07-29 09:15 A | 100% |  |  | start no earlier than 2026-07-29 08:00 | Труфанов А | 0.25h | 0.25h |
| 3035 | 12.4.3.3 | контроль привода, подшипников | 15min | 2026-09-23 09:00 A | 2026-09-23 09:15 A | 100% |  |  | start no earlier than 2026-09-23 09:00 | Бундин В | 0.25h | 0.25h |
| 3036 | 12.4.3.4 | контроль привода, подшипников | 15min | 2026-10-14 09:00 A | 2026-10-14 09:15 A | 100% |  |  | start no earlier than 2026-10-14 09:00 | Дедов В | 0.25h | 0.25h |
| 3037 | 12.4.3.5 | контроль привода, подшипников | 15min | 2026-10-21 09:00 A | 2026-10-21 09:15 A | 100% |  |  | start no earlier than 2026-10-21 09:00 | Макаревич А | 0.25h | 0.25h |
| 3038 | 12.4.3.6 | контроль привода, подшипников | 15min | 2026-10-29 09:00 A | 2026-10-29 09:15 A | 100% |  |  | start no earlier than 2026-10-29 08:00 | Труфанов А; Некрасов А | 0.5h | 0.5h |
| 3039 | 12.4.3.7 | контроль привода, подшипников | 15min | 2026-11-11 09:00 A | 2026-11-11 09:15 A | 100% |  |  | start no earlier than 2026-11-11 09:00 | Бундин В | 0.25h | 0.25h |
| 3040 | 12.4.3.8 | контроль привода, подшипников | 15min | 2026-11-18 09:00 A | 2026-11-18 09:15 A | 100% |  |  | start no earlier than 2026-11-18 09:00 | Труфанов А; Некрасов А | 0.5h | 0.5h |
| 3041 | 12.4.4 | **парогенератор** | 692.12d | 2024-04-10 09:00 A | 2026-11-17 10:00 | 95% | 32.96d | 81.47d |  |  | 13.5h | 13h |
| 3042 | 12.4.4.1 | вскрытие электородов, чистка | 1h | 2026-05-13 09:00 A | 2026-05-13 10:00 A | 100% |  |  | start no earlier than 2026-05-13 09:00 | Бобренок В | 1h | 1h |
| 3043 | 12.4.4.2 | вскрытие электородов, чистка | 1h | 2026-08-12 09:00 A | 2026-08-12 10:00 A | 100% |  |  | start no earlier than 2026-08-12 09:00 | Некрасов А | 1h | 1h |
| 3044 | 12.4.4.3 | тэны и термпоры шнеков- прортяжка | 30min | 2024-04-10 09:00 | 2024-04-10 09:30 |  |  | 773.53d | start no earlier than 2024-04-10 09:00 | Черепанов И | 0.5h |  |
| 3045 | 12.4.4.4 | Чистка парогенератора | 1h | 2026-07-29 09:00 A | 2026-07-29 10:00 A | 100% |  |  | start no earlier than 2026-07-29 08:00 | Бундин В | 1h | 1h |
| 3046 | 12.4.4.5 | вскрытие электородов, чистка (при остановке линии на мойку, если не остановилась, передать по смене Бундину) | 1h | 2026-09-23 09:00 A | 2026-09-23 10:00 A | 100% |  |  | start no earlier than 2026-09-23 09:00 | Некрасов А | 1h | 1h |
| 3047 | 12.4.4.6 | вскрытие электородов, чистка (при остановке линии на мойку, если не остановилась, передать по смене Дедову) | 1h | 2026-09-29 09:00 A | 2026-09-29 10:00 A | 100% |  |  | start no earlier than 2026-09-29 08:00 | Бундин В; Дедов В | 2h | 2h |
| 3048 | 12.4.4.7 | Чистка парогенератора после остановки | 1h | 2026-10-13 09:00 A | 2026-10-13 10:00 A | 100% |  |  | start no earlier than 2026-10-13 08:00 | Бобренок В | 1h | 1h |
| 3049 | 12.4.4.8 | Чистка парогенератора после остановки | 1h | 2026-10-21 09:00 A | 2026-10-21 10:00 A | 100% |  |  | start no earlier than 2026-10-21 09:00 | Макаревич А | 1h | 1h |
| 3050 | 12.4.4.9 | Чистка парогенератора | 1h | 2026-10-29 09:00 A | 2026-10-29 10:00 A | 100% |  |  | start no earlier than 2026-10-29 08:00 | Макаревич А; Николаев | 2h | 2h |
| 3051 | 12.4.4.10 | Чистка парогенератора | 1h | 2026-11-11 09:00 A | 2026-11-11 10:00 A | 100% |  |  | start no earlier than 2026-11-11 09:00 | Бундин В | 1h | 1h |
| 3052 | 12.4.4.11 | Чистка парогенератора (когда остановятся) | 1h | 2026-11-17 09:00 A | 2026-11-17 10:00 A | 100% |  |  | start no earlier than 2026-11-17 09:00 | Макаревич А; Николаев | 2h | 2h |

| ID | WBS | Task | Duration | Start | Finish | Complete | Constraint | Resources | Work | Actual work |
| --- | --- | --- | --- | --- | --- | --- | --- | --- | --- | --- |
| 3053 | 12.4.5 | **шкаф управления экструдером** | 193.03d | 2026-03-11 09:00 A | 2026-11-18 09:15 A | 100% |  |  | 3.5h | 3.5h |
| 3054 | 12.4.5.1 | протяжка контактов | 30min | 2026-03-11 09:00 A | 2026-03-11 09:30 A | 100% | start no earlier than 2026-03-11 09:00 | Некрасов А | 0.5h | 0.5h |
| 3055 | 12.4.5.2 | частотные привода экструдера, ножей, питателя - продувка | 30min | 2026-05-27 09:00 A | 2026-05-27 09:30 A | 100% | start no earlier than 2026-05-27 09:00 | Бундин В | 0.5h | 0.5h |
| 3056 | 12.4.5.3 | частотные привода экструдера, ножей, питателя - продувка | 15min | 2026-07-16 09:00 A | 2026-07-16 09:15 A | 100% | start no earlier than 2026-07-16 09:00 | Бобренок В | 0.25h | 0.25h |
| 3057 | 12.4.5.4 | частотные привода экструдера, ножей, питателя - продувка | 15min | 2026-07-29 09:00 A | 2026-07-29 09:15 A | 100% | start no earlier than 2026-07-29 08:00 | Труфанов А | 0.25h | 0.25h |
| 3058 | 12.4.5.5 | частотные привода экструдера, ножей, питателя - продувка | 15min | 2026-09-23 09:00 A | 2026-09-23 09:15 A | 100% | start no earlier than 2026-09-23 09:00 | Труфанов А | 0.25h | 0.25h |
| 3059 | 12.4.5.6 | частотные привода экструдера, ножей, питателя - продувка | 15min | 2026-10-14 09:00 A | 2026-10-14 09:15 A | 100% | start no earlier than 2026-10-14 09:00 | Дедов В | 0.25h | 0.25h |
| 3060 | 12.4.5.7 | частотные привода экструдера, ножей, питателя - продувка | 15min | 2026-10-21 09:00 A | 2026-10-21 09:15 A | 100% | start no earlier than 2026-10-21 09:00 | Макаревич А | 0.25h | 0.25h |
| 3061 | 12.4.5.8 | частотные привода экструдера, ножей, питателя - продувка | 15min | 2026-10-29 09:00 A | 2026-10-29 09:15 A | 100% | start no earlier than 2026-10-29 08:00 | Труфанов А; Некрасов А | 0.5h | 0.5h |
| 3062 | 12.4.5.9 | частотные привода экструдера, ножей, питателя - продувка | 15min | 2026-11-11 09:00 A | 2026-11-11 09:15 A | 100% | start no earlier than 2026-11-11 09:00 | Бундин В | 0.25h | 0.25h |
| 3063 | 12.4.5.10 | частотные привода экструдера, ножей, питателя - продувка | 15min | 2026-11-18 09:00 A | 2026-11-18 09:15 A | 100% | start no earlier than 2026-11-18 09:00 | Труфанов А; Некрасов А | 0.5h | 0.5h |
| 3064 | 12.4.6 | **редуктор экструдера и маслянная станция** | 143.06d | 2026-05-20 09:00 A | 2026-11-18 09:30 A | 100% |  |  | 8.5h | 8.5h |
| 3065 | 12.4.6.1 | чистка фильтра | 30min | 2026-06-02 09:00 A | 2026-06-02 09:30 A | 100% | start no earlier than 2026-06-02 09:00 | Тимофеев В | 0.5h | 0.5h |
| 3066 | 12.4.6.2 | чистка фильтра | 30min | 2026-05-20 09:00 A | 2026-05-20 09:30 A | 100% | start no earlier than 2026-05-20 09:00 | Тимофеев В | 0.5h | 0.5h |
| 3067 | 12.4.6.3 | муфта редутор-мотор проверка состояния | 30min | 2026-05-27 09:00 A | 2026-05-27 09:30 A | 100% | start no earlier than 2026-05-27 09:00 | Тимофеев В | 0.5h | 0.5h |
| 3068 | 12.4.6.4 | чистка фильтра | 30min | 2026-07-16 09:00 A | 2026-07-16 09:30 A | 100% | start no earlier than 2026-07-16 09:00 | Бобренок В | 0.5h | 0.5h |
| 3069 | 12.4.6.5 | Чистка фильтра | 30min | 2026-07-29 08:00 A | 2026-07-29 09:30 A | 100% | start no earlier than 2026-07-29 08:00 | Тимофеев В | 0.5h | 0.5h |
| 3070 | 12.4.6.6 | Осмотр редуктор-двигатель, нехороший шум, проверить втулки МУВП/заменить | 1h | 2026-09-23 09:00 A | 2026-09-23 10:00 A | 100% | start no earlier than 2026-09-23 09:00 | Бундин В; Некрасов А | 2h | 2h |
| 3071 | 12.4.6.7 | Чистка фильтра/тэны и термопары шнеков - протяжка | 30min | 2026-10-14 09:00 A | 2026-10-14 09:30 A | 100% | start no earlier than 2026-10-14 09:00 | Дедов В | 0.5h | 0.5h |
| 3072 | 12.4.6.8 | Чистка фильтра/тэны и термопары шнеков - протяжка | 30min | 2026-10-14 09:00 A | 2026-10-14 09:30 A | 100% | start no earlier than 2026-10-14 09:00 | Труфанов А | 0.5h | 0.5h |
| 3073 | 12.4.6.9 | Чистка фильтра/тэны и термопары шнеков - протяжка/ проверка масла | 30min | 2026-10-21 09:00 A | 2026-10-21 09:30 A | 100% | start no earlier than 2026-10-21 09:00 | Макаревич А | 0.5h | 0.5h |
| 3074 | 12.4.6.10 | Чистка фильтра/тэны и термопары шнеков - протяжка/ проверка масла | 30min | 2026-10-29 09:00 A | 2026-10-29 09:30 A | 100% | start no earlier than 2026-10-29 08:00 | Труфанов А; Некрасов А | 1h | 1h |
| 3075 | 12.4.6.11 | Чистка фильтра/тэны и термопары шнеков - протяжка/ проверка масла | 30min | 2026-11-11 09:00 A | 2026-11-11 09:30 A | 100% | start no earlier than 2026-11-11 09:00 | Бундин В | 0.5h | 0.5h |
| 3076 | 12.4.6.12 | Чистка фильтра/тэны и термопары шнеков - протяжка/ проверка масла | 30min | 2026-11-18 09:00 A | 2026-11-18 09:30 A | 100% | start no earlier than 2026-11-18 09:00 | Труфанов А; Некрасов А | 1h | 1h |

| ID | WBS | Task | Duration | Start | Finish | Complete | Remaining | Total slack | Constraint | Resources | Work | Actual work |
| --- | --- | --- | --- | --- | --- | --- | --- | --- | --- | --- | --- | --- |
| 3077 | 12.4.7 | **блок тэнов сушки - протяжка** | 143.04d? | 2026-05-20 09:00 A | 2026-11-18 09:20 | 71% | 41.87d? | 80.55d |  |  | 14.33h | 10.33h |
| 3078 | 12.4.7.1 | ревизия, замена отгоревших жил, проверка токов | 3h | 2026-05-20 09:00 A | 2026-05-20 12:00 A | 100% |  |  | start no earlier than 2026-05-20 09:00 | Бобренок В | 3h | 3h |
| 3079 | 12.4.7.2 | ревизия, замена отгоревших жил, проверка токов | 4h? | 2026-09-11 09:00 | 2026-09-11 13:00 |  |  | 140.09d | start no earlier than 2026-09-11 09:00 | Тимофеев В | 4h |  |
| 3080 | 12.4.7.3 | Полное ТО шкафа управления, замена всех отгоревших жил/клемм, протяжка контактов | 5h | 2026-09-23 09:00 A | 2026-09-23 15:00 A | 100% |  |  | start no earlier than 2026-09-23 09:00 | Труфанов А | 5h | 5h |
| 3081 | 12.4.7.4 | Ревизия, проверка жил, проверка токов | 20min | 2026-10-14 09:00 A | 2026-10-14 09:20 A | 100% |  |  | start no earlier than 2026-10-14 09:00 | Дедов В | 0.33h | 0.33h |
| 3082 | 12.4.7.5 | Ревизия, проверка жил, проверка токов | 20min | 2026-10-21 09:00 A | 2026-10-21 09:20 A | 100% |  |  | start no earlier than 2026-10-21 09:00 | Макаревич А | 0.33h | 0.33h |
| 3083 | 12.4.7.6 | Ревизия, проверка жил, проверка токов | 20min | 2026-10-29 09:00 A | 2026-10-29 09:20 A | 100% |  |  | start no earlier than 2026-10-29 08:00 | Труфанов А; Некрасов А | 0.67h | 0.67h |
| 3084 | 12.4.7.7 | Ревизия, проверка жил, проверка токов | 20min | 2026-11-11 09:00 A | 2026-11-11 09:20 A | 100% |  |  | start no earlier than 2026-11-11 09:00 | Бундин В | 0.33h | 0.33h |
| 3085 | 12.4.7.8 | Ревизия, проверка жил, проверка токов | 20min | 2026-11-18 09:00 A | 2026-11-18 09:20 A | 100% |  |  | start no earlier than 2026-11-18 09:00 | Труфанов А; Некрасов А | 0.67h | 0.67h |
| 3086 | 12.4.8 | **шкаф управления тэнами сушки** | 646.03d | 2024-06-14 09:00 A | 2026-11-18 09:15 | 97% | 17.46d | 80.56d |  |  | 10.75h | 10.5h |
| 3087 | 12.4.8.1 | протяжка контактов | 15min | 2026-05-20 09:00 A | 2026-05-20 09:15 A | 100% |  |  | start no earlier than 2026-05-20 09:00 | Бобренок В | 0.25h | 0.25h |
| 3088 | 12.4.8.2 | замена неисправных жил | 1h | 2026-05-20 09:00 A | 2026-05-20 10:00 A | 100% |  |  | start no earlier than 2026-05-20 09:00 | Бобренок В | 1h | 1h |
| 3089 | 12.4.8.3 | ревизия/ проверка токов | 15min | 2026-08-19 09:00 | 2026-08-19 09:15 |  |  | 158.56d | start no earlier than 2026-08-19 09:00 | Некрасов А | 0.25h |  |
| 3090 | 12.4.8.4 | конвейер №1 с печи в дрожировщик прорверка подшипники, реуктор | 30min | 2024-10-04 09:00 A | 2024-10-04 09:30 A | 100% |  |  | start no earlier than 2024-10-04 09:00 | Тимофеев В | 0.5h | 0.5h |
| 3091 | 12.4.8.5 | барабан смесительный дрожировка - прорверка подшипнки , реуктор | 30min | 2024-10-04 09:00 A | 2024-10-04 09:30 A | 100% |  |  | start no earlier than 2024-10-04 09:00 | Тимофеев В | 0.5h | 0.5h |
| 3092 | 12.4.8.6 | конвейер №2 с дрожировки в охладитель - проверка подшипники , редуктор | 30min | 2024-10-04 09:00 A | 2024-10-04 09:30 A | 100% |  |  | start no earlier than 2024-10-04 09:00 | Тимофеев В | 0.5h | 0.5h |
| 3093 | 12.4.8.7 | охладитель сеточный - смазка, натяжка цепи. Проверка редуктор | 1h | 2026-09-23 09:00 A | 2026-09-23 10:00 A | 100% |  |  | start no earlier than 2026-09-23 09:00 | Бундин В; Некрасов А | 2h | 2h |
| 3094 | 12.4.8.8 | вентиляторы обдува сушки | 2h | 2024-06-14 09:00 A | 2024-06-14 11:00 A | 100% |  |  | start no earlier than 2024-06-14 09:00 | ТО_2 | 2h | 2h |
| 3095 | 12.4.8.9 | дозатор сухой гидролизат - разборка, чистка, замена подшипников | 2h | 2026-08-20 09:00 A | 2026-08-20 11:00 A | 100% |  |  | start no earlier than 2026-08-20 09:00 | Макаревич А | 2h | 2h |
| 3096 | 12.4.8.10 | ревизия/ проверка токов/протяжка контактов | 15min | 2026-10-14 09:00 A | 2026-10-14 09:15 A | 100% |  |  | start no earlier than 2026-10-14 09:00 | Дедов В | 0.25h | 0.25h |
| 3097 | 12.4.8.11 | ревизия/ проверка токов/протяжка контактов | 15min | 2026-10-21 09:00 A | 2026-10-21 09:15 A | 100% |  |  | start no earlier than 2026-10-21 09:00 | Макаревич А | 0.25h | 0.25h |
| 3098 | 12.4.8.12 | ревизия/ проверка токов/протяжка контактов | 15min | 2026-10-29 09:00 A | 2026-10-29 09:15 A | 100% |  |  | start no earlier than 2026-10-29 08:00 | Труфанов А; Некрасов А | 0.5h | 0.5h |
| 3099 | 12.4.8.13 | ревизия/ проверка токов/протяжка контактов | 15min | 2026-11-11 09:00 A | 2026-11-11 09:15 A | 100% |  |  | start no earlier than 2026-11-11 09:00 | Бундин В | 0.25h | 0.25h |
| 3100 | 12.4.8.14 | ревизия/ проверка токов/протяжка контактов | 15min | 2026-11-18 09:00 A | 2026-11-18 09:15 A | 100% |  |  | start no earlier than 2026-11-18 09:00 | Труфанов А; Некрасов А | 0.5h | 0.5h |

| ID | WBS | Task | Duration | Start | Finish | Complete | Remaining | Total slack | Constraint | Resources | Work | Actual work |
| --- | --- | --- | --- | --- | --- | --- | --- | --- | --- | --- | --- | --- |
| 3101 | 12.4.9 | **Насос гидролизата** | 178.06d | 2026-04-01 09:00 A | 2026-11-18 09:30 A | 100% |  |  |  |  | 2.5h | 2.5h |
| 3102 | 12.4.9.1 | Дефектовка - проверить подачу, вибрации, посторонние шумы. | 30min | 2026-04-01 09:00 A | 2026-04-01 09:30 A | 100% |  |  | start no earlier than 2026-04-01 09:00 | Тимофеев В | 0.5h | 0.5h |
| 3103 | 12.4.9.2 | Дефектовка - проверить подачу, вибрации, посторонние шумы. | 30min | 2026-07-29 08:00 A | 2026-07-29 09:30 A | 100% |  |  | start no earlier than 2026-07-29 08:00 | Тимофеев В | 0.5h | 0.5h |
| 3104 | 12.4.9.3 | Дефектовка - проверить подачу, вибрации, посторонние шумы. | 30min | 2026-11-11 09:00 A | 2026-11-11 09:30 A | 100% |  |  | start no earlier than 2026-11-11 09:00 | Бундин В | 0.5h | 0.5h |
| 3105 | 12.4.9.4 | Дефектовка - проверить подачу, вибрации, посторонние шумы. | 30min | 2026-11-18 09:00 A | 2026-11-18 09:30 A | 100% |  |  | start no earlier than 2026-11-18 09:00 | Труфанов А; Некрасов А | 1h | 1h |
| 3106 | 12.4.10 | **Квадропак** | 171.12d | 2026-04-22 09:00 A | 2026-11-30 10:00 | 87% | 22.44d | 72.47d |  |  | 19.25h | 16.25h |
| 3107 | 12.4.10.1 | Установить дополнительные пружины на дозатор | 1h | 2026-09-30 09:00 A | 2026-09-30 10:00 A | 100% |  |  | start no earlier than 2026-09-30 09:00 | Труфанов А; Некрасов А | 2h | 2h |
| 3108 | 12.4.10.2 | проверить резьбу крепления встряхивателя №1, закрепить | 1h | 2026-06-02 09:00 A | 2026-06-02 10:00 A | 100% |  |  | start no earlier than 2026-06-02 09:00 | Макаревич А | 1h | 1h |
| 3109 | 12.4.10.3 | Замена резинки на воздушном редукторе находящемся под мультиголовой (весы) | 1h | 2026-04-22 09:00 A | 2026-04-22 10:00 A | 100% |  |  | start no earlier than 2026-04-22 09:00 | Бундин В | 1h | 1h |
| 3110 | 12.4.10.4 | ТО узла пайки. Чистка тен/ревизия термоизолятора пневморедуктора | 1h | 2026-05-27 09:00 A | 2026-05-27 10:00 A | 100% |  |  | start no earlier than 2026-05-27 09:00 | Тимофеев В | 1h | 1h |
| 3111 | 12.4.10.5 | ревизия привод встряхивателя | 30min | 2026-05-27 09:00 A | 2026-05-27 09:30 A | 100% |  |  | start no earlier than 2026-05-27 09:00 | Тимофеев В | 0.5h | 0.5h |
| 3112 | 12.4.10.6 | ревизия протяжки кинематики низ / верх | 30min | 2026-05-27 09:00 A | 2026-05-27 09:30 A | 100% |  |  | start no earlier than 2026-05-27 09:00 | Тимофеев В | 0.5h | 0.5h |
| 3113 | 12.4.10.7 | ревизия вакуумный насос | 15min | 2026-05-27 09:00 A | 2026-05-27 09:15 A | 100% |  |  | start no earlier than 2026-05-27 09:00 | Тимофеев В | 0.25h | 0.25h |
| 3114 | 12.4.10.8 | замена вал выход | 4h | 2026-06-15 09:00 A | 2026-06-15 13:00 A | 100% |  |  | start no earlier than 2026-06-15 09:00 | Тимофеев В | 4h | 4h |
| 3115 | 12.4.10.9 | проверить пневмоцилиндр на встряхивателе, если нужно заменить | 1h | 2026-05-20 09:00 A | 2026-05-20 10:00 A | 100% |  |  | start no earlier than 2026-05-20 09:00 | Некрасов А | 1h | 1h |
| 3116 | 12.4.10.10 | Закрепить, подровнять, слесарные работы которые требуются | 1h | 2026-09-30 09:00 A | 2026-09-30 10:00 A | 100% |  |  | start no earlier than 2026-09-30 09:00 | Труфанов А; Некрасов А | 2h | 2h |
| 3117 | 12.4.10.11 | Осмотр, дефектовка, устранение неисправностей ,смазка по необходимости, протяжка болтов | 1h | 2026-10-21 09:00 A | 2026-10-21 10:00 A | 100% |  |  | start no earlier than 2026-10-21 09:00 | Макаревич А | 1h | 1h |
| 3118 | 12.4.10.12 | Осмотр, дефектовка, устранение неисправностей ,смазка по необходимости, протяжка болтов | 1h | 2026-10-29 09:00 A | 2026-10-29 10:00 A | 100% |  |  | start no earlier than 2026-10-29 08:00 | Труфанов А; Некрасов А | 2h | 2h |
| 3119 | 12.4.10.13 | Осмотр, дефектовка, устранение неисправностей ,смазка по необходимости, протяжка болтов | 1h | 2026-11-11 09:00 | 2026-11-11 10:00 |  |  | 87.47d | start no earlier than 2026-11-11 09:00 | Бундин В | 1h |  |
| 3120 | 12.4.10.14 | Осмотр, дефектовка, устранение неисправностей ,смазка по необходимости, протяжка болтов | 1h | 2026-11-30 09:00 | 2026-11-30 10:00 |  |  | 72.47d | start no earlier than 2026-11-30 09:00 | Труфанов А; Некрасов А | 2h |  |
| 3121 | 12.4.11 | **Дражжировка** | 37.03d | 2026-08-27 09:00 A | 2026-10-07 09:15 | 85% | 5.55d |  |  |  | 9.17h | 8.17h |
| 3122 | 12.4.11.1 | Проверка подшипников на барабанах | 15min | 2026-08-27 09:00 A | 2026-08-27 09:15 A | 100% |  |  | start no earlier than 2026-08-27 09:00 | Тимофеев В | 0.25h | 0.25h |
| 3123 | 12.4.11.2 | Проверка фильтров | 10min | 2026-08-27 09:00 A | 2026-08-27 09:10 A | 100% |  |  | start no earlier than 2026-08-27 09:00 | Тимофеев В | 0.17h | 0.17h |
| 3124 | 12.4.11.3 | Ревизия насоса гидролизата | 2h | 2026-08-27 09:00 A | 2026-08-27 11:00 A | 100% |  |  | start no earlier than 2026-08-27 09:00 | Тимофеев В | 2h | 2h |
| 3125 | 12.4.11.4 | Дефектовка - проверить подачу, вибрации, посторонние шумы/проверка фильтров/насосов/фитингов | 15min | 2026-10-14 09:00 A | 2026-10-14 09:15 A | 100% |  |  | start no earlier than 2026-10-14 09:00 | Дедов В | 0.25h | 0.25h |
| 3126 | 12.4.11.5 | Дефектовка - проверить подачу, вибрации, посторонние шумы/проверка фильтров/насосов/фитингов | 15min | 2026-10-21 09:00 A | 2026-10-21 09:15 A | 100% |  |  | start no earlier than 2026-10-21 09:00 | Макаревич А | 0.25h | 0.25h |
| 3127 | 12.4.11.6 | Ремон конвейера изготовление и установка полосы, чтоб не сыпало | 2h | 2026-10-21 09:00 A | 2026-10-21 11:00 A | 100% |  |  | start no earlier than 2026-10-21 09:00 | Тимофеев В; Николаев | 4h | 4h |
| 3128 | 12.4.11.7 | Дефектовка - проверить подачу, вибрации, посторонние шумы/проверка фильтров/насосов/фитингов | 15min | 2026-10-29 09:00 A | 2026-10-29 09:15 A | 100% |  |  | start no earlier than 2026-10-29 08:00 | Труфанов А; Некрасов А | 0.5h | 0.5h |
| 3129 | 12.4.11.8 | Дефектовка - проверить подачу, вибрации, посторонние шумы/проверка фильтров/насосов/фитингов | 15min | 2026-11-11 09:00 A | 2026-11-11 09:15 A | 100% |  |  | start no earlier than 2026-11-11 09:00 | Бундин В | 0.25h | 0.25h |
| 3130 | 12.4.11.9 | Дефектовка - проверить подачу, вибрации, посторонние шумы/проверка фильтров/насосов/фитингов | 15min | 2026-11-18 09:00 A | 2026-11-18 09:15 A | 100% |  |  | start no earlier than 2026-11-18 09:00 | Труфанов А; Некрасов А | 0.5h | 0.5h |
| 3131 | 12.4.11.10 | Разбор и чистка бункера со шнеком подачи сухого гидролизата | 1h | 2026-11-30 09:00 | 2026-11-30 10:00 |  |  | 72.47d | start no earlier than 2026-11-30 09:00 | Тимофеев В | 1h |  |

| ID | WBS | Task | Duration | Start | Finish | Complete | Remaining | Total slack | Constraint | Resources | Work | Actual work |
| --- | --- | --- | --- | --- | --- | --- | --- | --- | --- | --- | --- | --- |
| 3132 | 12.4.12 | **жиротопка и насос перекачки жира** | 693.03d | 2024-04-10 09:00 A | 2026-11-18 09:15 A | 100% |  |  |  |  | 2.5h | 2.5h |
| 3133 | 12.4.12.1 | блок тэнов -протяжка | 30min | 2024-04-10 09:00 A | 2024-04-10 09:30 A | 100% |  |  | start no earlier than 2024-04-10 08:00 | Тимофеев В | 0.5h | 0.5h |
| 3134 | 12.4.12.2 | насос, фильтр - осмотр, чистка | 15min | 2024-04-25 09:00 A | 2024-04-25 09:15 A | 100% |  |  | start no earlier than 2024-04-25 09:00 | Тимофеев В | 0.25h | 0.25h |
| 3135 | 12.4.12.3 | насос, фильтр - осмотр, чистка | 15min | 2026-07-29 09:00 A | 2026-07-29 09:15 A | 100% |  |  | start no earlier than 2026-07-29 08:00 | Труфанов А | 0.25h | 0.25h |
| 3136 | 12.4.12.4 | насос, фильтр - осмотр, чистка | 15min | 2026-10-21 09:00 A | 2026-10-21 09:15 A | 100% |  |  | start no earlier than 2026-10-21 09:00 | Макаревич А | 0.25h | 0.25h |
| 3137 | 12.4.12.5 | насос, фильтр - осмотр, чистка | 15min | 2026-10-29 09:00 A | 2026-10-29 09:15 A | 100% |  |  | start no earlier than 2026-10-29 08:00 | Макаревич А; Николаев | 0.5h | 0.5h |
| 3138 | 12.4.12.6 | насос, фильтр - осмотр, чистка | 15min | 2026-11-11 09:00 A | 2026-11-11 09:15 A | 100% |  |  | start no earlier than 2026-11-11 09:00 | Бундин В | 0.25h | 0.25h |
| 3139 | 12.4.12.7 | насос, фильтр - осмотр, чистка | 15min | 2026-11-18 09:00 A | 2026-11-18 09:15 A | 100% |  |  | start no earlier than 2026-11-18 09:00 | Труфанов А; Некрасов А | 0.5h | 0.5h |
| 3140 | 12.4.13 | **упаковщкики** | 471.12d | 2025-02-14 09:00 A | 2026-11-18 10:00 | 33% | 314.08d | 80.47d |  |  | 38h | 16h |
| 3141 | 12.4.13.1 | упаковщик ТЕКО 0,4кг | 2h | 2025-02-16 09:00 A | 2025-02-17 11:00 A | 100% |  |  | start no earlier than 2025-02-16 09:00 | Дедов В | 2h | 2h |
| 3142 | 12.4.13.2 | упаковщик ТЕКО 0,4кг | 2h | 2026-08-26 09:00 | 2026-08-26 11:00 |  |  | 153.34d | start no earlier than 2026-08-26 09:00 | Тимофеев В | 2h |  |
| 3143 | 12.4.13.3 | упаковщик НОТИС | 2h | 2025-02-17 09:00 | 2025-02-17 11:00 |  |  | 550.34d | start no earlier than 2025-02-16 09:00 | Дедов В | 2h |  |
| 3144 | 12.4.13.4 | упаковщик ТЕКО 1.5кг | 2h | 2025-02-17 09:00 | 2025-02-17 11:00 |  |  | 550.34d | start no earlier than 2025-02-16 09:00 | Дедов В | 2h |  |
| 3145 | 12.4.13.5 | упаковщик КВАДРОПАК | 2h | 2025-02-17 09:00 | 2025-02-17 11:00 |  |  | 550.34d | start no earlier than 2025-02-16 09:00 | Дедов В | 2h |  |
| 3146 | 12.4.13.6 | нория и вибробункер КВАДРОПАК | 2h | 2025-02-17 09:00 | 2025-02-17 11:00 |  |  | 550.34d | start no earlier than 2025-02-16 09:00 | Дедов В | 2h |  |
| 3147 | 12.4.13.7 | запайщик 1 | 2h | 2025-02-17 09:00 | 2025-02-17 11:00 |  |  | 550.34d | start no earlier than 2025-02-17 09:00 | Дедов В | 2h |  |
| 3148 | 12.4.13.8 | запайщик 2 | 2h | 2025-02-17 09:00 | 2025-02-17 11:00 |  |  | 550.34d | start no earlier than 2025-02-17 09:00 | Дедов В | 2h |  |
| 3149 | 12.4.13.9 | конвейер гп ТЕКО 1,5 | 2h | 2025-02-14 09:00 | 2025-02-14 11:00 |  |  | 551.34d | start no earlier than 2025-02-14 09:00 | Макаревич А | 2h |  |
| 3150 | 12.4.13.10 | конвейер гп ТЕКО 0,4 | 2h | 2025-02-14 09:00 | 2025-02-14 11:00 |  |  | 551.34d | start no earlier than 2025-02-14 09:00 | Макаревич А | 2h |  |
| 3151 | 12.4.13.11 | накопительный стол 1,5 | 2h | 2025-02-17 09:00 | 2025-02-17 11:00 |  |  | 550.34d | start no earlier than 2025-02-15 09:00 | Макаревич А | 2h |  |
| 3152 | 12.4.13.12 | накопительный стол 0,4 | 2h | 2025-02-17 09:00 | 2025-02-17 11:00 |  |  | 550.34d | start no earlier than 2025-02-15 09:00 | Макаревич А | 2h |  |
| 3153 | 12.4.13.13 | Осмотр всех упаковщиков/транспортеров/накопительных столов/ всех щитков оборудования | 2h | 2026-07-29 09:00 A | 2026-07-29 11:00 A | 100% |  |  | start no earlier than 2026-07-29 08:00 | Бундин В | 2h | 2h |
| 3154 | 12.4.13.14 | Осмотр всех упаковщиков/транспортеров/накопительных столов/ всех щитков оборудования | 2h | 2026-10-14 09:00 A | 2026-10-14 11:00 A | 100% |  |  | start no earlier than 2026-10-14 09:00 | Тимофеев В; Дедов В | 4h | 4h |
| 3155 | 12.4.13.15 | Осмотр всех упаковщиков/транспортеров/накопительных столов/ всех щитков оборудования/редукторов | 2h | 2026-10-21 09:00 A | 2026-10-21 11:00 A | 100% |  |  | start no earlier than 2026-10-21 09:00 | Макаревич А | 2h | 2h |
| 3156 | 12.4.13.16 | Осмотр всех упаковщиков/транспортеров/накопительных столов/ всех щитков оборудования/редукторов | 1h | 2026-10-29 09:00 A | 2026-10-29 10:00 A | 100% |  |  | start no earlier than 2026-10-29 08:00 | Макаревич А; Николаев | 2h | 2h |
| 3157 | 12.4.13.17 | Осмотр всех упаковщиков/транспортеров/накопительных столов/ всех щитков оборудования/редукторов | 1h | 2026-11-11 09:00 A | 2026-11-11 10:00 A | 100% |  |  | start no earlier than 2026-11-11 09:00 | Бундин В; Тимофеев В | 2h | 2h |
| 3158 | 12.4.13.18 | Осмотр всех упаковщиков/транспортеров/накопительных столов/ всех щитков оборудования/редукторов | 1h | 2026-11-18 09:00 A | 2026-11-18 10:00 A | 100% |  |  | start no earlier than 2026-11-18 09:00 | Труфанов А; Некрасов А | 2h | 2h |

| ID | WBS | Task | Duration | Start | Finish | Complete | Remaining | Total slack | Free slack | Constraint | Resources | Work | Actual work |
| --- | --- | --- | --- | --- | --- | --- | --- | --- | --- | --- | --- | --- | --- |
| 3159 | 12.4.14 | **электрооборудование** | 0.12d | 2026-05-20 09:00 | 2026-05-20 10:00 |  |  | 0d | 223.47d |  | ТО | 5.5h | 1h |
| 3160 | 12.4.14.1 | ВРУ1 | 15min | 2026-05-20 09:00 | 2026-05-20 09:15 |  |  | 223.56d |  | start no earlier than 2026-05-20 09:00 | ТО; Тимофеев В | 0.5h |  |
| 3161 | 12.4.14.2 | ВРУ2 | 15min | 2026-05-20 09:00 | 2026-05-20 09:15 |  |  | 223.56d |  | start no earlier than 2026-05-20 09:00 | ТО; Тимофеев В | 0.5h |  |
| 3162 | 12.4.14.3 | ЩР1 экструдер | 15min | 2026-05-20 09:00 | 2026-05-20 09:15 |  |  | 223.56d |  | start no earlier than 2026-05-20 09:00 | ТО; Тимофеев В | 0.5h |  |
| 3163 | 12.4.14.4 | ЩР2 упаковка №1 | 15min | 2026-05-20 09:00 | 2026-05-20 09:15 |  |  | 223.56d |  | start no earlier than 2026-05-20 09:00 | ТО; Тимофеев В | 0.5h |  |
| 3164 | 12.4.14.5 | ЩР3 упаковка №2 | 15min | 2026-05-20 09:00 | 2026-05-20 09:15 |  |  | 223.56d |  | start no earlier than 2026-05-20 09:00 | ТО; Тимофеев В | 0.5h |  |
| 3165 | 12.4.14.6 | ЩР жиротопка и зона жиров | 1h | 2026-05-20 09:00 | 2026-05-20 10:00 |  |  | 223.47d |  | start no earlier than 2026-05-20 09:00 | ТО; Некрасов А | 2h |  |
| 3166 | 12.4.15 | **Компрессор 1 цех** | 748.12d? | 2023-12-29 09:00 A | 2026-10-29 10:00 | 10% | 670.73d? | 98.47d |  |  | ТО | 779.33h | 113.9h |
| 3167 | 12.4.15.1 | продувка радиаторов осушителя и компрессора, слив конденсата | 1h | 2026-06-07 09:00 A | 2026-06-08 10:00 A | 100% |  |  |  | start no earlier than 2026-06-07 09:00 | Дедов В | 1h | 1h |
| 3168 | 12.4.15.2 | продувка радиаторов осушителя и компрессора, слив конденсата | 1h | 2026-10-14 09:00 | 2026-10-14 10:00 |  |  | 110.47d |  | start no earlier than 2026-10-14 09:00 | Дедов В | 1h |  |
| 3169 | 12.4.15.3 | продувка радиаторов осушителя и компрессора, слив конденсата | 1h | 2026-08-29 09:00 A | 2026-08-31 10:00 A | 100% |  |  |  | start no earlier than 2026-08-29 09:00 | Дедов В | 1h | 1h |
| 3170 | 12.4.15.4 | <Новая задача> | 1d? | 2026-08-28 09:00 | 2026-08-28 18:00 |  |  | 150.59d |  | start no earlier than 2026-08-28 08:00 |  |  |  |
| 3171 | 12.4.15.5 | осушитель 1 цех | 2h | 2023-12-29 09:00 | 2023-12-29 11:00 |  |  | 846.34d |  | start no earlier than 2023-12-28 09:00 | ТО | 2h |  |
| 3172 | 12.4.15.6 | осушитель 1 цех/слить конденсат | 30min | 2026-07-29 09:00 | 2026-07-29 09:30 |  |  | 173.53d |  | start no earlier than 2026-07-29 08:00 | Бундин В | 0.5h |  |
| 3173 | 12.4.15.7 | осушитель 1 цех/слить конденсат | 20min | 2026-10-14 09:00 | 2026-10-14 09:20 |  |  | 110.55d |  | start no earlier than 2026-10-14 09:00 | Дедов В | 0.33h |  |
| 3174 | 12.4.15.8 | бойлер 1 1 цех раковина | 2h | 2023-12-29 09:00 | 2023-12-29 11:00 |  |  | 846.34d |  | start no earlier than 2023-12-28 09:00 | ТО | 2h |  |
| 3175 | 12.4.15.9 | бойлер 2 1 цех раковина | 2h | 2023-12-29 09:00 | 2023-12-29 11:00 |  |  | 846.34d |  | start no earlier than 2023-12-28 09:00 | ТО | 2h |  |
| 3176 | 12.4.15.10 | бойлер 3 1 цех душ | 2h | 2023-12-29 09:00 | 2023-12-29 11:00 |  |  | 846.34d |  | start no earlier than 2023-12-28 09:00 | ТО | 2h |  |
| 3177 | 12.4.15.11 | насосная станция 1 цех | 2h | 2023-12-29 09:00 | 2023-12-29 11:00 |  |  | 846.34d |  | start no earlier than 2023-12-28 09:00 | ТО | 2h |  |
| 3178 | 12.4.15.12 | фильтр приточной вентиляции | 2h | 2023-12-29 09:00 | 2023-12-29 11:00 |  |  | 846.34d |  |  |  |  |  |
| 3179 | 12.4.15.13 | пульт управления вентиляцией, частототные приводы | 2h | 2023-12-29 09:00 | 2023-12-29 11:00 |  |  | 846.34d |  | start no earlier than 2023-12-28 09:00 | ТО | 2h |  |
| 3180 | 12.4.15.14 | кондиционер 1 продувка фильтров внутр / очистка наруж блок | 30min | 2026-06-02 09:00 A | 2026-06-02 09:30 A | 100% |  |  |  | start no earlier than 2026-06-02 09:00 | Некрасов А | 0.5h | 0.5h |
| 3181 | 12.4.15.15 | кондиционер 2 продувка фильтров внутр / очистка наруж блок | 30min | 2026-06-02 09:00 A | 2026-06-02 09:30 A | 100% |  |  |  | start no earlier than 2026-06-02 09:00 | Некрасов А | 0.5h | 0.5h |
| 3182 | 12.4.15.16 | кондиционер 3 продувка фильтров внутр / очистка наруж блок | 30min | 2026-06-02 09:00 A | 2026-06-02 09:30 A | 100% |  |  |  | start no earlier than 2026-06-02 09:00 | Некрасов А | 0.5h | 0.5h |
| 3183 | 12.4.15.17 | кондиционер 1 продувка фильтров внутр / очистка наруж блок (керхер взять у Мейхера) | 30min | 2026-06-10 09:00 | 2026-06-10 09:30 |  |  | 208.53d |  | start no earlier than 2026-06-10 09:00 | Некрасов А; Дедов В | 1h |  |
| 3184 | 12.4.15.18 | кондиционер 2 продувка фильтров внутр / очистка наруж блок (керхер взять у Мейхера) | 30min | 2026-06-10 09:00 | 2026-06-10 09:30 |  |  | 208.53d |  | start no earlier than 2026-06-10 09:00 | Некрасов А; Дедов В | 1h |  |
| 3185 | 12.4.15.19 | кондиционер 3 продувка фильтров внутр / очистка наруж блок (керхер взять у Мейхера) | 30min | 2026-06-10 09:00 | 2026-06-10 09:30 |  |  | 208.53d |  | start no earlier than 2026-06-10 09:00 | Некрасов А; Дедов В | 1h |  |
| 3186 | 12.4.15.20 | электроштабелер упаковка | 2h | 2023-12-29 09:00 | 2023-12-29 11:00 |  |  | 846.34d |  | start no earlier than 2023-12-28 09:00 | ТО | 2h |  |
| 3187 | 12.4.15.21 | электроштабелер навески | 2h | 2023-12-29 09:00 | 2023-12-29 11:00 |  |  | 846.34d |  | start no earlier than 2023-12-28 09:00 | ТО | 2h |  |
| 3188 | 12.4.15.22 | продувка радиаторов осушителя и компрессора, слив конденсата | 1h | 2026-10-29 09:00 | 2026-10-29 10:00 |  |  | 98.47d |  | start no earlier than 2026-10-29 08:00 | Макаревич А; Николаев | 2h |  |

| ID | WBS | Task | Duration | Start | Finish | Complete | Remaining | Total slack | Constraint | Resources | Work | Actual work |
| --- | --- | --- | --- | --- | --- | --- | --- | --- | --- | --- | --- | --- |
| 3189 | 12.4.16 | **Квадропак** | 0.12d | 2026-10-07 09:00 | 2026-10-07 10:00 |  |  | 115.47d |  |  | 1h |  |
| 3190 | 12.4.16.1 | Смазка качающихся шарниров подачи пакета и сброса | 1h | 2026-10-07 09:00 | 2026-10-07 10:00 |  |  | 115.47d | start no earlier than 2026-10-07 09:00 | Тимофеев В | 1h |  |
| 3191 | 12.5 | **2 цех** | 780.38d? | 2023-12-28 09:00 A | 2026-12-07 12:00 | 69% | 239.81d? | 67.22d |  |  | 18863.8h | 15343.1h |
| 3192 | 12.5.1 | обдув пыли с вентиляции и балки кровли зона жир + экструдер + упаковка | 3h | 2026-08-20 09:00 A | 2026-08-20 12:00 A | 100% |  |  | start no earlier than 2026-08-20 09:00 | Некрасов А; Тимофеев В | 6h | 6h |
| 3193 | 12.5.2 | **прекондицинер экструдера** | 689.38d? | 2024-04-18 09:00 A | 2026-11-20 12:00 | 89% | 72.86d? | 78.22d |  |  | 38.25h | 31.75h |
| 3194 | 12.5.2.1 | замена заднего подшипника ведомый вал | 8h | 2026-05-26 09:00 A | 2026-05-26 18:00 A | 100% |  |  | start no earlier than 2026-05-26 09:00 | Тимофеев В | 8h | 8h |
| 3195 | 12.5.2.2 | замена подшипников | 1h | 2024-04-18 09:00 A | 2024-04-18 10:00 A | 100% |  |  | start no earlier than 2024-04-18 08:00 | Тимофеев В | 1h | 1h |
| 3196 | 12.5.2.3 | Ревизия масла редуктора | 30min | 2024-04-18 09:00 A | 2024-04-18 09:30 A | 100% |  |  | start no earlier than 2024-04-18 08:00 | Тимофеев В | 0.5h | 0.5h |
| 3197 | 12.5.2.4 | контроль крепления лопаток | 30min | 2026-05-21 09:00 A | 2026-05-21 09:30 A | 100% |  |  | start no earlier than 2026-03-05 09:00 | Тимофеев В | 0.5h | 0.5h |
| 3198 | 12.5.2.5 | шприцевание подшипников | 1h | 2026-05-21 08:00 A | 2026-05-21 10:00 A | 100% |  |  | start no earlier than 2026-05-21 08:00 | Тимофеев В | 1h | 1h |
| 3199 | 12.5.2.6 | Ревизия масла редуктора | 15min | 2026-07-21 09:00 A | 2026-07-21 09:15 A | 100% |  |  | start no earlier than 2026-07-21 09:00 | Труфанов А | 0.25h | 0.25h |
| 3200 | 12.5.2.7 | шприцевание подшипников | 30min | 2026-07-21 09:00 A | 2026-07-21 09:30 A | 100% |  |  | start no earlier than 2026-07-21 09:00 | Труфанов А | 0.5h | 0.5h |
| 3201 | 12.5.2.8 | Осмотр подшипников | 15min | 2026-07-30 09:00 A | 2026-07-30 09:15 A | 100% |  |  | start no earlier than 2026-07-30 09:00 | Тимофеев В | 0.25h | 0.25h |
| 3202 | 12.5.2.9 | Осмотр подшипников | 1d? | 2026-08-06 09:00 A | 2026-08-06 18:00 A | 100% |  |  | start no earlier than 2026-08-06 09:00 | Бундин В | 8h | 8h |
| 3203 | 12.5.2.10 | Осмотр подшипников / смазка / по необходимости замена | 1h | 2026-08-13 09:00 A | 2026-08-13 10:00 A | 100% |  |  | start no earlier than 2026-08-13 09:00 | Некрасов А | 1h | 1h |
| 3204 | 12.5.2.11 | Осмотр подшипников / смазка | 15min | 2026-08-20 09:00 A | 2026-08-20 09:15 A | 100% |  |  | start no earlier than 2026-08-20 09:00 | Некрасов А | 0.25h | 0.25h |
| 3205 | 12.5.2.12 | Замена водяного фильтра на прекондиционере/парогенератор | 15min | 2026-09-03 09:00 A | 2026-09-03 09:15 A | 100% |  |  | start no earlier than 2026-09-03 09:00 | Труфанов А | 0.25h | 0.25h |
| 3206 | 12.5.2.13 | Осмотр подшипников / смазка | 15min | 2026-09-17 09:00 A | 2026-09-17 09:15 A | 100% |  |  | start no earlier than 2026-09-17 09:00 | Некрасов А | 0.25h | 0.25h |
| 3207 | 12.5.2.14 | Осмотр подшипников / смазка | 15min | 2026-09-24 09:00 A | 2026-09-24 09:15 A | 100% |  |  | start no earlier than 2026-09-24 09:00 | Некрасов А | 0.25h | 0.25h |
| 3208 | 12.5.2.15 | Ревизия масла редуктора | 15min | 2026-09-24 09:00 A | 2026-09-24 09:15 A | 100% |  |  | start no earlier than 2026-09-24 09:00 | Некрасов А | 0.25h | 0.25h |
| 3209 | 12.5.2.16 | Ревизия масла редуктора/осмотр подшипников/ смазка при необходимости | 15min | 2026-09-29 09:00 A | 2026-09-29 09:15 A | 100% |  |  | start no earlier than 2026-09-29 08:00 | Бундин В | 0.25h | 0.25h |
| 3210 | 12.5.2.17 | Замена редуктора прекондиционера | 4h | 2026-10-30 09:00 A | 2026-10-30 13:00 A | 100% |  |  | start no earlier than 2026-10-30 09:00 | Труфанов А; Некрасов А | 8h | 8h |
| 3211 | 12.5.2.18 | Ревизия масла редуктора/осмотр подшипников/ смазка при необходимости | 15min | 2026-10-15 09:00 A | 2026-10-15 09:15 A | 100% |  |  | start no earlier than 2026-10-15 09:00 | Труфанов А | 0.25h | 0.25h |
| 3212 | 12.5.2.19 | Контроль крепления лопаток | 30min | 2026-10-15 09:00 A | 2026-10-15 09:30 A | 100% |  |  | start no earlier than 2026-10-15 09:00 | Труфанов А | 0.5h | 0.5h |
| 3213 | 12.5.2.20 | Осмотр подшипников | 15min | 2026-10-30 09:00 A | 2026-10-30 09:15 A | 100% |  |  | start no earlier than 2026-10-30 09:00 | Труфанов А; Некрасов А | 0.5h | 0.5h |
| 3214 | 12.5.2.21 | Замена лопаток | 3h | 2026-11-20 09:00 | 2026-11-20 12:00 |  |  | 78.22d | start no earlier than 2026-11-20 09:00 | Макаревич А; Тимофеев В | 6h |  |
| 3215 | 12.5.2.22 | Ревизия масла редуктора/осмотр подшипников/ смазка при необходимости | 15min | 2026-11-20 09:00 | 2026-11-20 09:15 |  |  | 78.56d | start no earlier than 2026-11-20 09:00 | Макаревич А; Тимофеев В | 0.5h |  |

| ID | WBS | Task | Duration | Start | Finish | Complete | Remaining | Total slack | Constraint | Resources | Work | Actual work |
| --- | --- | --- | --- | --- | --- | --- | --- | --- | --- | --- | --- | --- |
| 3216 | 12.5.3 | **парогенератор** | 688.91d | 2024-04-18 10:00 A | 2026-11-20 09:15 | 95% | 35.51d | 78.56d |  |  | 27.75h | 26.5h |
| 3217 | 12.5.3.1 | читска | 1h | 2024-04-18 10:00 A | 2024-04-18 11:00 A | 100% |  |  | start no earlier than 2024-04-18 08:00 | Тимофеев В | 1h | 1h |
| 3218 | 12.5.3.2 | замена гильзы | 1h | 2024-04-18 10:00 A | 2024-04-18 11:00 A | 100% |  |  | start no earlier than 2024-04-18 08:00 | Тимофеев В | 1h | 1h |
| 3219 | 12.5.3.3 | чистка | 2h | 2026-03-05 09:30 A | 2026-03-05 11:30 A | 100% |  |  | start no earlier than 2026-03-04 09:00 | Бундин В | 2h | 2h |
| 3220 | 12.5.3.4 | прорвеп срабатывания защитного клапана | 10min | 2026-03-05 09:30 A | 2026-03-05 09:40 A | 100% |  |  | start no earlier than 2024-10-03 09:00 | Бундин В | 0.17h | 0.17h |
| 3221 | 12.5.3.5 | читска | 1h | 2026-03-19 09:00 A | 2026-03-19 10:00 A | 100% |  |  | start no earlier than 2026-03-19 09:00 | Тимофеев В | 1h | 1h |
| 3222 | 12.5.3.6 | чистка | 1h | 2026-03-12 09:00 A | 2026-03-12 10:00 A | 100% |  |  | start no earlier than 2026-03-12 09:00 | Бундин В; Тимофеев В | 2h | 2h |
| 3223 | 12.5.3.7 | чистка | 1h | 2026-05-14 09:00 A | 2026-05-14 10:00 A | 100% |  |  | start no earlier than 2026-05-14 09:00 | Некрасов А | 1h | 1h |
| 3224 | 12.5.3.8 | чистка | 2h | 2026-07-14 09:00 A | 2026-07-14 11:00 A | 100% |  |  | start no earlier than 2026-07-14 09:00 | Некрасов А | 2h | 2h |
| 3225 | 12.5.3.9 | Чистка | 1h | 2026-07-30 09:00 A | 2026-07-30 10:00 A | 100% |  |  | start no earlier than 2026-07-30 09:00 | Бундин В | 1h | 1h |
| 3226 | 12.5.3.10 | Чистка | 1h | 2026-08-06 09:00 A | 2026-08-06 10:00 A | 100% |  |  | start no earlier than 2026-08-06 09:00 | Тимофеев В | 1h | 1h |
| 3227 | 12.5.3.11 | Чистка | 1h | 2026-08-13 09:00 A | 2026-08-13 10:00 A | 100% |  |  | start no earlier than 2026-08-13 09:00 | Некрасов А | 1h | 1h |
| 3228 | 12.5.3.12 | Чистка | 1h | 2026-08-19 09:00 A | 2026-08-19 10:00 A | 100% |  |  | start no earlier than 2026-08-19 09:00 | Некрасов А | 1h | 1h |
| 3229 | 12.5.3.13 | Чистка | 1h | 2026-09-02 08:00 A | 2026-09-02 10:00 A | 100% |  |  | start no earlier than 2026-09-02 08:00 | Бобренок В | 1h | 1h |
| 3230 | 12.5.3.14 | Убрать грязь с парогенератора, привести в порядок внешний вид, где что отлеплено, прилепить | 20min | 2026-09-03 09:00 A | 2026-09-03 09:20 A | 100% |  |  | start no earlier than 2026-09-03 09:00 | Тимофеев В | 0.33h | 0.33h |
| 3231 | 12.5.3.15 | Чистка | 1h | 2026-09-09 09:00 A | 2026-09-09 10:00 A | 100% |  |  | start no earlier than 2026-09-09 08:00 | Тимофеев В | 1h | 1h |
| 3232 | 12.5.3.16 | Чистка | 1h | 2026-09-17 09:00 A | 2026-09-17 10:00 A | 100% |  |  | start no earlier than 2026-09-17 09:00 | Тимофеев В | 1h | 1h |
| 3233 | 12.5.3.17 | Чистка | 1h | 2026-09-23 09:00 A | 2026-09-23 10:00 A | 100% |  |  | start no earlier than 2026-09-23 09:00 | Дедов В | 1h | 1h |
| 3234 | 12.5.3.18 | Чистка | 1h | 2026-09-29 09:00 A | 2026-09-29 10:00 A | 100% |  |  | start no earlier than 2026-09-29 08:00 |  |  |  |
| 3235 | 12.5.3.19 | Чистка как остановятся, если не получится, передать по смене труфанову | 1h | 2026-10-14 09:00 | 2026-10-14 10:00 |  |  | 110.47d | start no earlier than 2026-10-14 09:00 | Бобренок В | 1h |  |
| 3236 | 12.5.3.20 | Устранить травление пара между сбросником (клапан) и краном | 30min | 2026-10-08 09:00 A | 2026-10-08 09:30 A | 100% |  |  | start no earlier than 2026-10-08 09:00 | Труфанов А; Некрасов А | 1h | 1h |
| 3237 | 12.5.3.21 | Проверить гофротрубу на травление под площадкой, где стоит система из кранов/устранить/заменить | 1h | 2026-10-08 09:00 A | 2026-10-08 10:00 A | 100% |  |  | start no earlier than 2026-10-08 09:00 | Труфанов А; Некрасов А | 2h | 2h |
| 3238 | 12.5.3.22 | Чистка | 1h | 2026-11-05 09:00 A | 2026-11-05 10:00 A | 100% |  |  | start no earlier than 2026-11-05 09:00 | Николаев; Макаревич А | 2h | 2h |
| 3239 | 12.5.3.23 | Смонтировать переключатель на сирену парогенератора вкл, выкл | 1h | 2026-10-30 09:00 A | 2026-10-30 10:00 A | 100% |  |  | start no earlier than 2026-10-30 09:00 | Макаревич А; Николаев | 2h | 2h |
| 3240 | 12.5.3.24 | подписать сирена вкл/выкл | 15min | 2026-11-20 09:00 | 2026-11-20 09:15 |  |  | 78.56d | start no earlier than 2026-11-20 09:00 | Тимофеев В | 0.25h |  |
| 3241 | 12.5.3.25 | Чистка (после остановки) | 1h | 2026-11-19 09:00 A | 2026-11-19 10:00 A | 100% |  |  | start no earlier than 2026-11-19 09:00 | Дедов В | 1h | 1h |

| ID | WBS | Task | Duration | Start | Finish | Predecessors | Complete | Remaining | Total slack | Constraint | Resources | Work | Actual work |
| --- | --- | --- | --- | --- | --- | --- | --- | --- | --- | --- | --- | --- | --- |
| 3242 | 12.5.4 | **привод сетки ПЕЧИ сушки** | 695.12d | 2024-04-18 08:00 A | 2026-11-30 10:00 |  | 89% | 73.17d | 72.47d |  |  | 16h | 14.33h |
| 3243 | 12.5.4.1 | прорверка масла редуктор / натяжка цепи/ ремень | 30min | 2024-04-18 08:00 A | 2024-04-18 09:30 A |  | 100% |  |  | start no earlier than 2024-04-18 08:00 | Тимофеев В | 0.5h | 0.5h |
| 3244 | 12.5.4.2 | прорверка масла редуктор / натяжка цепи/ ремень | 30min | 2026-03-05 09:00 A | 2026-03-05 09:30 A |  | 100% |  |  | start no earlier than 2026-03-05 09:00 | Тимофеев В | 0.5h | 0.5h |
| 3245 | 12.5.4.3 | прорверка масла редуктор / натяжка цепи/ ремень | 30min | 2026-03-19 09:00 A | 2026-03-19 09:30 A |  | 100% |  |  | start no earlier than 2026-03-19 09:00 | Тимофеев В | 0.5h | 0.5h |
| 3246 | 12.5.4.4 | прорверка масла редуктор / натяжка цепи/ ремень/осмотр сетки | 30min | 2026-07-14 09:00 A | 2026-07-14 09:30 A |  | 100% |  |  | start no earlier than 2026-07-14 09:00 | Труфанов А | 0.5h | 0.5h |
| 3247 | 12.5.4.5 | прорверка масла редуктор / натяжка цепи/ ремень/осмотр сетки | 30min | 2026-07-30 09:00 A | 2026-07-30 09:30 A |  | 100% |  |  | start no earlier than 2026-07-30 09:00 | Труфанов А | 0.5h | 0.5h |
| 3248 | 12.5.4.6 | прорверка масла редуктор / натяжка цепи/ ремень/осмотр сетки | 20min | 2026-08-13 09:00 A | 2026-08-13 09:20 A |  | 100% |  |  | start no earlier than 2026-08-13 09:00 | Некрасов А | 0.33h | 0.33h |
| 3249 | 12.5.4.7 | прорверка масла редуктор / натяжка цепи/ ремень/осмотр сетки | 20min | 2026-08-20 09:00 A | 2026-08-20 09:20 A |  | 100% |  |  | start no earlier than 2026-08-20 09:00 | Некрасов А | 0.33h | 0.33h |
| 3250 | 12.5.4.8 | прорверка масла редуктор / натяжка цепи/ ремень/осмотр сетки | 20min | 2026-08-20 09:00 A | 2026-08-20 09:20 A |  | 100% |  |  | start no earlier than 2026-08-20 09:00 | Некрасов А | 0.33h | 0.33h |
| 3251 | 12.5.4.9 | прорверка масла редуктор / натяжка цепи/ ремень/осмотр сетки | 20min | 2026-09-09 09:00 A | 2026-09-09 09:20 A |  | 100% |  |  | start no earlier than 2026-09-09 08:00 | Бобренок В | 0.33h | 0.33h |
| 3252 | 12.5.4.10 | ремонт шестерни привода - наварить | 1h | 2026-09-16 09:00 A | 2026-09-16 10:00 A |  | 100% |  |  | start no earlier than 2026-09-16 09:00 | Бундин В | 1h | 1h |
| 3253 | 12.5.4.11 | смазка цепей пищ смазкой | 1h | 2026-09-16 09:00 A | 2026-09-16 10:00 A |  | 100% |  |  | start no earlier than 2026-09-16 09:00 | Бобренок В | 1h | 1h |
| 3254 | 12.5.4.12 | Снятие шестерен привода (отнести домоводову) | 2h | 2026-09-17 09:00 A | 2026-09-17 11:00 A |  | 100% |  |  | start no earlier than 2026-09-17 09:00 | Труфанов А | 2h | 2h |
| 3255 | 12.5.4.13 | смазка цепей пищ смазкой по графику 3 мес | 1h | 2026-11-30 09:00 | 2026-11-30 10:00 | 3253FS+3mo |  |  | 72.47d | start no earlier than 2026-11-30 09:00 | Бобренок В | 1h |  |
| 3256 | 12.5.4.14 | прорверка масла редуктор / натяжка цепи/ ремень/осмотр сетки | 30min | 2026-10-08 09:00 A | 2026-10-08 09:30 A |  | 100% |  |  | start no earlier than 2026-10-08 09:00 | Дедов В | 0.5h | 0.5h |
| 3257 | 12.5.4.15 | Замена шестерен привода | 2h | 2026-10-15 09:00 A | 2026-10-15 11:00 A |  | 100% |  |  | start no earlier than 2026-10-15 09:00 | Труфанов А; Некрасов А | 4h | 4h |
| 3258 | 12.5.4.16 | Замена шкива на моторе привода печи (шкив на складе) | 1h | 2026-10-30 09:00 A | 2026-10-30 10:00 A |  | 100% |  |  | start no earlier than 2026-10-30 09:00 | Макаревич А; Николаев | 2h | 2h |
| 3259 | 12.5.4.17 | прорверка масла редуктор / натяжка цепи/ ремень/осмотр сетки | 20min | 2026-11-20 09:00 | 2026-11-20 09:20 |  |  |  | 78.55d | start no earlier than 2026-11-20 09:00 | Макаревич А; Тимофеев В | 0.67h |  |
| 3260 | 12.5.5 | **блок тэнов сушки** | 689.12d | 2024-04-18 08:00 A | 2026-11-20 10:00 |  | 91% | 62.65d | 78.47d |  |  | 17h | 15h |
| 3261 | 12.5.5.1 | вскрыть все блоки | 1h | 2024-04-18 08:00 A | 2024-04-18 10:00 A |  | 100% |  |  | start no earlier than 2024-04-18 08:00 | Тимофеев В | 1h | 1h |
| 3262 | 12.5.5.2 | ревизия / замена критичных | 4h | 2024-04-18 09:00 A | 2024-04-18 13:00 A |  | 100% |  |  | start no earlier than 2024-04-18 08:00 | Некрасов А; Черепанов И | 8h | 8h |
| 3263 | 12.5.5.3 | ревизия | 1h | 2026-03-19 09:00 A | 2026-03-19 10:00 A |  | 100% |  |  | start no earlier than 2026-03-19 09:00 | Бундин В | 1h | 1h |
| 3264 | 12.5.5.4 | ревизия | 1h | 2026-05-14 09:00 A | 2026-05-14 10:00 A |  | 100% |  |  | start no earlier than 2026-05-14 09:00 | Труфанов А | 1h | 1h |
| 3265 | 12.5.5.5 | ревизия перемычек | 1h | 2026-08-13 09:00 A | 2026-08-13 10:00 A |  | 100% |  |  | start no earlier than 2026-08-13 09:00 | Некрасов А | 1h | 1h |
| 3266 | 12.5.5.6 | ревизия перемычек | 1h | 2026-10-15 09:00 A | 2026-10-15 10:00 A |  | 100% |  |  | start no earlier than 2026-10-15 09:00 | Дедов В | 1h | 1h |
| 3267 | 12.5.5.7 | ревизия / замена критичных | 1h | 2026-10-30 09:00 A | 2026-10-30 10:00 A |  | 100% |  |  | start no earlier than 2026-10-30 09:00 | Николаев; Макаревич А | 2h | 2h |
| 3268 | 12.5.5.8 | ревизия / замена критичных | 1h | 2026-11-20 09:00 | 2026-11-20 10:00 |  |  |  | 78.47d | start no earlier than 2026-11-20 09:00 | Макаревич А; Тимофеев В | 2h |  |

| ID | WBS | Task | Duration | Start | Finish | Complete | Remaining | Total slack | Constraint | Resources | Work | Actual work |
| --- | --- | --- | --- | --- | --- | --- | --- | --- | --- | --- | --- | --- |
| 3269 | 12.5.6 | **смеситель СМ-1500** | 199.38d | 2026-03-05 09:00 A | 2026-11-20 12:00 | 71% | 56.96d | 78.22d |  |  | 13.67h | 7.67h |
| 3270 | 12.5.6.1 | контроль масла | 15min | 2026-03-05 09:00 A | 2026-03-05 09:15 A | 100% |  |  | start no earlier than 2026-03-05 09:00 | Тимофеев В | 0.25h | 0.25h |
| 3271 | 12.5.6.2 | контроль масла | 15min | 2026-03-05 09:00 A | 2026-03-05 09:15 A | 100% |  |  | start no earlier than 2026-03-05 09:00 | Некрасов А | 0.25h | 0.25h |
| 3272 | 12.5.6.3 | замена сальника | 4h | 2026-04-16 09:00 A | 2026-04-16 13:00 A | 100% |  |  | start no earlier than 2026-04-16 09:00 | Тимофеев В | 4h | 4h |
| 3273 | 12.5.6.4 | контроль масла | 15min | 2026-07-30 09:00 A | 2026-07-30 09:15 A | 100% |  |  | start no earlier than 2026-07-30 09:00 | Тимофеев В | 0.25h | 0.25h |
| 3274 | 12.5.6.5 | ревизия подшипникой красного смесителя, просыпается мука со стороны редуктора | 1h | 2026-08-13 09:00 A | 2026-08-13 10:00 A | 100% |  |  | start no earlier than 2026-08-13 09:00 | Тимофеев В | 1h | 1h |
| 3275 | 12.5.6.6 | ревизия подшипникой красного смесителя, просыпается мука со стороны редуктора | 1h | 2026-08-27 09:00 A | 2026-08-27 10:00 A | 100% |  |  | start no earlier than 2026-08-27 09:00 | Тимофеев В | 1h | 1h |
| 3276 | 12.5.6.7 | контроль масла | 15min | 2026-09-03 09:00 A | 2026-09-03 09:15 A | 100% |  |  | start no earlier than 2026-09-03 09:00 | Тимофеев В | 0.25h | 0.25h |
| 3277 | 12.5.6.8 | контроль масла | 10min | 2026-09-09 09:00 A | 2026-09-09 09:10 A | 100% |  |  | start no earlier than 2026-09-09 08:00 | Бобренок В | 0.17h | 0.17h |
| 3278 | 12.5.6.9 | Осмотр подшипников/контроль масла | 10min | 2026-09-29 09:00 A | 2026-09-29 09:10 A | 100% |  |  | start no earlier than 2026-09-29 09:00 | Бундин В | 0.17h | 0.17h |
| 3279 | 12.5.6.10 | Осмотр подшипников/контроль масла | 10min | 2026-10-30 09:00 A | 2026-10-30 09:10 A | 100% |  |  | start no earlier than 2026-10-30 09:00 | Макаревич А; Николаев | 0.33h | 0.33h |
| 3280 | 12.5.6.11 | Замена сальника/замена редуктора | 3h | 2026-11-20 09:00 | 2026-11-20 12:00 |  |  | 78.22d | start no earlier than 2026-11-20 09:00 | Труфанов А; Некрасов А | 6h |  |
| 3281 | 12.5.7 | **нория 2 выгрузки смесителя** | 199.06d | 2026-03-05 09:00 A | 2026-11-20 09:30 | 96% | 7.33d | 78.53d |  | ТО | 72.58h | 69.67h |
| 3282 | 12.5.7.1 | смазка подшипников | 30min | 2026-03-05 09:00 A | 2026-03-05 09:30 A | 100% |  |  | start no earlier than 2026-03-05 09:00 | Бундин В | 0.5h | 0.5h |
| 3283 | 12.5.7.2 | Осмотр подшипников/смазка по необходимости | 30min | 2026-07-30 09:00 A | 2026-07-30 09:30 A | 100% |  |  | start no earlier than 2026-07-30 09:00 | Бундин В | 0.5h | 0.5h |
| 3284 | 12.5.7.3 | ревизия крепления редуктора | 15min | 2026-03-05 09:00 A | 2026-03-05 09:15 A | 100% |  |  | start no earlier than 2026-03-05 09:00 | Бундин В | 0.25h | 0.25h |
| 3285 | 12.5.7.4 | ревизия ленты, обрезать нитки | 4h | 2026-03-26 09:00 A | 2026-03-26 13:00 A | 100% |  |  | start no earlier than 2026-03-26 09:00 | Тимофеев В | 4h | 4h |
| 3286 | 12.5.7.5 | вскрыть для чистки | 10min | 2026-05-19 09:00 A | 2026-05-19 09:10 A | 100% |  |  | start no earlier than 2026-05-21 09:00 | Труфанов А | 0.17h | 0.17h |
| 3287 | 12.5.7.6 | Вскрыть, осмотреть ленту (держится на одном ковше, закрепили на доп болты) | 30min | 2026-09-03 09:00 A | 2026-09-03 09:30 A | 100% |  |  | start no earlier than 2026-09-03 09:00 | Тимофеев В | 0.5h | 0.5h |
| 3288 | 12.5.7.7 | вскрыть для чистки, осмотреть ленту, закрыить после чистки | 10min | 2026-08-13 09:00 A | 2026-08-13 09:10 A | 100% |  |  | start no earlier than 2026-08-13 09:00 | Труфанов А | 0.17h | 0.17h |
| 3289 | 12.5.7.8 | Ревизия ленты, контроль соединения | 30min | 2026-09-17 09:00 A | 2026-09-17 09:30 A | 100% |  |  | start no earlier than 2026-09-17 09:00 | Тимофеев В | 0.5h | 0.5h |
| 3290 | 12.5.7.9 | ремонт стыка ленты - ревитзия, ремонт продлить | 4h | 2026-09-24 09:00 A | 2026-09-24 13:00 A | 100% |  |  | start no earlier than 2026-09-24 09:00 | Тимофеев В; Бундин В | 8h | 8h |
| 3291 | 12.5.7.10 | Ревизия ленты, контроль соединения | 30min | 2026-10-08 09:00 A | 2026-10-08 09:30 A | 100% |  |  | start no earlier than 2026-10-08 09:00 | Труфанов А; Некрасов А | 1h | 1h |
| 3292 | 12.5.7.11 | Проверка мотор редуктора на верху, почему трясет/устранить | 1h | 2026-10-08 09:00 A | 2026-10-08 10:00 A | 100% |  |  | start no earlier than 2026-10-08 09:00 | Труфанов А; Некрасов А | 2h | 2h |
| 3293 | 12.5.7.12 | Ревизия ленты, контроль соединения | 30min | 2026-10-15 09:00 A | 2026-10-15 09:30 A | 100% |  |  | start no earlier than 2026-10-15 09:00 | Труфанов А; Некрасов А | 1h | 1h |
| 3294 | 12.5.7.13 | Ревизия ленты, контроль соединения | 30min | 2026-10-30 09:00 A | 2026-10-30 09:30 A | 100% |  |  | start no earlier than 2026-10-30 09:00 | Макаревич А; Николаев | 1h | 1h |
| 3295 | 12.5.7.14 | Ревизия ленты, контроль соединения | 30min | 2026-11-20 09:00 | 2026-11-20 09:30 |  |  | 78.53d | start no earlier than 2026-11-20 09:00 | Макаревич А; Тимофеев В | 1h |  |

| ID | WBS | Task | Duration | Start | Finish | Complete | Remaining | Total slack | Constraint | Resources | Work | Actual work |
| --- | --- | --- | --- | --- | --- | --- | --- | --- | --- | --- | --- | --- |
| 3296 | 12.5.8 | **бункер-накопитель с шнековой разкгрузкой синий** | 149.01d | 2026-05-14 09:00 A | 2026-11-20 09:05 | 97% | 4.73d | 78.58d |  |  | 10.67h | 10.17h |
| 3297 | 12.5.8.1 | смазка подшипников, ревизия редуктора (нужно разбирать все для смазки). Задний | 4h | 2026-05-14 09:00 A | 2026-05-14 13:00 A | 100% |  |  | start no earlier than 2026-05-14 09:00 | Тимофеев В | 4h | 4h |
| 3298 | 12.5.8.2 | смазка подшипников, ревизия редуктора (нужно разбирать все для смазки). Передний | 4h | 2026-05-28 09:00 A | 2026-05-28 13:00 A | 100% |  |  | start no earlier than 2026-05-28 09:00 | Бундин В | 4h | 4h |
| 3299 | 12.5.8.3 | Осмотр редуктора со стороны мойки, скрипит | 1h | 2026-08-13 09:00 A | 2026-08-13 10:00 A | 100% |  |  | start no earlier than 2026-08-13 09:00 | Тимофеев В | 1h | 1h |
| 3300 | 12.5.8.4 | Осмотр | 5min | 2026-09-03 09:00 A | 2026-09-03 09:05 A | 100% |  |  | start no earlier than 2026-09-03 09:00 | Тимофеев В | 0.08h | 0.08h |
| 3301 | 12.5.8.5 | перенос датчика / доработать лопатки - что бы останавливался раньше, без спресовывания шнеком | 1h | 2026-09-24 09:00 A | 2026-09-24 10:00 A | 100% |  |  | start no earlier than 2026-09-24 09:00 | Труфанов А | 1h | 1h |
| 3302 | 12.5.8.6 | Осмотр | 5min | 2026-09-24 09:00 A | 2026-09-24 09:05 A | 100% |  |  | start no earlier than 2026-09-24 09:00 | Труфанов А | 0.08h | 0.08h |
| 3303 | 12.5.8.7 | Осмотр | 5min | 2026-10-08 09:00 | 2026-10-08 09:05 |  |  | 114.58d | start no earlier than 2026-10-08 09:00 | Дедов В | 0.08h |  |
| 3304 | 12.5.8.8 | Осмотр | 5min | 2026-10-15 09:00 | 2026-10-15 09:05 |  |  | 109.58d | start no earlier than 2026-10-15 09:00 | Труфанов А | 0.08h |  |
| 3305 | 12.5.8.9 | Осмотр | 5min | 2026-10-30 09:00 | 2026-10-30 09:05 |  |  | 97.58d | start no earlier than 2026-10-30 09:00 | Макаревич А; Николаев | 0.17h |  |
| 3306 | 12.5.8.10 | Осмотр | 5min | 2026-11-20 09:00 | 2026-11-20 09:05 |  |  | 78.58d | start no earlier than 2026-11-20 09:00 | Макаревич А; Тимофеев В | 0.17h |  |
| 3307 | 12.5.9 | **питатель экструдера** | 184.12d | 2026-03-26 09:00 A | 2026-11-20 10:00 | 95% | 8.77d | 78.47d |  |  | 27h | 25h |
| 3308 | 12.5.9.1 | замена сальников питателя, сыпит муку | 4h | 2026-07-22 09:00 A | 2026-07-22 13:00 A | 100% |  |  | start no earlier than 2026-07-22 09:00 | Труфанов А | 4h | 4h |
| 3309 | 12.5.9.2 | ревизия подшипников, редутора, привода. Разборка/сборка (нужно разбирать) | 1h | 2026-03-26 09:00 A | 2026-03-26 10:00 A | 100% |  |  | start no earlier than 2026-03-26 09:00 | Тимофеев В | 1h | 1h |
| 3310 | 12.5.9.3 | ревизия подшипников, редутора, привода. Разборка/сборка (нужно разбирать) | 1h | 2026-08-19 09:00 A | 2026-08-19 10:00 A | 100% |  |  | start no earlier than 2026-08-19 09:00 | Тимофеев В | 1h | 1h |
| 3311 | 12.5.9.4 | замена шетсерен и подшипников узла. Поставили новый комплект | 4h | 2026-04-03 08:00 A | 2026-04-03 13:00 A | 100% |  |  | start no earlier than 2026-04-03 08:00 | Тимофеев В | 4h | 4h |
| 3312 | 12.5.9.5 | ревизия шестерни мал редуктора | 1h | 2026-04-16 09:00 A | 2026-04-16 10:00 A | 100% |  |  | start no earlier than 2026-04-16 09:00 | Тимофеев В | 1h | 1h |
| 3313 | 12.5.9.6 | ревизия шестерни мал редуктора | 2h | 2026-08-13 09:00 A | 2026-08-13 11:00 A | 100% |  |  | start no earlier than 2026-08-13 09:00 | Некрасов А; Зорькин В | 4h | 4h |
| 3314 | 12.5.9.7 | ревизия шестерни мал редуктора | 2h | 2026-08-27 09:00 A | 2026-08-27 11:00 A | 100% |  |  | start no earlier than 2026-08-27 09:00 | Некрасов А; Зорькин В | 4h | 4h |
| 3315 | 12.5.9.8 | ревизия шестерен питателя | 1h | 2026-09-03 09:00 A | 2026-09-03 10:00 A | 100% |  |  | start no earlier than 2026-09-03 09:00 | Некрасов А | 1h | 1h |
| 3316 | 12.5.9.9 | Ревизия шестерен и подшипников | 1h | 2026-09-17 09:00 A | 2026-09-17 10:00 A | 100% |  |  | start no earlier than 2026-09-17 09:00 | Тимофеев В | 1h | 1h |
| 3317 | 12.5.9.10 | Ревизия шестерен и подшипников | 1h | 2026-09-29 09:00 A | 2026-09-29 10:00 A | 100% |  |  | start no earlier than 2026-09-29 09:00 | Бундин В | 1h | 1h |
| 3318 | 12.5.9.11 | Ревизия шестерен и подшипников | 1h | 2026-10-15 09:00 A | 2026-10-15 10:00 A | 100% |  |  | start no earlier than 2026-10-15 09:00 | Труфанов А | 1h | 1h |
| 3319 | 12.5.9.12 | Ревизия шестерен и подшипников | 1h | 2026-10-30 09:00 A | 2026-10-30 10:00 A | 100% |  |  | start no earlier than 2026-10-30 09:00 | Труфанов А; Некрасов А | 2h | 2h |
| 3320 | 12.5.9.13 | Ревизия шестерен и подшипников | 1h | 2026-11-20 09:00 | 2026-11-20 10:00 |  |  | 78.47d | start no earlier than 2026-11-20 09:00 | Макаревич А; Тимофеев В | 2h |  |

| ID | WBS | Task | Duration | Start | Finish | Complete | Remaining | Total slack | Constraint | Resources | Work | Actual work |
| --- | --- | --- | --- | --- | --- | --- | --- | --- | --- | --- | --- | --- |
| 3321 | 12.5.10 | **привод прекондиционера** | 199.02d | 2026-03-05 09:00 A | 2026-11-20 09:10 | 98% | 4.85d | 78.57d |  |  | 11.5h | 11.17h |
| 3322 | 12.5.10.1 | проверка масла | 5min | 2026-03-05 09:00 A | 2026-03-05 09:05 A | 100% |  |  | start no earlier than 2026-03-05 09:00 | Тимофеев В | 0.08h | 0.08h |
| 3323 | 12.5.10.2 | контроль крепления шестерен | 5min | 2026-03-05 09:00 A | 2026-03-05 09:05 A | 100% |  |  | start no earlier than 2026-03-05 09:00 | Тимофеев В | 0.08h | 0.08h |
| 3324 | 12.5.10.3 | ревизия подшипников и стопорных винтов | 30min | 2026-03-05 09:00 A | 2026-03-05 09:30 A | 100% |  |  | start no earlier than 2026-03-05 09:00 | Бундин В | 0.5h | 0.5h |
| 3325 | 12.5.10.4 | Осмотр шестерён(стоит звон), подшипников, сальников | 30min | 2026-09-03 09:00 A | 2026-09-03 09:30 A | 100% |  |  | start no earlier than 2026-09-03 09:00 | Тимофеев В | 0.5h | 0.5h |
| 3326 | 12.5.10.5 | Замена подшипников кореных и передних | 4h | 2026-09-09 09:00 A | 2026-09-09 13:00 A | 100% |  |  | start no earlier than 2026-09-09 08:00 | Труфанов А; Некрасов А | 8h | 8h |
| 3327 | 12.5.10.6 | Осмотр подшипников, муфты, шестерен | 20min | 2026-09-17 09:00 A | 2026-09-17 09:20 A | 100% |  |  | start no earlier than 2026-09-17 09:00 | Некрасов А | 0.33h | 0.33h |
| 3328 | 12.5.10.7 | Осмотр подшипников, муфты, шестерен | 20min | 2026-09-29 09:00 A | 2026-09-29 09:20 A | 100% |  |  | start no earlier than 2026-09-29 08:00 | Бундин В | 0.33h | 0.33h |
| 3329 | 12.5.10.8 | Осмотр подшипников, муфты, шестерен | 10min | 2026-10-08 09:00 A | 2026-10-08 09:10 A | 100% |  |  | start no earlier than 2026-10-08 09:00 | Труфанов А; Некрасов А | 0.33h | 0.33h |
| 3330 | 12.5.10.9 | Поставить защитный кожух | 10min | 2026-10-08 09:00 A | 2026-10-08 09:10 A | 100% |  |  | start no earlier than 2026-10-08 09:00 | Труфанов А; Некрасов А | 0.33h | 0.33h |
| 3331 | 12.5.10.10 | Осмотр подшипников, муфты, шестерен | 20min | 2026-10-15 09:00 A | 2026-10-15 09:20 A | 100% |  |  | start no earlier than 2026-10-15 09:00 | Труфанов А | 0.33h | 0.33h |
| 3332 | 12.5.10.11 | Осмотр подшипников, муфты, шестерен | 10min | 2026-10-30 09:00 A | 2026-10-30 09:10 A | 100% |  |  | start no earlier than 2026-10-30 09:00 | Труфанов А; Некрасов А | 0.33h | 0.33h |
| 3333 | 12.5.10.12 | Осмотр подшипников, муфты, шестерен | 10min | 2026-11-20 09:00 | 2026-11-20 09:10 |  |  | 78.57d | start no earlier than 2026-11-20 09:00 | Макаревич А; Тимофеев В | 0.33h |  |
| 3334 | 12.5.11 | **мотор-редуктор привод шнеков** | 79.02d | 2026-08-20 09:00 A | 2026-11-20 09:10 | 43% | 44.66d | 78.57d |  |  | 4.67h | 2.33h |
| 3335 | 12.5.11.1 | замена масла | 2h | 2026-08-20 09:00 | 2026-08-20 11:00 |  |  | 157.34d | start no earlier than 2026-08-20 09:00 | Тимофеев В | 2h |  |
| 3336 | 12.5.11.2 | Проверка масла (долил уровень) | 10min | 2026-09-03 09:00 A | 2026-09-03 09:10 A | 100% |  |  | start no earlier than 2026-09-03 09:00 | Труфанов А | 0.17h | 0.17h |
| 3337 | 12.5.11.3 | Проверка масла | 10min | 2026-09-09 09:00 A | 2026-09-09 09:10 A | 100% |  |  | start no earlier than 2026-09-09 08:00 | Бобренок В | 0.17h | 0.17h |
| 3338 | 12.5.11.4 | Проверка масла | 10min | 2026-09-17 09:00 A | 2026-09-17 09:10 A | 100% |  |  | start no earlier than 2026-09-17 09:00 | Некрасов А | 0.17h | 0.17h |
| 3339 | 12.5.11.5 | Проверка масла | 10min | 2026-09-24 09:00 A | 2026-09-24 09:10 A | 100% |  |  | start no earlier than 2026-09-24 09:00 | Некрасов А | 0.17h | 0.17h |
| 3340 | 12.5.11.6 | Проверка масла | 10min | 2026-09-29 09:00 A | 2026-09-29 09:10 A | 100% |  |  | start no earlier than 2026-09-29 08:00 | Бундин В | 0.17h | 0.17h |
| 3341 | 12.5.11.7 | Проверка муфту соединенной цепью, есть сильный люфт, при выявлении откланений сообщить/устранить | 30min | 2026-10-08 09:00 A | 2026-10-08 09:30 A | 100% |  |  | start no earlier than 2026-10-08 09:00 | Труфанов А; Некрасов А | 1h | 1h |
| 3342 | 12.5.11.8 | Проверка масла | 10min | 2026-10-08 09:00 A | 2026-10-08 09:10 A | 100% |  |  | start no earlier than 2026-10-08 09:00 | Дедов В | 0.17h | 0.17h |
| 3343 | 12.5.11.9 | Проверка масла | 10min | 2026-10-30 09:00 A | 2026-10-30 09:10 A | 100% |  |  | start no earlier than 2026-10-30 09:00 | Макаревич А; Николаев | 0.33h | 0.33h |
| 3344 | 12.5.11.10 | Проверка масла | 10min | 2026-11-20 09:00 | 2026-11-20 09:10 |  |  | 78.57d | start no earlier than 2026-11-20 09:00 | Макаревич А; Тимофеев В | 0.33h |  |

| ID | WBS | Task | Duration | Start | Finish | Predecessors | Complete | Remaining | Total slack | Constraint | Resources | Work | Actual work |
| --- | --- | --- | --- | --- | --- | --- | --- | --- | --- | --- | --- | --- | --- |
| 3345 | 12.5.12 | **редуктор шнеков экструдера - проверка масла** | 472.03d | 2025-02-17 09:00 A | 2026-11-20 09:15 |  | 96% | 17.93d | 78.56d |  |  | 7.08h | 6.58h |
| 3346 | 12.5.12.1 | чистка фильтра редуктора | 15min | 2026-03-05 09:00 A | 2026-03-05 09:15 A |  | 100% |  |  | start no earlier than 2026-03-05 09:00 | Тимофеев В | 0.25h | 0.25h |
| 3347 | 12.5.12.2 | контоль цепи муфты привода | 5min | 2026-03-05 09:15 A | 2026-03-05 09:20 A | 3346, 3348, 3349, 3351, 3355, 3356 | 100% |  |  | start no earlier than 2026-03-04 08:00 | Тимофеев В | 0.08h | 0.08h |
| 3348 | 12.5.12.3 | чистка фильтра редуктора | 15min | 2026-03-19 09:00 A | 2026-03-19 09:15 A |  | 100% |  |  | start no earlier than 2026-03-19 09:00 | Тимофеев В | 0.25h | 0.25h |
| 3349 | 12.5.12.4 | чистка фильтра редуктора | 15min | 2026-06-18 09:00 A | 2026-06-18 09:15 A |  | 100% |  |  | start no earlier than 2026-06-18 09:00 | Тимофеев В | 0.25h | 0.25h |
| 3350 | 12.5.12.5 | чистка фильтра редуктора | 30min | 2026-08-06 08:00 A | 2026-08-06 09:30 A |  | 100% |  |  | start no earlier than 2026-08-06 08:00 | Тимофеев В | 0.5h | 0.5h |
| 3351 | 12.5.12.6 | чистка фильтра редуктора | 15min | 2026-07-14 09:00 A | 2026-07-14 09:15 A |  | 100% |  |  | start no earlier than 2026-07-14 09:00 | Бундин В | 0.25h | 0.25h |
| 3352 | 12.5.12.7 | тэны и термпоры шнеков | 2h | 2025-02-17 09:00 A | 2025-02-17 11:00 A |  | 100% |  |  | start no earlier than 2025-02-17 09:00 | Дедов В | 2h | 2h |
| 3353 | 12.5.12.8 | проверка масла | 5min | 2026-08-06 09:00 A | 2026-08-06 09:05 A |  | 100% |  |  | start no earlier than 2026-08-06 09:00 | Тимофеев В | 0.08h | 0.08h |
| 3354 | 12.5.12.9 | Проверка масла | 10min | 2026-07-30 09:00 A | 2026-07-30 09:10 A |  | 100% |  |  | start no earlier than 2026-07-30 09:00 | Бундин В | 0.17h | 0.17h |
| 3355 | 12.5.12.10 | чистка фильтра редуктора | 15min | 2026-08-13 09:00 A | 2026-08-13 09:15 A |  | 100% |  |  | start no earlier than 2026-08-13 09:00 | Тимофеев В | 0.25h | 0.25h |
| 3356 | 12.5.12.11 | чистка фильтра редуктора | 15min | 2026-08-20 09:00 A | 2026-08-20 09:15 A |  | 100% |  |  | start no earlier than 2026-08-20 09:00 | Тимофеев В | 0.25h | 0.25h |
| 3357 | 12.5.12.12 | Чистка фильтра | 15min | 2026-09-03 09:00 A | 2026-09-03 09:15 A |  | 100% |  |  | start no earlier than 2026-09-03 09:00 | Труфанов А | 0.25h | 0.25h |
| 3358 | 12.5.12.13 | Чистка фильтра | 15min | 2026-09-09 09:00 A | 2026-09-09 09:15 A |  | 100% |  |  | start no earlier than 2026-09-09 08:00 | Бобренок В | 0.25h | 0.25h |
| 3359 | 12.5.12.14 | Проверка масла | 5min | 2026-09-09 09:00 A | 2026-09-09 09:05 A |  | 100% |  |  | start no earlier than 2026-09-09 08:00 | Бобренок В | 0.08h | 0.08h |
| 3360 | 12.5.12.15 | Проверка масла/чистка фильтра | 15min | 2026-09-17 09:00 A | 2026-09-17 09:15 A |  | 100% |  |  | start no earlier than 2026-09-17 09:00 | Некрасов А | 0.25h | 0.25h |
| 3361 | 12.5.12.16 | Чистка фильтра | 15min | 2026-09-24 09:00 A | 2026-09-24 09:15 A |  | 100% |  |  | start no earlier than 2026-09-24 09:00 | Некрасов А | 0.25h | 0.25h |
| 3362 | 12.5.12.17 | Чистка фильтра | 15min | 2026-09-29 09:00 A | 2026-09-29 09:15 A |  | 100% |  |  | start no earlier than 2026-09-29 08:00 | Бундин В | 0.25h | 0.25h |
| 3363 | 12.5.12.18 | Проверка масла | 10min | 2026-10-08 09:00 A | 2026-10-08 09:10 A |  | 100% |  |  | start no earlier than 2026-10-08 09:00 | Дедов В | 0.17h | 0.17h |
| 3364 | 12.5.12.19 | Чистка фильтра | 15min | 2026-10-08 09:00 A | 2026-10-08 09:15 A |  | 100% |  |  | start no earlier than 2026-10-08 09:00 | Дедов В | 0.25h | 0.25h |
| 3365 | 12.5.12.20 | Проверка масла, чистка фильтра | 15min | 2026-10-30 09:00 A | 2026-10-30 09:15 A |  | 100% |  |  | start no earlier than 2026-10-30 09:00 | Макаревич А; Николаев | 0.5h | 0.5h |
| 3366 | 12.5.12.21 | Проверка масла, чистка фильтра | 15min | 2026-11-20 09:00 | 2026-11-20 09:15 |  |  |  | 78.56d | start no earlier than 2026-11-20 09:00 | Макаревич А; Тимофеев В | 0.5h |  |
| 3367 | 12.5.13 | **шкаф управления экструдером** | 199.02d | 2026-03-05 09:00 A | 2026-11-20 09:10 |  | 93% | 14.22d | 78.57d |  |  | 2.67h | 2.33h |
| 3368 | 12.5.13.1 | продувка частотного привода | 10min | 2026-03-05 09:00 A | 2026-03-05 09:10 A |  | 100% |  |  | start no earlier than 2026-03-05 09:00 | Труфанов А | 0.17h | 0.17h |
| 3369 | 12.5.13.2 | продувка частотного привода | 10min | 2026-08-06 09:00 A | 2026-08-06 09:10 A |  | 100% |  |  | start no earlier than 2026-08-06 09:00 | Бундин В | 0.17h | 0.17h |
| 3370 | 12.5.13.3 | уложить и закрепить провода | 5min | 2026-03-05 09:10 A | 2026-03-05 09:15 A | 3368, 3369, 3372, 3373, 3374, 3375 | 100% |  |  | start no earlier than 2026-03-04 08:00 | Труфанов А | 0.08h | 0.08h |
| 3371 | 12.5.13.4 | протяжка контактов | 5min | 2026-03-05 09:15 A | 2026-03-05 09:20 A | 3370 | 100% |  |  | start no earlier than 2026-03-04 08:00 | Труфанов А | 0.08h | 0.08h |
| 3372 | 12.5.13.5 | продувка частотного привода | 10min | 2026-03-19 09:00 A | 2026-03-19 09:10 A |  | 100% |  |  | start no earlier than 2026-03-19 09:00 | Дедов В | 0.17h | 0.17h |
| 3373 | 12.5.13.6 | продувка частотного привода | 10min | 2026-05-14 09:00 A | 2026-05-14 09:10 A |  | 100% |  |  | start no earlier than 2026-05-14 09:00 | Макаревич А | 0.17h | 0.17h |
| 3374 | 12.5.13.7 | продувка частотного привода | 10min | 2026-08-13 09:00 A | 2026-08-13 09:10 A |  | 100% |  |  | start no earlier than 2026-08-13 09:00 | Некрасов А | 0.17h | 0.17h |
| 3375 | 12.5.13.8 | продувка частотного привода | 10min | 2026-08-20 09:00 A | 2026-08-20 09:10 A |  | 100% |  |  | start no earlier than 2026-08-20 09:00 | Дедов В | 0.17h | 0.17h |
| 3376 | 12.5.13.9 | продувка частотного привода | 10min | 2026-09-03 09:00 A | 2026-09-03 09:10 A |  | 100% |  |  | start no earlier than 2026-09-03 09:00 | Труфанов А | 0.17h | 0.17h |
| 3377 | 12.5.13.10 | продувка частотного привода | 10min | 2026-09-17 09:00 A | 2026-09-17 09:10 A |  | 100% |  |  | start no earlier than 2026-09-17 09:00 | Некрасов А | 0.17h | 0.17h |
| 3378 | 12.5.13.11 | продувка частотного привода | 10min | 2026-09-29 09:00 A | 2026-09-29 09:10 A |  | 100% |  |  | start no earlier than 2026-09-29 09:00 | Бундин В | 0.17h | 0.17h |
| 3379 | 12.5.13.12 | продувка частотного привода | 10min | 2026-10-08 09:00 A | 2026-10-08 09:10 A |  | 100% |  |  | start no earlier than 2026-10-08 09:00 | Дедов В | 0.17h | 0.17h |
| 3380 | 12.5.13.13 | продувка частотного привода | 10min | 2026-10-15 09:00 A | 2026-10-15 09:10 A |  | 100% |  |  | start no earlier than 2026-10-15 09:00 | Дедов В | 0.17h | 0.17h |
| 3381 | 12.5.13.14 | продувка частотного привода | 10min | 2026-10-30 09:00 A | 2026-10-30 09:10 A |  | 100% |  |  | start no earlier than 2026-10-30 09:00 | Макаревич А; Николаев | 0.33h | 0.33h |
| 3382 | 12.5.13.15 | продувка частотного привода | 10min | 2026-11-20 09:00 | 2026-11-20 09:10 |  |  |  | 78.57d | start no earlier than 2026-11-20 09:00 | Макаревич А; Тимофеев В | 0.33h |  |

| ID | WBS | Task | Duration | Start | Finish | Complete | Remaining | Total slack | Constraint | Resources | Work | Actual work |
| --- | --- | --- | --- | --- | --- | --- | --- | --- | --- | --- | --- | --- |
| 3383 | 12.5.14 | **пневотранспорт роторный питатель** | 189.02d | 2026-03-19 09:00 A | 2026-11-20 09:10 | 55% | 84.73d | 78.57d |  |  | 7.17h | 2.83h |
| 3384 | 12.5.14.1 | замена на ЗИП / вывод на ремонт промывку | 2h | 2026-06-25 09:00 | 2026-06-25 11:00 |  |  | 197.34d | start no earlier than 2026-06-25 09:00 | Труфанов А; Некрасов А | 4h |  |
| 3385 | 12.5.14.2 | проверка масла - высок температурная смазка | 1h | 2026-03-19 09:00 A | 2026-03-19 10:00 A | 100% |  |  | start no earlier than 2026-03-19 09:00 | Труфанов А | 1h | 1h |
| 3386 | 12.5.14.3 | Ревизия узлов/масла | 30min | 2026-07-30 09:00 A | 2026-07-30 09:30 A | 100% |  |  | start no earlier than 2026-07-30 09:00 | Труфанов А | 0.5h | 0.5h |
| 3387 | 12.5.14.4 | Ревизия узлов/масла (смазку свежую набил) | 20min | 2026-09-03 09:00 A | 2026-09-03 09:20 A | 100% |  |  | start no earlier than 2026-09-03 09:00 | Труфанов А | 0.33h | 0.33h |
| 3388 | 12.5.14.5 | Ревизия узлов/масла. Очистка мотора от пыли | 20min | 2026-09-24 09:00 A | 2026-09-24 09:20 A | 100% |  |  | start no earlier than 2026-09-24 09:00 | Бундин В | 0.33h | 0.33h |
| 3389 | 12.5.14.6 | Ревизия узлов/масла. Очистка мотора от пыли | 20min | 2026-10-15 09:00 A | 2026-10-15 09:20 A | 100% |  |  | start no earlier than 2026-10-15 09:00 | Труфанов А | 0.33h | 0.33h |
| 3390 | 12.5.14.7 | Ревизия узлов/масла. Очистка мотора от пыли | 10min | 2026-10-30 09:00 A | 2026-10-30 09:10 A | 100% |  |  | start no earlier than 2026-10-30 09:00 | Макаревич А; Николаев | 0.33h | 0.33h |
| 3391 | 12.5.14.8 | Ревизия узлов/масла. Очистка мотора от пыли | 10min | 2026-11-20 09:00 | 2026-11-20 09:10 |  |  | 78.57d | start no earlier than 2026-11-20 09:00 | Макаревич А; Тимофеев В | 0.33h |  |
| 3392 | 12.5.15 | **печь - валы этажей, подшипники, цепи** | 189.06d | 2026-03-19 09:00 A | 2026-11-20 09:30 | 94% | 11.94d | 78.53d |  |  | 8.42h | 7.42h |
| 3393 | 12.5.15.1 | осмотр смазка | 30min | 2026-03-19 09:00 A | 2026-03-19 09:30 A | 100% |  |  | start no earlier than 2026-03-19 09:00 | Тимофеев В | 0.5h | 0.5h |
| 3394 | 12.5.15.2 | осмотр смазка сетки | 2h | 2026-05-14 09:00 A | 2026-05-14 11:00 A | 100% |  |  | start no earlier than 2026-05-14 09:00 | Макаревич А | 2h | 2h |
| 3395 | 12.5.15.3 | натяжка цепей | 30min | 2026-08-13 09:00 A | 2026-08-13 09:30 A | 100% |  |  | start no earlier than 2026-08-13 09:00 | Некрасов А | 0.5h | 0.5h |
| 3396 | 12.5.15.4 | натяжка цепей, контроль привода | 30min | 2026-09-03 09:00 A | 2026-09-03 09:30 A | 100% |  |  | start no earlier than 2026-09-03 09:00 | Труфанов А | 0.5h | 0.5h |
| 3397 | 12.5.15.5 | Контроль редуктора, осмотр, проверка масла | 30min | 2026-09-17 09:00 A | 2026-09-17 09:30 A | 100% |  |  | start no earlier than 2026-09-17 09:00 | Труфанов А | 0.5h | 0.5h |
| 3398 | 12.5.15.6 | Контроль редуктора, осмотр, проверка масла | 30min | 2026-09-24 09:00 A | 2026-09-24 09:30 A | 100% |  |  | start no earlier than 2026-09-24 09:00 | Некрасов А | 0.5h | 0.5h |
| 3399 | 12.5.15.7 | Смазка всех цепей (если не смазаны) | 1h | 2026-10-15 09:00 A | 2026-10-15 10:00 A | 100% |  |  | start no earlier than 2026-10-15 09:00 | Бобренок В | 1h | 1h |
| 3400 | 12.5.15.8 | Контроль редуктора, осмотр, проверка масла | 30min | 2026-09-29 09:00 A | 2026-09-29 09:30 A | 100% |  |  | start no earlier than 2026-09-29 08:00 | Бундин В | 0.5h | 0.5h |
| 3401 | 12.5.15.9 | Контроль состояния шестерен привода | 10min | 2026-10-08 09:00 A | 2026-10-08 09:10 A | 100% |  |  | start no earlier than 2026-10-08 09:00 | Дедов В | 0.17h | 0.17h |
| 3402 | 12.5.15.10 | Проверка редуктора и выявление причины его шума и шатания/устранить | 1h | 2026-10-08 09:00 A | 2026-10-08 10:00 A | 100% |  |  | start no earlier than 2026-10-08 09:00 | Дедов В | 1h | 1h |
| 3403 | 12.5.15.11 | Замер диаметра шкива двигателя привода редуктора | 15min | 2026-10-15 09:00 A | 2026-10-15 09:15 A | 100% |  |  | start no earlier than 2026-10-15 09:00 | Труфанов А | 0.25h | 0.25h |
| 3404 | 12.5.15.12 | Контроль редуктора, осмотр, проверка масла | 30min | 2026-11-20 09:00 | 2026-11-20 09:30 |  |  | 78.53d | start no earlier than 2026-11-20 09:00 | Макаревич А; Тимофеев В | 1h |  |
| 3405 | 12.5.16 | **вентиляторы обдува сушки** | 199.12d? | 2026-03-05 09:00 A | 2026-11-20 10:00 | 29% | 141.05d? | 78.47d |  | ТО | 1602h | 15h |
| 3406 | 12.5.16.1 | чистка крыльчатки | 1d? | 2026-03-05 09:00 | 2026-03-05 18:00 |  |  | 276.59d | start no earlier than 2026-03-05 09:00 |  |  |  |
| 3407 | 12.5.16.2 | замена подшипников | 1d? | 2026-03-05 09:00 | 2026-03-05 18:00 |  |  | 276.59d | start no earlier than 2026-03-05 09:00 |  |  |  |
| 3408 | 12.5.16.3 | Осмотр, чистка | 2h | 2026-09-17 09:00 A | 2026-09-17 11:00 A | 100% |  |  | start no earlier than 2026-09-17 09:00 | Бобренок В | 2h | 2h |
| 3409 | 12.5.16.4 | Осмотр, очистка от пыли | 2h | 2026-09-24 09:00 A | 2026-09-24 11:00 A | 100% |  |  | start no earlier than 2026-09-24 09:00 | Некрасов А | 2h | 2h |
| 3410 | 12.5.16.5 | Осмотр, очистка от пыли | 2h | 2026-10-15 09:00 A | 2026-10-15 11:00 A | 100% |  |  | start no earlier than 2026-10-15 09:00 | Дедов В | 2h | 2h |
| 3411 | 12.5.16.6 | Осмотр, очистка от пыли | 1h | 2026-10-30 09:00 A | 2026-10-30 10:00 A | 100% |  |  | start no earlier than 2026-10-30 09:00 | Тимофеев В | 1h | 1h |
| 3412 | 12.5.16.7 | Осмотр, очистка от пыли | 1h | 2026-11-20 09:00 | 2026-11-20 10:00 |  |  | 78.47d | start no earlier than 2026-11-20 09:00 | Тимофеев В; Макаревич А | 2h |  |

| ID | WBS | Task | Duration | Start | Finish | Predecessors | Complete | Remaining | Total slack | Constraint | Resources | Work | Actual work |
| --- | --- | --- | --- | --- | --- | --- | --- | --- | --- | --- | --- | --- | --- |
| 3413 | 12.5.17 | **шкаф управления тэнами сушки главный** | 199.04d | 2026-03-05 09:00 A | 2026-11-20 09:20 |  | 88% | 24.37d | 78.55d |  |  | 8.67h | 7.5h |
| 3414 | 12.5.17.1 | протяжка контактов, продувка шкафа, частотного привода | 10min | 2026-03-05 09:00 A | 2026-03-05 09:10 A |  | 100% |  |  | start no earlier than 2026-03-05 09:00 | Труфанов А | 0.17h | 0.17h |
| 3415 | 12.5.17.2 | протяжка контактов, продувка шкафа, частотного привода | 10min | 2026-07-14 09:00 A | 2026-07-14 09:10 A |  | 100% |  |  | start no earlier than 2026-07-14 09:00 | Некрасов А | 0.17h | 0.17h |
| 3416 | 12.5.17.3 | осмотср замена подгоревших кабелей | 30min | 2026-05-21 09:00 A | 2026-05-21 09:30 A |  | 100% |  |  | start no earlier than 2026-05-21 09:00 | Тимофеев В | 0.5h | 0.5h |
| 3417 | 12.5.17.4 | протяжка контактов, продувка шкафа, частотного привода | 30min | 2026-08-06 09:00 | 2026-08-06 09:30 |  |  |  | 167.53d | start no earlier than 2026-08-06 08:00 | Бундин В | 0.5h |  |
| 3418 | 12.5.17.5 | осмотср замена подгоревших кабелей | 30min | 2026-05-21 09:00 A | 2026-05-21 09:30 A |  | 100% |  |  | start no earlier than 2026-05-21 09:00 | Некрасов А | 0.5h | 0.5h |
| 3419 | 12.5.17.6 | продуть, протяжка контактов | 1h | 2026-05-21 08:00 A | 2026-05-21 10:00 A |  | 100% |  |  | start no earlier than 2026-05-21 08:00 | Тимофеев В | 1h | 1h |
| 3420 | 12.5.17.7 | осмотср замена подгоревших кабелей | 30min | 2026-07-14 09:00 A | 2026-07-14 09:30 A |  | 100% |  |  | start no earlier than 2026-07-14 09:00 | Труфанов А | 0.5h | 0.5h |
| 3421 | 12.5.17.8 | осмотср замена подгоревших кабелей | 1h | 2026-08-13 09:00 A | 2026-08-13 10:00 A |  | 100% |  |  | start no earlier than 2026-08-13 09:00 | Труфанов А | 1h | 1h |
| 3422 | 12.5.17.9 | продувка | 10min | 2026-09-03 09:00 A | 2026-09-03 09:10 A |  | 100% |  |  | start no earlier than 2026-09-03 09:00 | Труфанов А | 0.17h | 0.17h |
| 3423 | 12.5.17.10 | Продувка | 10min | 2026-09-17 09:00 A | 2026-09-17 09:10 A |  | 100% |  |  | start no earlier than 2026-09-17 09:00 | Некрасов А | 0.17h | 0.17h |
| 3424 | 12.5.17.11 | Продувка. Замена подогретых жил | 2h | 2026-09-24 09:00 A | 2026-09-24 11:00 A |  | 100% |  |  | start no earlier than 2026-09-24 09:00 | Труфанов А | 2h | 2h |
| 3425 | 12.5.17.12 | протяжка контактов, продувка шкафа, частотного привода | 10min | 2026-10-30 09:00 | 2026-10-30 09:10 |  |  |  | 97.57d | start no earlier than 2026-10-30 09:00 |  |  |  |
| 3426 | 12.5.17.13 | протяжка контактов, продувка шкафа, частотного привода | 10min | 2026-10-15 09:30 A | 2026-10-15 09:40 A | 3427 | 100% |  |  |  | Дедов В | 0.17h | 0.17h |
| 3427 | 12.5.17.14 | осмотср замена подгоревших кабелей | 30min | 2026-10-15 09:00 A | 2026-10-15 09:30 A |  | 100% |  |  | start no earlier than 2026-10-15 09:00 | Дедов В | 0.5h | 0.5h |
| 3428 | 12.5.17.15 | осмотср замена подгоревших кабелей | 20min | 2026-10-30 09:00 A | 2026-10-30 09:20 A |  | 100% |  |  | start no earlier than 2026-10-30 09:00 | Макаревич А; Николаев | 0.67h | 0.67h |
| 3429 | 12.5.17.16 | осмотср замена подгоревших кабелей | 20min | 2026-11-20 09:00 | 2026-11-20 09:20 |  |  |  | 78.55d | start no earlier than 2026-11-20 09:00 | Макаревич А; Тимофеев В | 0.67h |  |
| 3430 | 12.5.18 | **шкаф управления тэнами твердотельный** | 199.04d | 2026-03-05 09:00 A | 2026-11-20 09:20 |  | 93% | 13.73d | 78.55d |  |  | 5.5h | 4.83h |
| 3431 | 12.5.18.1 | продувка, протяжка | 10min | 2026-03-05 09:00 A | 2026-03-05 09:10 A |  | 100% |  |  | start no earlier than 2026-03-05 09:00 | Труфанов А | 0.17h | 0.17h |
| 3432 | 12.5.18.2 | продувка, протяжка | 10min | 2026-07-14 09:00 A | 2026-07-14 09:10 A |  | 100% |  |  | start no earlier than 2026-07-14 09:00 | Труфанов А | 0.17h | 0.17h |
| 3433 | 12.5.18.3 | продувка, протяжка | 10min | 2026-08-06 09:00 A | 2026-08-06 09:10 A |  | 100% |  |  | start no earlier than 2026-08-06 08:00 | Бундин В | 0.17h | 0.17h |
| 3434 | 12.5.18.4 | замена подгоревших кабелей | 30min | 2026-08-13 09:00 A | 2026-08-13 09:30 A |  | 100% |  |  | start no earlier than 2026-08-13 09:00 | Труфанов А | 0.5h | 0.5h |
| 3435 | 12.5.18.5 | продувка, протяжка | 10min | 2026-08-06 09:00 A | 2026-08-06 09:10 A |  | 100% |  |  | start no earlier than 2026-08-06 08:00 | Труфанов А | 0.17h | 0.17h |
| 3436 | 12.5.18.6 | продувка, протяжка | 10min | 2026-09-03 09:00 A | 2026-09-03 09:10 A |  | 100% |  |  | start no earlier than 2026-09-03 09:00 | Труфанов А | 0.17h | 0.17h |
| 3437 | 12.5.18.7 | Продувка | 10min | 2026-09-17 09:00 A | 2026-09-17 09:10 A |  | 100% |  |  | start no earlier than 2026-09-17 09:00 | Некрасов А | 0.17h | 0.17h |
| 3438 | 12.5.18.8 | Продувка. Замена подогретых жил | 2h | 2026-09-24 09:00 A | 2026-09-24 11:00 A |  | 100% |  |  | start no earlier than 2026-09-24 09:00 | Труфанов А | 2h | 2h |
| 3439 | 12.5.18.9 | Продувка | 10min | 2026-09-29 09:00 A | 2026-09-29 09:10 A |  | 100% |  |  | start no earlier than 2026-09-29 08:00 | Бундин В | 0.17h | 0.17h |
| 3440 | 12.5.18.10 | Продувка. Замена подогретых жил | 30min | 2026-10-15 09:00 A | 2026-10-15 09:30 A |  | 100% |  |  | start no earlier than 2026-10-15 09:00 | Дедов В | 0.5h | 0.5h |
| 3441 | 12.5.18.11 | Продувка. Замена подогретых жил | 20min | 2026-10-30 09:00 A | 2026-10-30 09:20 A |  | 100% |  |  | start no earlier than 2026-10-30 09:00 | Макаревич А; Николаев | 0.67h | 0.67h |
| 3442 | 12.5.18.12 | Продувка. Замена подогретых жил | 20min | 2026-11-20 09:00 | 2026-11-20 09:20 |  |  |  | 78.55d | start no earlier than 2026-11-20 09:00 | Макаревич А; Тимофеев В | 0.67h |  |

| ID | WBS | Task | Type | Duration | Start | Finish | Complete | Remaining | Total slack | Constraint | Resources | Work | Actual work |
| --- | --- | --- | --- | --- | --- | --- | --- | --- | --- | --- | --- | --- | --- |
| 3443 | 12.5.19 | **конвейер №1 с печи в дрожировщик** |  | 199.03d | 2026-03-05 09:00 A | 2026-11-20 09:15 | 93% | 12.98d | 78.56d |  |  | 4.08h | 3.58h |
| 3444 | 12.5.19.1 | ослабить ленту для чистки барабана / натяжка после чистки |  | 30min | 2026-03-05 09:00 A | 2026-03-05 09:30 A | 100% |  |  | start no earlier than 2026-03-05 09:00 | Тимофеев В | 0.5h | 0.5h |
| 3445 | 12.5.19.2 | ревизия люфтов, фиксации смазки подшипников |  | 30min | 2026-03-05 09:00 A | 2026-03-05 09:30 A | 100% |  |  | start no earlier than 2026-03-05 09:00 | Тимофеев В | 0.5h | 0.5h |
| 3446 | 12.5.19.3 | ослабить ленту для чистки барабана / натяжка после чистки |  | 10min | 2026-03-12 09:00 A | 2026-03-12 09:10 A | 100% |  |  | start no earlier than 2026-03-12 09:00 | Тимофеев В | 0.17h | 0.17h |
| 3447 | 12.5.19.4 | чистка ленты контроль операторов, если нужно ослаить |  | 15min | 2026-08-13 09:00 A | 2026-08-13 09:15 A | 100% |  |  | start no earlier than 2026-08-13 09:00 | Тимофеев В | 0.25h | 0.25h |
| 3448 | 12.5.19.5 | ревизия люфтов, фиксации смазки подшипников |  | 30min | 2026-09-03 09:00 A | 2026-09-03 09:30 A | 100% |  |  | start no earlier than 2026-09-03 09:00 | Тимофеев В | 0.5h | 0.5h |
| 3449 | 12.5.19.6 | ослабить ленту для чистки барабана / натяжка после чистки |  | 10min | 2026-09-03 09:00 A | 2026-09-03 09:10 A | 100% |  |  | start no earlier than 2026-09-03 09:00 | Тимофеев В | 0.17h | 0.17h |
| 3450 | 12.5.19.7 | ревизия люфтов, фиксации смазки подшипников |  | 30min | 2026-09-17 09:00 A | 2026-09-17 09:30 A | 100% |  |  | start no earlier than 2026-09-17 09:00 | Тимофеев В | 0.5h | 0.5h |
| 3451 | 12.5.19.8 | очистка валов и ленты / контроль крепления редуктора / состояния подшипника |  | 30min | 2026-09-24 09:00 A | 2026-09-24 09:30 A | 100% |  |  | start no earlier than 2026-09-24 09:00 | Тимофеев В | 0.5h | 0.5h |
| 3452 | 12.5.19.9 | очистка валов и ленты / контроль крепления редуктора / состояния подшипника |  | 30min | 2026-10-30 09:00 A | 2026-10-30 09:30 A | 100% |  |  | start no earlier than 2026-10-30 09:00 | Тимофеев В | 0.5h | 0.5h |
| 3453 | 12.5.19.10 | очистка валов и ленты / контроль крепления редуктора / состояния подшипника |  | 15min | 2026-11-20 09:00 | 2026-11-20 09:15 |  |  | 78.56d | start no earlier than 2026-11-20 09:00 | Труфанов А; Некрасов А | 0.5h |  |
| 3454 | 12.5.20 | **барабан смесительный дрожировка** |  | 769.12d | 2023-12-28 09:00 A | 2026-11-20 10:00 | 79% | 158.84d | 78.47d |  | ТО | 130.5h | 102.62h |
| 3455 | 12.5.20.1 | ревизия состяния валов, подшипников |  | 2h | 2026-02-25 09:00 A | 2026-02-25 11:00 A | 100% |  |  | start no earlier than 2026-02-25 09:00 | Тимофеев В | 2h | 2h |
| 3456 | 12.5.20.2 | ремонт вала временный. 11 час |  | 2h | 2026-02-25 09:00 A | 2026-02-25 11:00 A | 100% |  |  | start no earlier than 2026-02-25 09:00 | Тимофеев В | 2h | 2h |
| 3457 | 12.5.20.3 | замена подшипников мотора привода |  | 2h | 2026-02-25 09:00 A | 2026-02-25 11:00 A | 100% |  |  | start no earlier than 2026-02-25 09:00 | Тимофеев В | 2h | 2h |
| 3458 | 12.5.20.4 | заменаить вал дрожировки по стрелкам на 11час / после прихода с ремонта |  | 2h | 2026-04-30 09:00 A | 2026-04-30 11:00 A | 100% |  |  | start no earlier than 2026-04-30 09:00 | Тимофеев В | 2h | 2h |
| 3459 | 12.5.20.5 | насос подачи жира и смесительный узел, баки подогрева |  | 2h | 2023-12-28 09:00 | 2023-12-28 11:00 |  |  | 847.34d | start no earlier than 2023-12-28 09:00 | ТО | 2h |  |
| 3460 | 12.5.20.6 | Осмотр подшипников редукторов |  | 20min | 2026-07-30 09:00 A | 2026-07-30 09:20 A | 100% |  |  | start no earlier than 2026-07-30 09:00 | Труфанов А | 0.33h | 0.33h |
| 3461 | 12.5.20.7 | Осмотр подшипников редукторов |  | 15min | 2026-08-13 09:00 A | 2026-08-13 09:15 A | 100% |  |  | start no earlier than 2026-08-13 09:00 | Тимофеев В | 0.25h | 0.25h |
| 3462 | 12.5.20.8 | Осмотр подшипников редукторов |  | 15min | 2026-09-03 09:00 A | 2026-09-03 09:15 A | 100% |  |  | start no earlier than 2026-09-03 09:00 | Тимофеев В | 0.25h | 0.25h |
| 3463 | 12.5.20.9 | Осмотр соединений фитингов, трехходового крана бежит/не бежит |  | 10min | 2026-09-03 09:00 A | 2026-09-03 09:10 A | 100% |  |  | start no earlier than 2026-09-03 09:00 | Тимофеев В | 0.17h | 0.17h |
| 3464 | 12.5.20.10 | Осмотр соединений фитингов, трехходового крана бежит/не бежит |  | 10min | 2026-09-17 09:00 A | 2026-09-17 09:10 A | 100% |  |  | start no earlier than 2026-09-17 09:00 | Тимофеев В | 0.17h | 0.17h |
| 3465 | 12.5.20.11 | Осмотр соединений фитингов, трехходового крана бежит/не бежит |  | 10min | 2026-09-18 09:00 A | 2026-09-18 09:10 A | 100% |  |  | start no earlier than 2026-09-18 09:00 | Тимофеев В | 0.17h | 0.17h |
| 3466 | 12.5.20.12 | Осмотр подшипников редукторов |  | 15min | 2026-10-08 09:00 A | 2026-10-08 09:15 A | 100% |  |  | start no earlier than 2026-10-08 09:00 | Тимофеев В | 0.25h | 0.25h |
| 3467 | 12.5.20.13 | Осмотр соединений фитингов, трехходового крана бежит/не бежит |  | 10min | 2026-10-08 09:00 A | 2026-10-08 09:10 A | 100% |  |  | start no earlier than 2026-10-08 09:00 | Тимофеев В | 0.17h | 0.17h |
| 3468 | 12.5.20.14 | Осмотр соединений фитингов, трехходового крана бежит/не бежит |  | 15min | 2026-10-15 09:00 A | 2026-10-15 09:15 A | 100% |  |  | start no earlier than 2026-10-15 09:00 | Дедов В | 0.25h | 0.25h |
| 3469 | 12.5.20.15 | Осмотр соединений фитингов, трехходового крана бежит/не бежит |  | 10min | 2026-10-30 09:00 A | 2026-10-30 09:10 A | 100% |  |  | start no earlier than 2026-10-30 09:00 | Тимофеев В | 0.17h | 0.17h |
| 3470 | 12.5.20.16 | Замена фитингов на новые под новый шланг |  | 2h | 2026-10-30 09:00 A | 2026-10-30 11:00 A | 100% |  |  | start no earlier than 2026-10-30 09:00 | Тимофеев В | 2h | 2h |
| 3471 | 12.5.20.17 | Осмотр соединений фитингов, трехходового крана бежит/не бежит | manual | 10min | 2026-11-20 09:00 | 2026-11-20 09:10 |  |  |  |  | Труфанов А; Некрасов А | 0.33h |  |
| 3472 | 12.5.20.18 | Замена фитингов на новые под новый шланг |  | 1h | 2026-11-20 09:00 | 2026-11-20 10:00 |  |  | 78.47d | start no earlier than 2026-11-20 09:00 | Труфанов А; Некрасов А | 2h |  |

| ID | WBS | Task | Duration | Start | Finish | Complete | Remaining | Total slack | Constraint | Resources | Work | Actual work |
| --- | --- | --- | --- | --- | --- | --- | --- | --- | --- | --- | --- | --- |
| 3473 | 12.5.21 | **Узел подачи гидролизата** | 106.02d | 2026-07-14 09:00 A | 2026-11-20 09:10 | 93% | 7.31d | 78.57d |  |  | 5h | 4.5h |
| 3474 | 12.5.21.1 | Дефектовка/ выяснить причу почему еле крутит/ устранить | 2h | 2026-07-14 09:00 A | 2026-07-14 11:00 A | 100% |  |  | start no earlier than 2026-07-14 09:00 | Бундин В | 2h | 2h |
| 3475 | 12.5.21.2 | осмотр цепи, редуктора, протяжка | 20min | 2026-08-13 09:00 A | 2026-08-13 09:20 A | 100% |  |  | start no earlier than 2026-08-13 09:00 | Тимофеев В | 0.33h | 0.33h |
| 3476 | 12.5.21.3 | Осмотр/ревизия насоса гидролизата, проверка всех соединений | 10min | 2026-09-03 09:00 A | 2026-09-03 09:10 A | 100% |  |  | start no earlier than 2026-09-03 09:00 | Тимофеев В | 0.17h | 0.17h |
| 3477 | 12.5.21.4 | Осмотр/ревизия насоса гидролизата, проверка всех соединений | 10min | 2026-09-17 09:00 A | 2026-09-17 09:10 A | 100% |  |  | start no earlier than 2026-09-17 09:00 | Тимофеев В | 0.17h | 0.17h |
| 3478 | 12.5.21.5 | перенос розеток со стола на раму | 1h | 2026-09-17 09:00 A | 2026-09-17 10:00 A | 100% |  |  | start no earlier than 2026-09-17 09:00 | Тимофеев В | 1h | 1h |
| 3479 | 12.5.21.6 | Осмотр/ревизия насоса гидролизата, проверка всех соединений | 10min | 2026-10-08 09:00 A | 2026-10-08 09:10 A | 100% |  |  | start no earlier than 2026-10-08 09:00 | Тимофеев В | 0.17h | 0.17h |
| 3480 | 12.5.21.7 | Осмотр/ревизия насоса гидролизата, проверка всех соединений | 10min | 2026-10-15 09:00 A | 2026-10-15 09:10 A | 100% |  |  | start no earlier than 2026-10-15 09:00 | Дедов В | 0.17h | 0.17h |
| 3481 | 12.5.21.8 | Вернуть ограничение частоты на 70 герц и заблокировать настройки частотника, чтоб не могли менять | 20min | 2026-10-15 09:00 A | 2026-10-15 09:20 A | 100% |  |  | start no earlier than 2026-10-15 09:00 | Дедов В | 0.33h | 0.33h |
| 3482 | 12.5.21.9 | Осмотр/ревизия насоса гидролизата, проверка всех соединений | 10min | 2026-10-30 09:00 A | 2026-10-30 09:10 A | 100% |  |  | start no earlier than 2026-10-30 09:00 | Тимофеев В | 0.17h | 0.17h |
| 3483 | 12.5.21.10 | Осмотр/ревизия насоса гидролизата, проверка всех соединений | 10min | 2026-11-20 09:00 | 2026-11-20 09:10 |  |  | 78.57d | start no earlier than 2026-11-20 09:00 | Труфанов А; Некрасов А | 0.33h |  |
| 3484 | 12.5.21.11 | Проверка частотника, какая максимальная герцовка стоит | 10min | 2026-11-20 09:00 | 2026-11-20 09:10 |  |  | 78.57d | start no earlier than 2026-11-20 09:00 | Труфанов А | 0.17h |  |
| 3485 | 12.5.22 | **конвейер №2 с дрожировки в охладитель** | 199.06d | 2026-03-05 09:00 A | 2026-11-20 09:30 | 88% | 23.89d | 78.53d |  |  | 4.67h | 3.67h |
| 3486 | 12.5.22.1 | ослабить ленту для чистки барабана / натяжка после чистки | 30min | 2026-03-05 09:00 A | 2026-03-05 09:30 A | 100% |  |  | start no earlier than 2026-03-05 09:00 | Тимофеев В | 0.5h | 0.5h |
| 3487 | 12.5.22.2 | ревизия люфтов, фиксации смазки подшипников | 30min | 2026-03-05 09:00 A | 2026-03-05 09:30 A | 100% |  |  | start no earlier than 2026-03-05 09:00 | Тимофеев В | 0.5h | 0.5h |
| 3488 | 12.5.22.3 | ослабить ленту для чистки барабана / натяжка после чистки | 10min | 2026-03-12 09:00 A | 2026-03-12 09:10 A | 100% |  |  | start no earlier than 2026-03-12 09:00 | Тимофеев В | 0.17h | 0.17h |
| 3489 | 12.5.22.4 | чистка ленты контроль операторов, если нужно ослаить | 15min | 2026-08-13 09:00 A | 2026-08-13 09:15 A | 100% |  |  | start no earlier than 2026-08-13 09:00 | Тимофеев В | 0.25h | 0.25h |
| 3490 | 12.5.22.5 | чистка ленты контроль операторов, если нужно ослаить | 15min | 2026-08-13 09:00 A | 2026-08-13 09:15 A | 100% |  |  | start no earlier than 2026-08-13 09:00 | Тимофеев В | 0.25h | 0.25h |
| 3491 | 12.5.22.6 | ослабить ленту для чистки барабана / натяжка после чистки | 30min | 2026-09-03 09:00 A | 2026-09-03 09:30 A | 100% |  |  | start no earlier than 2026-09-03 09:00 | Тимофеев В | 0.5h | 0.5h |
| 3492 | 12.5.22.7 | ревизия люфтов, фиксации смазки подшипников | 30min | 2026-09-17 09:00 A | 2026-09-17 09:30 A | 100% |  |  | start no earlier than 2026-09-17 09:00 | Тимофеев В | 0.5h | 0.5h |
| 3493 | 12.5.22.8 | ревизия люфтов, фиксации смазки подшипников | 30min | 2026-09-24 09:00 A | 2026-09-24 09:30 A | 100% |  |  | start no earlier than 2026-09-24 09:00 | Тимофеев В | 0.5h | 0.5h |
| 3494 | 12.5.22.9 | ревизия люфтов, фиксации смазки подшипников | 30min | 2026-10-30 09:00 A | 2026-10-30 09:30 A | 100% |  |  | start no earlier than 2026-10-30 09:00 | Тимофеев В | 0.5h | 0.5h |
| 3495 | 12.5.22.10 | ревизия люфтов, фиксации смазки подшипников | 30min | 2026-11-20 09:00 | 2026-11-20 09:30 |  |  | 78.53d | start no earlier than 2026-11-20 09:00 | Труфанов А; Некрасов А | 1h |  |
| 3496 | 12.5.23 | **охладитель сеточный** | 700.38d? | 2024-04-18 09:00 A | 2026-12-07 12:00 | 60% | 279.32d? | 67.22d |  |  | 23h | 19.83h |
| 3497 | 12.5.23.1 | ревизия осей сетки, замена шплинтов | 2h | 2024-04-18 09:00 A | 2024-04-18 11:00 A | 100% |  |  | start no earlier than 2024-04-18 08:00 | Некрасов А; Черепанов И | 4h | 4h |
| 3498 | 12.5.23.2 | ревизия привода - масло, ремень (не проверено масло) | 10min | 2026-03-19 09:00 A | 2026-03-19 09:10 A | 100% |  |  | start no earlier than 2026-03-05 09:00 | Тимофеев В | 0.17h | 0.17h |
| 3499 | 12.5.23.3 | ревизия привода - масло, ремень (не проверено масло) | 10min | 2026-07-14 09:00 | 2026-07-14 09:10 |  |  | 184.57d | start no earlier than 2026-07-14 09:00 | Некрасов А | 0.17h |  |
| 3500 | 12.5.23.4 | ревизия состояния сетки | 2h | 2026-07-14 09:00 A | 2026-07-14 11:00 A | 100% |  |  | start no earlier than 2026-07-14 08:00 | Некрасов А | 2h | 2h |
| 3501 | 12.5.23.5 | ревизия состояния сетки | 1h | 2026-07-30 09:00 A | 2026-07-30 10:00 A | 100% |  |  | start no earlier than 2026-07-30 09:00 | Бундин В | 1h | 1h |
| 3502 | 12.5.23.6 | ревизия состояния сетки | 1d? | 2026-08-20 09:00 | 2026-08-20 18:00 |  |  | 156.59d | start no earlier than 2026-08-20 09:00 |  |  |  |
| 3503 | 12.5.23.7 | контроль натяжки цепей | 20min | 2026-03-05 09:00 A | 2026-03-05 09:20 A | 100% |  |  | start no earlier than 2026-03-05 09:00 | Бундин В | 0.33h | 0.33h |
| 3504 | 12.5.23.8 | текущий ремонт силиконовых уплотнений | 30min | 2026-03-05 09:00 A | 2026-03-05 09:30 A | 100% |  |  | start no earlier than 2026-03-05 09:00 | Бундин В | 0.5h | 0.5h |
| 3505 | 12.5.23.9 | осмотр ремней, натяжка цепей, ремонт силиконовых отбортовок | 1h | 2026-05-14 09:00 A | 2026-05-14 10:00 A | 100% |  |  | start no earlier than 2026-05-14 09:00 | Макаревич А | 1h | 1h |
| 3506 | 12.5.23.10 | осмотр ремней, натяжка цепей, ремонт силиконовых отбортовок | 1h | 2026-07-14 09:00 A | 2026-07-14 10:00 A | 100% |  |  | start no earlier than 2026-07-14 09:00 | Некрасов А | 1h | 1h |
| 3507 | 12.5.23.11 | осмотр ремней, натяжка цепей, ремонт силиконовых отбортовок | 1h | 2026-07-30 09:00 A | 2026-07-30 10:00 A | 100% |  |  | start no earlier than 2026-07-30 09:00 | Бундин В | 1h | 1h |
| 3508 | 12.5.23.12 | осмотр ремней, натяжка цепей, ремонт силиконовых отбортовок | 1h | 2026-08-20 09:00 A | 2026-08-20 10:00 A | 100% |  |  | start no earlier than 2026-08-20 09:00 | Труфанов А; Некрасов А | 2h | 2h |
| 3509 | 12.5.23.13 | осмотр ремней, натяжка цепей, ремонт силиконовых отбортовок | 1h | 2026-08-20 09:00 A | 2026-08-20 10:00 A | 100% |  |  | start no earlier than 2026-08-20 09:00 | Дедов В | 1h | 1h |
| 3510 | 12.5.23.14 | Ревизия сетки, контроль роспуска, подогнуть, где что можно, что бы не зацепилось | 1h | 2026-09-24 09:00 A | 2026-09-24 10:00 A | 100% |  |  | start no earlier than 2026-09-24 09:00 | Труфанов А | 1h | 1h |
| 3511 | 12.5.23.15 | Смазка подшипников привод охладителя | 30min | 2026-09-24 09:00 A | 2026-09-24 09:30 A | 100% |  |  | start no earlier than 2026-09-24 09:00 | Труфанов А | 0.5h | 0.5h |
| 3512 | 12.5.23.16 | Смазка всех цепей | 2h | 2026-09-24 09:00 A | 2026-09-24 11:00 A | 100% |  |  | start no earlier than 2026-09-24 09:00 | Труфанов А | 2h | 2h |
| 3513 | 12.5.23.17 | Ремонт уголка на охладителе, позвонить мне, перешлю видео | 30min | 2026-09-29 09:00 A | 2026-09-29 09:30 A | 100% |  |  | start no earlier than 2026-09-29 08:00 | Бундин В | 0.5h | 0.5h |
| 3514 | 12.5.23.18 | ревизия состояния сетки/контроль натяжки цепей, ревизия сетки | 1h | 2026-10-30 09:00 A | 2026-10-30 10:00 A | 100% |  |  | start no earlier than 2026-10-30 09:00 | Тимофеев В | 1h | 1h |
| 3515 | 12.5.23.19 | Смазка подшипников привода при необходимости | 30min | 2026-10-30 09:00 A | 2026-10-30 09:30 A | 100% |  |  | start no earlier than 2026-10-30 09:00 | Тимофеев В | 0.5h | 0.5h |
| 3516 | 12.5.23.20 | заявка на тавотницы 90 | 20min | 2026-10-30 09:00 A | 2026-10-30 09:20 A | 100% |  |  | start no earlier than 2026-10-30 08:00 | Зорькин В | 0.33h | 0.33h |
| 3517 | 12.5.23.21 | замена тавотниц которые требуют ослабление сетки для доступа | 3h | 2026-12-07 09:00 | 2026-12-07 12:00 |  |  | 67.22d | start no earlier than 2026-12-07 09:00 | Тимофеев В | 3h |  |

| ID | WBS | Task | Duration | Start | Finish | Predecessors | Complete | Remaining | Total slack | Constraint | Resources | Work | Actual work |
| --- | --- | --- | --- | --- | --- | --- | --- | --- | --- | --- | --- | --- | --- |
| 3518 | 12.5.24 | **конвейер 3 с охладителя в упаковку** | 84.03d | 2026-08-12 09:00 A | 2026-11-19 09:15 |  | 99% | 0d | 0d |  | ТО | 338.25h | 98.19h |
| 3519 | 12.5.24.1 | ослабить ленту для чистки барабана / натяжка после чистки | 15min | 2026-08-12 09:00 A | 2026-08-12 09:15 A |  | 100% |  |  | start no earlier than 2026-08-12 09:00 | Тимофеев В | 0.25h | 0.25h |
| 3520 | 12.5.24.2 | ревизия люфтов, фиксации, смазки подшипников | 15min | 2026-08-12 09:00 A | 2026-08-12 09:15 A |  | 100% |  |  | start no earlier than 2026-08-12 09:00 | Тимофеев В | 0.25h | 0.25h |
| 3521 | 12.5.24.3 | ослабить ленту для чистки барабана / натяжка после чистки | 15min | 2026-09-03 09:00 A | 2026-09-03 09:15 A |  | 100% |  |  | start no earlier than 2026-09-03 09:00 | Макаревич А | 0.25h | 0.25h |
| 3522 | 12.5.24.4 | ревизия люфтов, фиксации, смазки подшипников | 15min | 2026-09-17 09:00 A | 2026-09-17 09:15 A |  | 100% |  |  | start no earlier than 2026-09-17 09:00 | Некрасов А | 0.25h | 0.25h |
| 3523 | 12.5.24.5 | ревизия люфтов, фиксации, смазки подшипников | 15min | 2026-10-01 09:00 A | 2026-10-01 09:15 A |  | 100% |  |  | start no earlier than 2026-10-01 09:00 | Некрасов А | 0.25h | 0.25h |
| 3524 | 12.5.24.6 | ревизия люфтов, фиксации, смазки подшипников | 15min | 2026-10-15 09:00 A | 2026-10-15 09:15 A |  | 100% |  |  | start no earlier than 2026-10-15 09:00 |  |  |  |
| 3525 | 12.5.24.7 | ревизия люфтов, фиксации, смазки подшипников | 15min | 2026-10-30 09:00 A | 2026-10-30 09:15 A |  | 100% |  |  | start no earlier than 2026-10-30 09:00 | Тимофеев В | 0.25h | 0.25h |
| 3526 | 12.5.24.8 | ревизия люфтов, фиксации, смазки подшипников | 15min | 2026-11-19 09:00 A | 2026-11-19 09:15 A |  | 100% |  |  | start no earlier than 2026-11-19 08:00 | Труфанов А; Некрасов А | 0.5h | 0.5h |
| 3527 | 12.5.25 | **упаковка** | 769.06d | 2023-12-28 09:00 A | 2026-11-20 09:30 |  | 96% | 28.48d | 78.53d |  | ТО | 5102h | 4912.56h |
| 3528 | 12.5.25.1 | НОТИС 1 | 2h | 2023-12-28 09:00 A | 2023-12-28 11:00 A |  | 100% |  |  | start no earlier than 2023-12-28 09:00 | ТО | 2h | 2h |
| 3529 | 12.5.25.2 | НОТИС 2 | 2h | 2023-12-28 09:00 A | 2023-12-28 11:00 A |  | 100% |  |  | start no earlier than 2023-12-28 09:00 | ТО | 2h | 2h |
| 3530 | 12.5.25.3 | запайщик 1 | 2h | 2026-06-18 09:00 A | 2026-06-18 11:00 A |  | 100% |  |  | start no earlier than 2026-06-18 09:00 | Труфанов А | 2h | 2h |
| 3531 | 12.5.25.4 | запайщик 2 | 2h | 2026-06-18 09:00 A | 2026-06-18 11:00 A |  | 100% |  |  | start no earlier than 2026-06-18 09:00 | Труфанов А | 2h | 2h |
| 3532 | 12.5.25.5 | запайщик 1 проверка перемычек/тефлона замена при необходимости | 2h | 2026-09-03 09:00 A | 2026-09-03 11:00 A |  | 100% |  |  | start no earlier than 2026-09-03 09:00 | Макаревич А | 2h | 2h |
| 3533 | 12.5.25.6 | запайщик 1 проверка перемычек/тефлона замена при необходимости | 2h | 2026-09-03 09:00 A | 2026-09-03 11:00 A |  | 100% |  |  | start no earlier than 2026-09-03 09:00 | Макаревич А | 2h | 2h |
| 3534 | 12.5.25.7 | запайщик 1 и 2 проверка перемычек/тефлона замена при необходимости | 1h | 2026-09-24 09:00 A | 2026-09-24 10:00 A |  | 100% |  |  | start no earlier than 2026-09-24 09:00 | Некрасов А | 1h | 1h |
| 3535 | 12.5.25.8 | запайщик 1 и 2 проверка перемычек/тефлона замена при необходимости | 30min | 2026-11-20 09:00 | 2026-11-20 09:30 |  |  |  | 78.53d | start no earlier than 2026-11-20 09:00 | Труфанов А; Некрасов А | 1h |  |
| 3536 | 12.5.26 | **квадропак** | 85.12d | 2026-08-12 09:00 A | 2026-11-20 10:00 |  | 87% | 11.1d | 78.47d |  |  | 8.83h | 6.83h |
| 3537 | 12.5.26.1 | смазка вращающиющихся механизмов | 30min | 2026-10-01 09:00 A | 2026-10-01 09:30 A |  | 100% |  |  | start no earlier than 2026-10-01 09:00 | Бундин В | 0.5h | 0.5h |
| 3538 | 12.5.26.2 | протяжка креплений поворотных лап захвата | 30min | 2026-10-01 09:30 A | 2026-10-01 10:00 A | 3537 | 100% |  |  | start no earlier than 2026-03-05 09:00 | Бундин В | 0.5h | 0.5h |
| 3539 | 12.5.26.3 | чистка вала ленты выгрзного транспортера | 30min | 2026-10-01 10:00 A | 2026-10-01 10:30 A | 3538 | 100% |  |  | start no earlier than 2026-03-31 08:00 | Бундин В | 0.5h | 0.5h |
| 3540 | 12.5.26.4 | осмотр приводной системы нории / смазка | 30min | 2026-08-12 09:00 A | 2026-08-12 09:30 A |  | 100% |  |  | start no earlier than 2026-08-12 09:00 | Тимофеев В | 0.5h | 0.5h |
| 3541 | 12.5.26.5 | осмотр приводной системы нории / смазка | 30min | 2026-08-20 09:00 A | 2026-08-20 09:30 A |  | 100% |  |  | start no earlier than 2026-08-20 09:00 | Бобренок В | 0.5h | 0.5h |
| 3542 | 12.5.26.6 | осмотр приводной системы нории / смазка | 30min | 2026-09-03 09:00 A | 2026-09-03 09:30 A |  | 100% |  |  | start no earlier than 2026-09-03 09:00 | Макаревич А | 0.5h | 0.5h |
| 3543 | 12.5.26.7 | протяжка креплений поворотных лап захвата | 30min | 2026-09-03 09:00 A | 2026-09-03 09:30 A |  | 100% |  |  | start no earlier than 2026-09-03 09:00 | Макаревич А | 0.5h | 0.5h |
| 3544 | 12.5.26.8 | снимать ковши для доступка к подшинику, нуждающего в смазке( сообщил Некрасов) | 2h | 2026-09-24 09:00 A | 2026-09-24 11:00 A |  | 100% |  |  | start no earlier than 2026-09-24 09:00 | Бундин В | 2h | 2h |
| 3545 | 12.5.26.9 | Ревизия редуктора транспортной ленты, бежит масло | 1h | 2026-10-15 09:00 A | 2026-10-15 10:00 A |  | 100% |  |  | start no earlier than 2026-10-15 09:00 | Бобренок В | 1h | 1h |
| 3546 | 12.5.26.10 | Проверка редуктора транспортерной ленты | 10min | 2026-10-29 09:00 A | 2026-10-29 09:10 A |  | 100% |  |  | start no earlier than 2026-10-29 08:00 | Макаревич А; Николаев | 0.33h | 0.33h |
| 3547 | 12.5.26.11 | Комплексный осмотр всех узлов | 1h | 2026-11-20 09:00 | 2026-11-20 10:00 |  |  |  | 78.47d | start no earlier than 2026-11-20 09:00 | Труфанов А; Некрасов А | 2h |  |

| ID | WBS | Task | Duration | Start | Finish | Complete | Remaining | Total slack | Constraint | Resources | Work | Actual work |
| --- | --- | --- | --- | --- | --- | --- | --- | --- | --- | --- | --- | --- |
| 3548 | 12.5.27 | **БЕСТРОМ** | 769.12d | 2023-12-28 09:00 A | 2026-11-20 10:00 | 77% | 173.52d | 78.47d |  | ТО | 1109.83h | 77.33h |
| 3549 | 12.5.27.1 | чистка тен с демантожем | 2.5h | 2026-03-05 09:00 A | 2026-03-05 11:30 A | 100% |  |  | start no earlier than 2026-03-05 09:00 | Бундин В | 2.5h | 2.5h |
| 3550 | 12.5.27.2 | ослабить ленту для чистки барабана / натяжка после чистки | 10min | 2026-03-12 09:00 A | 2026-03-12 09:10 A | 100% |  |  | start no earlier than 2026-03-12 09:00 | Бундин В | 0.17h | 0.17h |
| 3551 | 12.5.27.3 | чистка тенов | 1h | 2026-05-14 09:00 A | 2026-05-14 10:00 A | 100% |  |  | start no earlier than 2026-05-14 09:00 | Макаревич А | 1h | 1h |
| 3552 | 12.5.27.4 | чистка тенов | 2h | 2026-07-14 09:00 | 2026-07-14 11:00 |  |  | 184.34d | start no earlier than 2026-07-14 09:00 | Бундин В | 2h |  |
| 3553 | 12.5.27.5 | конвейер и вибробункер БЕСТРОМ | 2h | 2023-12-28 09:00 | 2023-12-28 11:00 |  |  | 847.34d | start no earlier than 2023-12-28 09:00 | ТО | 2h |  |
| 3554 | 12.5.27.6 | бестром чистка тен, проверка тефлона, роликов (согласовать с мастером) | 2h | 2026-07-08 09:00 A | 2026-07-08 11:00 A | 100% |  |  | start no earlier than 2026-07-08 09:00 | Бобренок В | 2h | 2h |
| 3555 | 12.5.27.7 | бестром чистка тен, проверка тефлона, роликов (согласовать с мастером) | 1h | 2026-07-30 09:00 A | 2026-07-30 10:00 A | 100% |  |  | start no earlier than 2026-07-30 09:00 | Тимофеев В | 1h | 1h |
| 3556 | 12.5.27.8 | бестром чистка тен, проверка тефлона, роликов (согласовать с мастером) | 1h | 2026-08-13 09:00 A | 2026-08-13 10:00 A | 100% |  |  | start no earlier than 2026-08-13 09:00 | Тимофеев В | 1h | 1h |
| 3557 | 12.5.27.9 | бестром чистка тен, проверка тефлона, роликов (согласовать с мастером) | 1h | 2026-08-20 09:00 A | 2026-08-20 10:00 A | 100% |  |  | start no earlier than 2026-08-20 09:00 | Дедов В | 1h | 1h |
| 3558 | 12.5.27.10 | бестром чистка тен, проверка тефлона, роликов (согласовать с мастером) | 1h | 2026-09-03 09:00 A | 2026-09-03 10:00 A | 100% |  |  | start no earlier than 2026-09-03 09:00 | Макаревич А | 1h | 1h |
| 3559 | 12.5.27.11 | Замена линейного подшипника ISKRA KH2030-PP (согласование с Домоводовым) не делали, все норм там) | 2h | 2026-09-03 09:00 A | 2026-09-03 11:00 A | 100% |  |  | start no earlier than 2026-09-03 09:00 | Макаревич А | 2h | 2h |
| 3560 | 12.5.27.12 | ослабить ленту для чистки барабана / натяжка после чистки | 10min | 2026-09-10 09:00 | 2026-09-10 09:10 |  |  | 141.57d | start no earlier than 2026-09-10 09:00 | Макаревич А | 0.17h |  |
| 3561 | 12.5.27.13 | Замена поролоновой губки на горизонтальных тенах запайки пакетов | 30min | 2026-09-17 09:00 A | 2026-09-17 09:30 A | 100% |  |  | start no earlier than 2026-09-17 09:00 | Бобренок В | 0.5h | 0.5h |
| 3562 | 12.5.27.14 | Чистка ТЭНов | 2h | 2026-09-16 09:00 A | 2026-09-16 11:00 A | 100% |  |  | start no earlier than 2026-09-16 08:00 | Бундин В | 2h | 2h |
| 3563 | 12.5.27.15 | Чистка ТЭНов | 2h | 2026-09-24 09:00 A | 2026-09-24 11:00 A | 100% |  |  | start no earlier than 2026-09-24 09:00 | Бундин В | 2h | 2h |
| 3564 | 12.5.27.16 | Проверка контактов их продувка и их протяжка. Проверка эелектрической части, устранение неисправностей. | 4h | 2026-10-08 09:00 A | 2026-10-08 13:00 A | 100% |  |  | start no earlier than 2026-10-08 09:00 | Дедов В | 4h | 4h |
| 3565 | 12.5.27.17 | Чистка тенов, проверка тефлона, роликов | 1h | 2026-10-15 09:00 A | 2026-10-15 10:00 A | 100% |  |  | start no earlier than 2026-10-15 09:00 | Труфанов А | 1h | 1h |
| 3566 | 12.5.27.18 | Чистка тенов, проверка тефлона, роликов | 1h | 2026-10-30 09:00 | 2026-10-30 10:00 |  |  | 97.47d | start no earlier than 2026-10-30 09:00 | Макаревич А; Николаев | 2h |  |
| 3567 | 12.5.27.19 | Чистка тенов, проверка тефлона, роликов | 1h | 2026-11-20 09:00 | 2026-11-20 10:00 |  |  | 78.47d | start no earlier than 2026-11-20 09:00 | Труфанов А; Некрасов А | 2h |  |
| 3568 | 12.5.28 | **электрооборудование** | 700.02d? | 2023-12-28 09:00 A | 2026-09-03 09:10 |  | 696.66d? | 147.57d |  |  | 69.33h | 0.33h |
| 3569 | 12.5.28.1 | ВРУ3 | 30min | 2024-10-03 09:00 | 2024-10-03 09:30 |  |  | 647.53d | start no earlier than 2024-10-03 09:00 | Тимофеев В | 0.5h |  |
| 3570 | 12.5.28.2 | ВРУ4 | 2h | 2023-12-28 09:00 | 2023-12-28 11:00 |  |  | 847.34d | start no earlier than 2023-12-28 09:00 | ТО | 2h |  |
| 3571 | 12.5.28.3 | ВРУ5 | 2h | 2023-12-28 09:00 | 2023-12-28 11:00 |  |  | 847.34d | start no earlier than 2023-12-28 09:00 | ТО | 2h |  |
| 3572 | 12.5.28.4 | ВРУ6 | 2h | 2023-12-28 09:00 | 2023-12-28 11:00 |  |  | 847.34d | start no earlier than 2023-12-28 09:00 | ТО | 2h |  |
| 3573 | 12.5.28.5 | ЩР4 у печи | 2h | 2023-12-28 09:00 | 2023-12-28 11:00 |  |  | 847.34d | start no earlier than 2023-12-28 09:00 | ТО | 2h |  |
| 3574 | 12.5.28.6 | ЩО1 у печи | 30min | 2024-10-03 09:00 | 2024-10-03 09:30 |  |  | 647.53d | start no earlier than 2024-10-03 09:00 | Тимофеев В | 0.5h |  |
| 3575 | 12.5.28.7 | ЩР5 у жиротопки | 2h | 2023-12-28 09:00 | 2023-12-28 11:00 |  |  | 847.34d | start no earlier than 2023-12-28 09:00 | ТО | 2h |  |
| 3576 | 12.5.28.8 | ЩР6 упаковка стна жир | 2h | 2023-12-28 09:00 | 2023-12-28 11:00 |  |  | 847.34d | start no earlier than 2023-12-28 09:00 | ТО | 2h |  |
| 3577 | 12.5.28.9 | ЩР7 упаковка колонна | 2h | 2023-12-28 09:00 | 2023-12-28 11:00 |  |  | 847.34d | start no earlier than 2023-12-28 09:00 | ТО | 2h |  |
| 3578 | 12.5.28.10 | ЩР8 склад навесок | 2h | 2023-12-28 09:00 | 2023-12-28 11:00 |  |  | 847.34d | start no earlier than 2023-12-28 09:00 | ТО | 2h |  |
| 3579 | 12.5.28.11 | ЩР9 2 этаж | 2h | 2023-12-28 09:00 | 2023-12-28 11:00 |  |  | 847.34d | start no earlier than 2023-12-28 09:00 | ТО | 2h |  |
| 3580 | 12.5.28.12 | электрокотел 1 - 2 цех | 2h | 2023-12-28 09:00 | 2023-12-28 11:00 |  |  | 847.34d | start no earlier than 2023-12-28 09:00 | ТО | 2h |  |
| 3581 | 12.5.28.13 | электрокотел 2 - 2 цех | 1d? | 2023-12-28 09:00 | 2023-12-28 18:00 |  |  | 846.59d | start no earlier than 2023-12-28 09:00 | ТО | 8h |  |
| 3582 | 12.5.28.14 | электрокотел 3 - 2 цех | 1d? | 2023-12-28 09:00 | 2023-12-28 18:00 |  |  | 846.59d | start no earlier than 2023-12-28 09:00 | ТО | 8h |  |
| 3583 | 12.5.28.15 | бойлер 4 2 цех раковина | 1d? | 2023-12-28 09:00 | 2023-12-28 18:00 |  |  | 846.59d | start no earlier than 2023-12-28 09:00 | ТО | 8h |  |
| 3584 | 12.5.28.16 | бойлер 5 2 цех душ М | 1d? | 2023-12-28 09:00 | 2023-12-28 18:00 |  |  | 846.59d | start no earlier than 2023-12-28 09:00 | ТО | 8h |  |
| 3585 | 12.5.28.17 | бойлер 6 2 цех душ Ж | 1d? | 2023-12-28 09:00 | 2023-12-28 18:00 |  |  | 846.59d | start no earlier than 2023-12-28 09:00 | ТО | 8h |  |
| 3586 | 12.5.28.18 | насос санитарный | 1d? | 2023-12-28 09:00 | 2023-12-28 18:00 |  |  | 846.59d | start no earlier than 2023-12-28 09:00 | ТО | 8h |  |
| 3587 | 12.5.28.19 | ЩР4 у печи продувка | 10min | 2026-09-03 09:00 A | 2026-09-03 09:10 A | 100% |  |  | start no earlier than 2026-09-03 09:00 | Труфанов А | 0.17h | 0.17h |
| 3588 | 12.5.28.20 | ЩО1 у печи продувка | 10min | 2026-09-03 09:00 A | 2026-09-03 09:10 A | 100% |  |  | start no earlier than 2026-09-03 09:00 | Труфанов А | 0.17h | 0.17h |

| ID | WBS | Task | Duration | Start | Finish | Complete | Remaining | Total slack | Constraint | Resources | Work | Actual work |
| --- | --- | --- | --- | --- | --- | --- | --- | --- | --- | --- | --- | --- |
| 3589 | 12.5.29 | **Компрессор 2 цех** | 82.03d | 2026-08-06 09:00 A | 2026-11-13 09:15 | 99% | 0d | 0d |  | ТО | 4.5h | 4.5h |
| 3590 | 12.5.29.1 | продувка фильтров | 30min | 2026-08-06 09:00 A | 2026-08-06 09:30 A | 100% |  |  | start no earlier than 2026-08-06 09:00 | Тимофеев В | 0.5h | 0.5h |
| 3591 | 12.5.29.2 | слив конденсат с осушителя | 30min | 2026-08-06 09:00 A | 2026-08-06 09:30 A | 100% |  |  | start no earlier than 2026-08-06 09:00 | Тимофеев В | 0.5h | 0.5h |
| 3592 | 12.5.29.3 | слив конденсат с осушителя | 30min | 2026-08-20 09:00 A | 2026-08-20 09:30 A | 100% |  |  | start no earlier than 2026-08-20 09:00 | Дедов В | 0.5h | 0.5h |
| 3593 | 12.5.29.4 | продувка фильтров | 30min | 2026-08-29 09:00 A | 2026-08-31 09:30 A | 100% |  |  | start no earlier than 2026-08-29 09:00 | Макаревич А | 0.5h | 0.5h |
| 3594 | 12.5.29.5 | слив конденсат с осушителя | 30min | 2026-08-29 09:00 A | 2026-08-31 09:30 A | 100% |  |  | start no earlier than 2026-08-29 09:00 | Макаревич А | 0.5h | 0.5h |
| 3595 | 12.5.29.6 | слив конденсат с осушителя | 30min | 2026-08-29 09:00 A | 2026-08-31 09:30 A | 100% |  |  | start no earlier than 2026-08-29 09:00 | Макаревич А | 0.5h | 0.5h |
| 3596 | 12.5.29.7 | слив конденсат с осушителя | 30min | 2026-09-03 09:00 A | 2026-09-03 09:30 A | 100% |  |  | start no earlier than 2026-09-03 09:00 | Макаревич А | 0.5h | 0.5h |
| 3597 | 12.5.29.8 | продувка фильтров (дать размеры фильтра) | 30min | 2026-09-17 09:00 A | 2026-09-17 09:30 A | 100% |  |  | start no earlier than 2026-09-17 09:00 | Труфанов А | 0.5h | 0.5h |
| 3598 | 12.5.29.9 | вызвать сервисного инженера на ТО | 15min | 2026-11-13 09:00 A | 2026-11-13 09:15 A | 100% |  |  | start no earlier than 2026-11-16 09:00 | Зорькин В; Труфанов А | 0.5h | 0.5h |
| 3599 | 12.5.30 | **насосная станция 2 цех** | 130.06d | 2026-03-05 09:00 A | 2026-09-03 09:30 A | 100% |  |  |  |  | 1h | 1h |
| 3600 | 12.5.30.1 | замена фильтров | 30min | 2026-03-05 09:00 A | 2026-03-05 09:30 A | 100% |  |  | start no earlier than 2026-03-05 09:00 | Тимофеев В | 0.5h | 0.5h |
| 3601 | 12.5.30.2 | замена фильтров | 30min | 2026-09-03 09:00 A | 2026-09-03 09:30 A | 100% |  |  | start no earlier than 2026-09-03 09:00 | Труфанов А | 0.5h | 0.5h |
| 3602 | 12.5.31 | **приточнго-вытяжная венгтиляция и смесительный узел** | 127.06d | 2026-04-16 09:00 A | 2026-10-01 09:30 A | 100% |  |  |  |  | 2.5h | 2.5h |
| 3603 | 12.5.31.1 | замена фильтра | 1h | 2026-04-16 09:00 A | 2026-04-16 10:00 A | 100% |  |  | start no earlier than 2026-04-16 09:00 | Труфанов А; Некрасов А | 2h | 2h |
| 3604 | 12.5.31.2 | Осмотр состояния фильтра приточки/замена | 30min | 2026-10-01 09:00 A | 2026-10-01 09:30 A | 100% |  |  | start no earlier than 2026-10-01 09:00 | Труфанов А | 0.5h | 0.5h |
| 3605 | 12.5.32 | **кондиционер 1** | 689.04d? | 2024-04-18 09:00 A | 2026-11-20 09:20 | 94% | 39.37d? | 78.55d |  | ТО | 5071.33h | 4827.32h |
| 3606 | 12.5.32.1 | чистка фильтра | 1h | 2024-04-18 09:00 A | 2024-04-18 10:00 A | 100% |  |  | start no earlier than 2024-04-18 08:00 | Черепанов И; Некрасов А | 2h | 2h |
| 3607 | 12.5.32.2 | чистка фильтра | 20min | 2026-03-05 09:00 A | 2026-03-05 09:20 A | 100% |  |  | start no earlier than 2026-03-05 09:00 | Некрасов А; Бундин В | 0.67h | 0.67h |
| 3608 | 12.5.32.3 | чистка фильтров | 1d? | 2026-06-25 09:00 A | 2026-06-25 18:00 A | 100% |  |  | start no earlier than 2026-06-25 09:00 | Тимофеев В; Дедов В | 16h | 16h |
| 3609 | 12.5.32.4 | чистка фильтров | 20min | 2026-07-14 09:00 A | 2026-07-14 09:20 A | 100% |  |  | start no earlier than 2026-07-14 09:00 | Некрасов А; Бундин В | 0.67h | 0.67h |
| 3610 | 12.5.32.5 | чистка фильтров | 20min | 2026-08-13 09:00 A | 2026-08-13 09:20 A | 100% |  |  | start no earlier than 2026-08-13 09:00 | Некрасов А; Труфанов А | 0.67h | 0.67h |
| 3611 | 12.5.32.6 | чистка фильтров | 20min | 2026-09-03 09:00 A | 2026-09-03 09:20 A | 100% |  |  | start no earlier than 2026-09-03 09:00 | Некрасов А; Тимофеев В | 0.67h | 0.67h |
| 3612 | 12.5.32.7 | чистка фильтров | 20min | 2026-09-17 09:00 A | 2026-09-17 09:20 A | 100% |  |  | start no earlier than 2026-09-17 09:00 | Тимофеев В; Бобренок В | 0.67h | 0.67h |
| 3613 | 12.5.32.8 | чистка фильтров | 20min | 2026-09-24 09:00 A | 2026-09-24 09:20 A | 100% |  |  | start no earlier than 2026-09-24 09:00 | Тимофеев В; Бундин В | 0.67h | 0.67h |
| 3614 | 12.5.32.9 | чистка фильтров | 20min | 2026-10-30 09:00 | 2026-10-30 09:20 |  |  | 97.55d | start no earlier than 2026-10-30 09:00 | Тимофеев В | 0.33h |  |
| 3615 | 12.5.32.10 | чистка фильтров | 20min | 2026-11-20 09:00 | 2026-11-20 09:20 |  |  | 78.55d | start no earlier than 2026-11-20 09:00 | Труфанов А; Некрасов А | 0.67h |  |

| ID | WBS | Task | Type | Duration | Start | Finish | Complete | Remaining | Total slack | Constraint | Resources | Work | Actual work |
| --- | --- | --- | --- | --- | --- | --- | --- | --- | --- | --- | --- | --- | --- |
| 3616 | 12.5.33 | **кондиционер 2** |  | 689.04d? | 2024-04-18 09:00 A | 2026-11-20 09:20 | 95% | 37.76d? | 78.55d |  | ТО | 5072.5h | 4983.33h |
| 3617 | 12.5.33.1 | чистка фильтров |  | 1d? | 2026-06-25 09:00 A | 2026-06-25 18:00 A | 100% |  |  | start no earlier than 2026-06-25 09:00 | Тимофеев В; Дедов В | 16h | 16h |
| 3618 | 12.5.33.2 | чистка фильтра |  | 1h | 2024-04-18 09:00 A | 2024-04-18 10:00 A | 100% |  |  | start no earlier than 2024-04-18 08:00 | Черепанов И; Некрасов А | 2h | 2h |
| 3619 | 12.5.33.3 | чистка фильтра |  | 20min | 2026-03-05 09:00 A | 2026-03-05 09:20 A | 100% |  |  | start no earlier than 2026-03-05 09:00 | Некрасов А; Бундин В | 0.67h | 0.67h |
| 3620 | 12.5.33.4 | чистка фильтров |  | 20min | 2026-07-14 09:00 A | 2026-07-14 09:20 A | 100% |  |  | start no earlier than 2026-07-14 09:00 | Некрасов А; Бундин В | 0.67h | 0.67h |
| 3621 | 12.5.33.5 | чистка фильтров |  | 20min | 2026-08-13 09:00 A | 2026-08-13 09:20 A | 100% |  |  | start no earlier than 2026-08-13 09:00 | Некрасов А; Труфанов А | 0.67h | 0.67h |
| 3622 | 12.5.33.6 | чистка фильтров |  | 20min | 2026-08-13 09:00 A | 2026-08-13 09:20 A | 100% |  |  | start no earlier than 2026-08-13 09:00 | Некрасов А; Труфанов А | 0.67h | 0.67h |
| 3623 | 12.5.33.7 | чистка фильтров |  | 20min | 2026-09-03 09:00 A | 2026-09-03 09:20 A | 100% |  |  | start no earlier than 2026-09-03 09:00 | Некрасов А; Тимофеев В | 0.67h | 0.67h |
| 3624 | 12.5.33.8 | чистка фильтров |  | 30min | 2026-09-17 09:00 A | 2026-09-17 09:30 A | 100% |  |  | start no earlier than 2026-09-17 09:00 | Тимофеев В; Бобренок В | 1h | 1h |
| 3625 | 12.5.33.9 | чистка фильтров |  | 20min | 2026-09-24 09:00 A | 2026-09-24 09:20 A | 100% |  |  | start no earlier than 2026-09-24 09:00 | Тимофеев В; Бундин В | 0.67h | 0.67h |
| 3626 | 12.5.33.10 | чистка фильтров |  | 20min | 2026-10-30 09:00 | 2026-10-30 09:20 |  |  | 97.55d | start no earlier than 2026-10-30 09:00 | Тимофеев В | 0.33h |  |
| 3627 | 12.5.33.11 | чистка фильтров |  | 20min | 2026-11-20 09:00 | 2026-11-20 09:20 |  |  | 78.55d | start no earlier than 2026-11-20 09:00 | Труфанов А; Некрасов А | 0.67h |  |
| 3628 | 12.5.34 | **кондиционер 3** |  | 199.04d | 2026-03-05 09:00 A | 2026-11-20 09:20 | 78% | 44.23d | 78.55d |  |  | 5.67h | 4.67h |
| 3629 | 12.5.34.1 | чистка фильтра |  | 20min | 2026-03-05 09:00 A | 2026-03-05 09:20 A | 100% |  |  | start no earlier than 2026-03-05 09:00 | Некрасов А; Бундин В | 0.67h | 0.67h |
| 3630 | 12.5.34.2 | чистка фильтров |  | 20min | 2026-07-14 09:00 A | 2026-07-14 09:20 A | 100% |  |  | start no earlier than 2026-07-14 09:00 | Некрасов А; Бундин В | 0.67h | 0.67h |
| 3631 | 12.5.34.3 | чистка фильтров |  | 20min | 2026-08-13 09:00 A | 2026-08-13 09:20 A | 100% |  |  | start no earlier than 2026-08-13 09:00 | Некрасов А; Труфанов А | 0.67h | 0.67h |
| 3632 | 12.5.34.4 | чистка фильтров |  | 20min | 2026-08-13 09:00 A | 2026-08-13 09:20 A | 100% |  |  | start no earlier than 2026-08-13 09:00 | Некрасов А; Труфанов А | 0.67h | 0.67h |
| 3633 | 12.5.34.5 | чистка фильтров |  | 20min | 2026-09-03 09:00 A | 2026-09-03 09:20 A | 100% |  |  | start no earlier than 2026-09-03 09:00 | Некрасов А; Тимофеев В | 0.67h | 0.67h |
| 3634 | 12.5.34.6 | чистка фильтров |  | 20min | 2026-09-17 09:00 A | 2026-09-17 09:20 A | 100% |  |  | start no earlier than 2026-09-17 09:00 | Тимофеев В; Бобренок В | 0.67h | 0.67h |
| 3635 | 12.5.34.7 | чистка фильтров |  | 20min | 2026-09-24 09:00 A | 2026-09-24 09:20 A | 100% |  |  | start no earlier than 2026-09-24 09:00 | Тимофеев В; Бундин В | 0.67h | 0.67h |
| 3636 | 12.5.34.8 | чистка фильтров |  | 20min | 2026-10-30 09:00 | 2026-10-30 09:20 |  |  | 97.55d | start no earlier than 2026-10-30 09:00 | Тимофеев В | 0.33h |  |
| 3637 | 12.5.34.9 | чистка фильтров |  | 20min | 2026-11-20 09:00 | 2026-11-20 09:20 |  |  | 78.55d | start no earlier than 2026-11-20 09:00 | Труфанов А; Некрасов А | 0.67h |  |
| 3638 | 12.5.35 | **электроштабелер** |  | 2.38d | 2026-08-11 09:00 A | 2026-08-13 12:00 A | 100% |  |  |  | ТО | 22.25h | 22.25h |
| 3639 | 12.5.35.1 | **хруст в колесе устранить** |  | 2.38d | 2026-08-11 09:00 A | 2026-08-13 12:00 A | 100% |  |  |  |  | 3.25h | 3.25h |
| 3640 | 12.5.35.1.1 | хруст с правой стороны штабелера- ревизия, скорее всего подшипник (экструдер). Осмотр, доложить | manual | 15min | 2026-08-11 09:00 A | 2026-08-11 09:15 A | 100% |  |  | start no earlier than 2026-08-11 09:00 | Тимофеев В | 0.25h | 0.25h |
| 3641 | 12.5.35.1.2 | ремонт замена подшипник колесо штабелер |  | 3h | 2026-08-13 09:00 A | 2026-08-13 12:00 A | 100% |  |  | start no earlier than 2026-08-13 09:00 | Тимофеев В | 3h | 3h |

| ID | WBS | Task | Type | Duration | Start | Finish | Complete | Remaining | Total slack | Constraint | Resources | Work | Actual work |
| --- | --- | --- | --- | --- | --- | --- | --- | --- | --- | --- | --- | --- | --- |
| 3642 | 12.5.36 | **Лаборатория** |  | 0.25d | 2026-09-18 09:00 A | 2026-09-18 11:00 A | 100% |  |  |  |  | 2h | 2h |
| 3643 | 12.5.36.1 | Прочистка дистилятора/ТО, очистка накипи, инструкция смотреть в лаборатории |  | 2h | 2026-09-18 09:00 A | 2026-09-18 11:00 A | 100% |  |  | start no earlier than 2026-09-18 09:00 | Бобренок В | 2h | 2h |
| 3644 | 12.6 | **3 цех** |  | 1d? | 2023-12-28 09:00 | 2023-12-28 18:00 |  |  | 846.59d |  | ТО | 88h |  |
| 3645 | 12.6.1 | **электрооборудование** |  | 1d? | 2023-12-28 09:00 | 2023-12-28 18:00 |  |  | 846.59d |  | ТО | 48h |  |
| 3646 | 12.6.1.1 | ВРУ7 |  | 1d? | 2023-12-28 09:00 | 2023-12-28 18:00 |  |  | 846.59d | start no earlier than 2023-12-28 09:00 | ТО | 8h |  |
| 3647 | 12.6.1.2 | ОЩР |  | 1d? | 2023-12-28 09:00 | 2023-12-28 18:00 |  |  | 846.59d | start no earlier than 2023-12-28 09:00 | ТО | 8h |  |
| 3648 | 12.6.1.3 | электрокотел 4 - 3 цех |  | 1d? | 2023-12-28 09:00 | 2023-12-28 18:00 |  |  | 846.59d | start no earlier than 2023-12-28 09:00 | ТО | 8h |  |
| 3649 | 12.6.1.4 | электрокотел 5 - 3 цех |  | 1d? | 2023-12-28 09:00 | 2023-12-28 18:00 |  |  | 846.59d | start no earlier than 2023-12-28 09:00 | ТО | 8h |  |
| 3650 | 12.6.1.5 | электрокотел 6 - 3 цех |  | 1d? | 2023-12-28 09:00 | 2023-12-28 18:00 |  |  | 846.59d | start no earlier than 2023-12-28 09:00 | ТО | 8h |  |
| 3651 | 12.6.2 | электроштабелер 1 |  | 1d? | 2023-12-28 09:00 | 2023-12-28 18:00 |  |  | 846.59d | start no earlier than 2023-12-28 09:00 | ТО | 8h |  |
| 3652 | 12.6.3 | электроштабелер 2 |  | 1d? | 2023-12-28 09:00 | 2023-12-28 18:00 |  |  | 846.59d | start no earlier than 2023-12-28 09:00 | ТО | 8h |  |
| 3653 | 12.6.4 | вилочный погрузчик 1 |  | 1d? | 2023-12-28 09:00 | 2023-12-28 18:00 |  |  | 846.59d | start no earlier than 2023-12-28 09:00 | ТО | 8h |  |
| 3654 | 12.6.5 | вилочный погрузчик 2 |  | 1d? | 2023-12-28 09:00 | 2023-12-28 18:00 |  |  | 846.59d | start no earlier than 2023-12-28 09:00 | ТО | 8h |  |
| 3655 | 12.7 | **5 цех** |  | 755.02d? | 2023-12-28 09:00 A | 2026-11-06 09:10 | 10% | 678.35d? | 92.57d |  | ТО | 7084.67h | 906.67h |
| 3656 | 12.7.1 | **насосная станция 5 цех** |  | 0.02d | 2026-11-06 09:00 | 2026-11-06 09:10 |  |  | 92.57d |  | ТО | 0.5h |  |
| 3657 | 12.7.1.1 | Осмотр |  | 10min | 2026-11-06 09:00 | 2026-11-06 09:10 |  |  | 92.57d | start no earlier than 2026-11-06 08:00 | Макаревич А; Николаев | 0.33h |  |
| 3658 | 12.7.2 | растариватель |  | 1d? | 2023-12-28 09:00 | 2023-12-28 18:00 |  |  | 846.59d | start no earlier than 2023-12-28 09:00 | ТО | 8h |  |
| 3659 | 12.7.3 | **шнек 1 растариватель-смеситель** |  | 65.25d | 2026-04-03 09:00 A | 2026-07-03 11:00 | 67% | 21.75d | 0d |  | ТО | 492h | 342.67h |
| 3660 | 12.7.3.1 | замена подшипник нижний | manual | 2h | 2026-04-03 09:00 A | 2026-04-03 11:00 A | 100% |  |  |  | Некрасов А; Труфанов А | 4h | 4h |
| 3661 | 12.7.3.2 | ревизия подшипник верхний - не снимается.ревизия - все ок, мазка | manual | 2h | 2026-04-03 09:00 A | 2026-04-03 11:00 A | 100% |  |  |  | Некрасов А; Труфанов А | 4h | 4h |
| 3662 | 12.7.3.3 | осмотр износа, смазка | manual | 2h | 2026-07-03 09:00 | 2026-07-03 11:00 |  |  |  |  | Тимофеев В | 2h |  |
| 3663 | 12.7.4 | смеситель СМ1500 |  | 1d? | 2023-12-28 09:00 | 2023-12-28 18:00 |  |  | 846.59d | start no earlier than 2023-12-28 09:00 | ТО | 8h |  |
| 3664 | 12.7.5 | **шнек 2 смеситель -дробилка** |  | 68.5d? | 2026-03-24 09:00 A | 2026-06-26 13:00 | 67% | 22.83d? | 196.09d |  | ТО | 440h | 64h |
| 3665 | 12.7.5.1 | ремонт вала, т.к съело посадку на верх подшипник |  | 1d? | 2026-03-24 09:00 A | 2026-03-24 18:00 A | 100% |  |  | start no earlier than 2026-03-24 09:00 | Труфанов А; Некрасов А | 16h | 16h |
| 3666 | 12.7.5.2 | осмотр износа |  | 4h | 2026-06-26 09:00 | 2026-06-26 13:00 |  |  | 196.09d | start no earlier than 2026-06-26 09:00 | Тимофеев В | 4h |  |

| ID | WBS | Task | Duration | Start | Finish | Total slack | Constraint | Resources | Work |
| --- | --- | --- | --- | --- | --- | --- | --- | --- | --- |
| 3667 | 12.7.6 | **дробилка ДМС3** | 0.5d | 2026-05-11 09:00 | 2026-05-11 13:00 | 230.09d |  | ТО | 8h |
| 3668 | 12.7.6.1 | замена подшипник буксы сторона мотора | 4h | 2026-05-11 09:00 | 2026-05-11 13:00 | 230.09d | start no earlier than 2026-05-10 09:00 | Бундин В | 4h |
| 3669 | 12.7.7 | шнек 3 дробилка-накопитель | 1d? | 2023-12-28 09:00 | 2023-12-28 18:00 | 846.59d | start no earlier than 2023-12-28 09:00 | ТО | 8h |
| 3670 | 12.7.8 | дробилка 11квт | 1d? | 2023-12-28 09:00 | 2023-12-28 18:00 | 846.59d | start no earlier than 2023-12-28 09:00 | ТО | 8h |
| 3671 | 12.7.9 | дробилка 7,5квт | 1d? | 2023-12-28 09:00 | 2023-12-28 18:00 | 846.59d | start no earlier than 2023-12-28 09:00 | ТО | 8h |
| 3672 | 12.7.10 | вибросито А | 1d? | 2023-12-28 09:00 | 2023-12-28 18:00 | 846.59d | start no earlier than 2023-12-28 09:00 | ТО | 8h |
| 3673 | 12.7.11 | вибросито Б | 1d? | 2023-12-28 09:00 | 2023-12-28 18:00 | 846.59d | start no earlier than 2023-12-28 09:00 | ТО | 8h |
| 3674 | 12.7.12 | **электрооборудование** | 1d? | 2023-12-28 09:00 | 2023-12-28 18:00 | 846.59d |  | ТО | 48h |
| 3675 | 12.7.12.1 | ВРУ7 | 1d? | 2023-12-28 09:00 | 2023-12-28 18:00 | 846.59d | start no earlier than 2023-12-28 09:00 | ТО | 8h |
| 3676 | 12.7.12.2 | ЩР2 | 1d? | 2023-12-28 09:00 | 2023-12-28 18:00 | 846.59d | start no earlier than 2023-12-28 09:00 | ТО | 8h |
| 3677 | 12.7.12.3 | котельная газовая 5 цех | 1d? | 2023-12-28 09:00 | 2023-12-28 18:00 | 846.59d | start no earlier than 2023-12-28 09:00 | ТО | 8h |
| 3678 | 12.7.12.4 | бойлеры душ | 1d? | 2023-12-28 09:00 | 2023-12-28 18:00 | 846.59d | start no earlier than 2023-12-28 09:00 | ТО | 8h |
| 3679 | 12.7.12.5 | вентилятор вытяжной в дробилке | 1d? | 2023-12-28 09:00 | 2023-12-28 18:00 | 846.59d | start no earlier than 2023-12-28 09:00 | ТО | 8h |
| 3680 | 12.8 | **адм корпус** | 1d? | 2023-12-28 09:00 | 2023-12-28 18:00 | 846.59d |  | ТО | 24h |
| 3681 | 12.8.1 | бойлер туалет | 1d? | 2023-12-28 09:00 | 2023-12-28 18:00 | 846.59d | start no earlier than 2023-12-28 09:00 | ТО | 8h |
| 3682 | 12.8.2 | ОЩР | 1d? | 2023-12-28 09:00 | 2023-12-28 18:00 | 846.59d | start no earlier than 2023-12-28 09:00 | ТО | 8h |
| 3683 | 12.9 | **склад упаковки** | 1d? | 2023-12-28 09:00 | 2023-12-28 18:00 | 846.59d |  | ТО | 32h |
| 3684 | 12.9.1 | **электрооборудование** | 1d? | 2023-12-28 09:00 | 2023-12-28 18:00 | 846.59d |  | ТО | 24h |
| 3685 | 12.9.1.1 | ЩО и ЩР | 1d? | 2023-12-28 09:00 | 2023-12-28 18:00 | 846.59d | start no earlier than 2023-12-28 09:00 | ТО | 8h |
| 3686 | 12.9.1.2 | санитарный насос | 1d? | 2023-12-28 09:00 | 2023-12-28 18:00 | 846.59d | start no earlier than 2023-12-28 09:00 | ТО | 8h |
| 3687 | 12.10 | **цех наполнителей** | 1d? | 2023-12-28 09:00 | 2023-12-28 18:00 | 846.59d |  | ТО | 56h |
| 3688 | 12.10.1 | ЩО и ЩР | 1d? | 2023-12-28 09:00 | 2023-12-28 18:00 | 846.59d | start no earlier than 2023-12-28 09:00 | ТО | 8h |
| 3689 | 12.10.2 | комппрессор | 1d? | 2023-12-28 09:00 | 2023-12-28 18:00 | 846.59d | start no earlier than 2023-12-28 09:00 | ТО | 8h |
| 3690 | 12.10.3 | конвейер загрузки | 1d? | 2023-12-28 09:00 | 2023-12-28 18:00 | 846.59d | start no earlier than 2023-12-28 09:00 | ТО | 8h |
| 3691 | 12.10.4 | дозатор НОТИС | 1d? | 2023-12-28 09:00 | 2023-12-28 18:00 | 846.59d | start no earlier than 2023-12-28 09:00 | ТО | 8h |
| 3692 | 12.10.5 | запайщик | 1d? | 2023-12-28 09:00 | 2023-12-28 18:00 | 846.59d | start no earlier than 2023-12-28 09:00 | ТО | 8h |
| 3693 | 12.10.6 | вилочный погрузчик тойота | 1d? | 2023-12-28 09:00 | 2023-12-28 18:00 | 846.59d | start no earlier than 2023-12-28 09:00 | ТО | 8h |
| 3694 | 12.11 | Установка розетки под литийионный аккумклятор 3-х фазный, установить рядом с существующей ВРУ | 2h | 2026-07-08 09:00 | 2026-07-08 11:00 | 188.34d | start no earlier than 2026-07-08 08:00 | Бундин В | 2h |

| ID | WBS | Task | Type | Duration | Start | Finish | Predecessors | Complete | Remaining | Total slack | Constraint | Resources | Work | Actual work |
| --- | --- | --- | --- | --- | --- | --- | --- | --- | --- | --- | --- | --- | --- | --- |
| 3695 | 13 | **синий склад** |  | 160d | 2026-05-07 09:00 A | 2026-11-27 18:00 |  | 63% | 58.54d | 72.59d |  |  | 60h | 33h |
| 3696 | 13.1 | Маркировка оборудования по списку с кладовщиком, взять красные стикеры и пометить |  | 3h | 2026-11-23 09:00 A | 2026-11-23 12:00 A |  | 100% |  |  | start no earlier than 2026-11-23 09:00 | Тимофеев В | 3h | 3h |
| 3697 | 13.2 | уборка зона металла / склад ЗИП |  | 4h | 2026-11-10 09:00 A | 2026-11-10 13:00 A |  | 100% |  |  | start no earlier than 2026-11-10 09:00 | Бундин В; Тимофеев В | 8h | 8h |
| 3698 | 13.3 | Замерить ширину запаечных губок на теко 1,5, написать информацию в мах |  | 30min | 2026-10-30 09:00 A | 2026-10-30 09:30 A |  | 100% |  |  | start no earlier than 2026-10-30 09:00 | Тимофеев В | 0.5h | 0.5h |
| 3699 | 13.4 | Перевезти лист металла на пандус 1 цех через карщика сразу на входе, запинаются |  | 1h | 2026-10-27 09:00 A | 2026-10-27 10:00 A |  | 100% |  |  | start no earlier than 2026-10-27 08:00 | Бундин В | 1h | 1h |
| 3700 | 13.5 | **ЗАМЕНА СВЕТИЛЬНИКОВ** |  | 7.56d | 2026-10-26 09:00 A | 2026-11-04 14:30 |  | 53% | 3.56d | 94.03d |  |  | 15.5h | 7.5h |
| 3701 | 13.5.1 | сборка леса по наряд допуску / перенос от офиса |  | 3h | 2026-10-26 09:00 A | 2026-10-26 12:00 A |  | 100% |  |  | start no earlier than 2026-10-26 09:00 | Труфанов А; Некрасов А | 6h | 6h |
| 3702 | 13.5.2 | определить тип лампы |  | 1h | 2026-10-26 12:00 A | 2026-10-26 13:00 A | 3701 | 100% |  |  | start no earlier than 2026-10-19 08:00 | Труфанов А | 1h | 1h |
| 3703 | 13.5.3 | заявка на лампы |  | 15min | 2026-10-26 14:00 A | 2026-10-26 14:15 A | 3702 | 100% |  |  | start no earlier than 2026-10-19 08:00 | Зорькин В | 0.25h | 0.25h |
| 3704 | 13.5.4 | контроль доставка |  | 15min | 2026-11-04 14:15 A | 2026-11-04 14:30 A | 3703FS+7d | 100% |  |  | start no earlier than 2026-10-19 08:00 | Зорькин В | 0.25h | 0.25h |
| 3705 | 13.5.5 | замена |  | 4h | 2026-11-03 09:00 | 2026-11-03 13:00 |  |  |  | 95.09d | start no earlier than 2026-11-03 09:00 | Труфанов А; Некрасов А | 8h |  |
| 3706 | 13.6 | Найти и подготовить к транспортировке оснастку для бестрома со стойкой для висения и для штабелера удлинитель изготовленный со швелеров |  | 1h | 2026-10-15 09:00 A | 2026-10-15 10:00 A |  | 100% |  |  | start no earlier than 2026-10-15 09:00 | Труфанов А | 1h | 1h |
| 3707 | 13.7 | установить на место крышки вентиляторов |  | 1h | 2026-08-17 09:00 A | 2026-08-17 10:00 A |  | 100% |  |  | start no earlier than 2026-08-17 09:00 | Бобренок В | 1h | 1h |
| 3708 | 13.8 | Монтаж доп освещения |  | 2h | 2026-09-26 09:00 A | 2026-09-26 11:00 A |  | 100% |  |  | start no earlier than 2026-09-26 09:00 | Бобренок В | 2h | 2h |
| 3709 | 13.9 | монтаж включателя света с улицы, возле вход. Двери |  | 3h | 2026-09-30 09:00 | 2026-09-30 12:00 |  |  |  | 121.22d | start no earlier than 2026-09-30 09:00 | Бобренок В | 3h |  |
| 3710 | 13.10 | расширить проем вверху для проезда погрузчиков, врезаются | manual | 1d | 2026-11-27 09:00 | 2026-11-27 18:00 |  |  |  |  | start no earlier than 2026-11-27 09:00 | Тимофеев В; Бундин В | 16h |  |
| 3711 | 13.11 | замерить диаметр крыльчатки двигателя экструдера, инфу передать мне |  | 1h | 2026-06-13 09:00 A | 2026-06-15 10:00 A |  | 100% |  |  | start no earlier than 2026-06-13 09:00 | Бобренок В | 1h | 1h |
| 3712 | 13.12 | найти амперметры 30А и 150А (сказать кол-во) |  | 2h | 2026-06-10 09:00 A | 2026-06-10 11:00 A |  | 100% |  |  | start no earlier than 2026-06-10 09:00 | Труфанов А | 2h | 2h |
| 3713 | 13.13 | Навести порядок на входе в синий склад |  | 2h | 2026-07-23 09:00 A | 2026-07-23 11:00 A |  | 100% |  |  | start no earlier than 2026-07-24 09:00 | Бундин В | 2h | 2h |
| 3714 | 13.14 | проверить и подписать все материалы в синем складе с Алексеем |  | 4h | 2026-05-07 09:00 A | 2026-05-07 13:00 A |  | 100% |  |  | start no earlier than 2026-05-07 09:00 | Шуранов Ю | 4h | 4h |
| 3715 | 14 | **хим лаб** |  | 652.25d? | 2024-01-11 08:00 A | 2026-07-13 11:00 A |  | 100% |  |  |  |  | 71.75h | 71.75h |
| 3716 | 14.1 | замена кран РР |  | 2h | 2026-07-13 09:00 A | 2026-07-13 11:00 A |  | 100% |  |  | start no earlier than 2026-07-13 09:00 | Тимофеев В | 2h | 2h |
| 3717 | 14.2 | ремонт термоконтроллера - замена реле / перепаять с сзоны ALARM |  | 1h | 2026-06-09 09:00 A | 2026-06-09 10:00 A |  | 100% |  |  | start no earlier than 2026-06-09 09:00 | Дедов В | 1h | 1h |
| 3718 | 14.3 | **усилить питание хим лаб, что бы не отключался автомат при вкл быт приборов** |  | 0.12d | 2026-05-29 09:00 A | 2026-05-29 10:00 A |  | 100% |  |  |  |  | 2h | 2h |
| 3719 | 14.3.1 | переключение питания хим лаб на отдельный ШУ |  | 1h | 2026-05-29 09:00 A | 2026-05-29 10:00 A |  | 100% |  |  | start no earlier than 2026-05-29 09:00 | Некрасов А; Бобренок В | 2h | 2h |

| ID | WBS | Task | Duration | Start | Finish | Predecessors | Complete | Constraint | Resources | Work | Actual work |
| --- | --- | --- | --- | --- | --- | --- | --- | --- | --- | --- | --- |
| 3720 | 14.4 | **ремонт бойлер вода - ПУН** | 10.25d | 2026-05-14 08:00 A | 2026-05-28 11:00 A |  | 100% |  |  | 4.75h | 4.75h |
| 3721 | 14.4.1 | замена из ЗИП | 1h | 2026-05-14 08:00 A | 2026-05-14 10:00 A |  | 100% | start no earlier than 2026-05-14 08:00 | Тимофеев В | 1h | 1h |
| 3722 | 14.4.2 | диагностика неисправности. Бойлер в слесарне | 1h | 2026-05-14 08:00 A | 2026-05-14 10:00 A |  | 100% | start no earlier than 2026-05-14 08:00 | Бобренок В | 1h | 1h |
| 3723 | 14.4.3 | заявка предохарнитель | 30min | 2026-05-15 09:00 A | 2026-05-15 09:30 A | 3722 | 100% | start no earlier than 2026-05-15 08:00 | Шуранов Ю | 0.5h | 0.5h |
| 3724 | 14.4.4 | контроль поставки | 15min | 2026-05-22 09:30 A | 2026-05-22 09:45 A | 3723FS+7d | 100% | start no earlier than 2026-05-15 08:00 | Шуранов Ю | 0.25h | 0.25h |
| 3725 | 14.4.5 | заменить на бойлере в слесарке термостата WY-S37A | 2h | 2026-05-28 09:00 A | 2026-05-28 11:00 A |  | 100% | start no earlier than 2026-05-28 09:00 | Тимофеев В | 2h | 2h |
| 3726 | 14.5 | **ремонт дистилятор** | 31d? | 2026-04-27 09:00 A | 2026-06-08 18:00 A |  | 100% |  |  | 17h | 17h |
| 3727 | 14.5.1 | заявка тен | 1h | 2026-04-27 09:00 A | 2026-04-27 10:00 A |  | 100% | start no earlier than 2026-04-27 09:00 | Шуранов Ю | 1h | 1h |
| 3728 | 14.5.2 | доставка | 1d? | 2026-06-05 09:00 A | 2026-06-05 18:00 A | 3727 | 100% | finish no earlier than 2026-06-05 18:00 | Карабанов | 8h | 8h |
| 3729 | 14.5.3 | замена. Больше не выбиывает | 1d? | 2026-06-05 18:00 A | 2026-06-08 18:00 A | 3728 | 100% | start no earlier than 2026-05-13 09:00 | Тимофеев В | 8h | 8h |
| 3730 | 14.6 | **ремонт АКВ_шесть** | 30d? | 2026-04-27 09:00 A | 2026-06-05 18:00 A |  | 100% |  |  | 11h | 11h |
| 3731 | 14.6.1 | заявка тен | 1h | 2026-04-27 09:00 A | 2026-04-27 10:00 A |  | 100% | start no earlier than 2026-04-27 09:00 | Шуранов Ю | 1h | 1h |
| 3732 | 14.6.2 | доставка | 1d? | 2026-06-05 09:00 A | 2026-06-05 18:00 A | 3731 | 100% | finish no earlier than 2026-06-05 18:00 | Карабанов | 8h | 8h |
| 3733 | 14.6.3 | замена | 2h | 2026-05-24 09:00 A | 2026-05-25 11:00 A |  | 100% | start no earlier than 2026-05-24 09:00 | Дедов В | 2h | 2h |
| 3734 | 14.7 | проверить прибор | 1d? | 2026-05-06 09:00 A | 2026-05-06 18:00 A |  | 100% | start no earlier than 2026-05-06 08:00 | Шуранов Ю | 8h | 8h |
| 3735 | 14.8 | датчик температуры ?? Заявка | 1d? | 2026-04-27 09:00 A | 2026-04-27 18:00 A |  | 100% | start no earlier than 2026-04-27 08:00 | Шуранов Ю | 8h | 8h |
| 3736 | 14.9 | дистилятор отключается ?? Заявка | 1d? | 2026-04-27 09:00 A | 2026-04-27 18:00 A |  | 100% | start no earlier than 2026-04-27 08:00 | Шуранов Ю | 8h | 8h |
| 3737 | 14.10 | перенос старый прибор в архив 5ц | 30min | 2026-04-20 09:00 A | 2026-04-20 09:30 A |  | 100% | start no earlier than 2026-04-20 08:00 | Кладовщики | 0.5h | 0.5h |
| 3738 | 14.11 | замена 2 вентилятора | 4h | 2024-01-16 08:00 A | 2024-01-16 13:00 A |  | 100% | start no earlier than 2024-01-16 08:00 | Бобренок В | 4h | 4h |
| 3739 | 14.12 | ремонт соленоид | 2h | 2024-01-16 08:00 A | 2024-01-16 11:00 A |  | 100% | start no earlier than 2024-01-16 08:00 | Тимофеев В | 2h | 2h |
| 3740 | 14.13 | ремонт вытяжка №2 диагностика вентилятор | 30min | 2024-01-11 08:00 A | 2024-01-11 09:30 A |  | 100% | start no earlier than 2024-01-11 08:00 | Дедов В | 0.5h | 0.5h |
| 3741 | 14.14 | замена насос " агрегат | 1h | 2024-01-11 08:00 A | 2024-01-11 10:00 A |  | 100% | start no earlier than 2024-01-11 08:00 | Дедов В | 1h | 1h |
| 3742 | 14.15 | замена тен по доставке | 2h | 2026-03-17 09:00 A | 2026-03-17 11:00 A |  | 100% | start no earlier than 2026-03-17 09:00 | Макаревич А | 2h | 2h |
| 3743 | 15 | **цех наполнителей** | 194.12d | 2025-07-14 09:00 A | 2026-04-10 10:00 A |  | 100% |  |  | 10h | 10h |
| 3744 | 15.1 | взять со склада АКБ и клеммы заменить на погрузчике, старый АКБ отдать на 2 этаж склад | 1h | 2026-04-10 09:00 A | 2026-04-10 10:00 A |  | 100% | start no earlier than 2026-04-10 09:00 | Тимофеев В | 1h | 1h |
| 3745 | 15.2 | поменять пневмоцилиндр на нотис | 1h | 2026-04-09 09:00 A | 2026-04-09 10:00 A |  | 100% | start no earlier than 2026-04-10 09:00 | Тимофеев В | 1h | 1h |
| 3746 | 15.3 | проверить дист. Воду в АКБ погрузчика | 1h | 2026-04-01 09:00 A | 2026-04-01 10:00 A |  | 100% | start no earlier than 2026-04-01 09:00 | Тимофеев В | 1h | 1h |
| 3747 | 15.4 | просверлить больше, нарезать резьбу для крепления стола запайщика, резьба сорвана | 1h | 2026-03-20 09:00 A | 2026-03-20 10:00 A |  | 100% | start no earlier than 2026-03-20 09:00 | Бундин В | 1h | 1h |
| 3748 | 15.5 | ремонт компрессор. Проверка конденсаторов/не запускается мотор. Ключь у кладовщиков | 4h | 2025-07-14 09:00 A | 2025-07-14 13:00 A |  | 100% | start no earlier than 2025-07-14 09:00 | Бобренок В | 4h | 4h |
| 3749 | 15.6 | ТО компрессор / конвейер / запайщик | 2h | 2026-03-09 09:00 A | 2026-03-09 11:00 A |  | 100% | start no earlier than 2026-03-09 09:00 | Тимофеев В | 2h | 2h |

| ID | WBS | Task | Duration | Start | Finish | Predecessors | Complete | Remaining | Total slack | Constraint | Resources | Work | Actual work |
| --- | --- | --- | --- | --- | --- | --- | --- | --- | --- | --- | --- | --- | --- |
| 3750 | 16 | **офис** | 944.25d? | 2023-03-10 09:00 A | 2026-10-12 11:00 |  | 97% | 26.27d? | 112.34d |  |  | 223.67h | 217.17h |
| 3751 | 16.1 | Кинуть времянку в серверную | 1h | 2026-10-02 09:00 A | 2026-10-02 10:00 A |  | 100% |  |  | start no earlier than 2026-10-02 09:00 | Некрасов А; Труфанов А | 2h | 2h |
| 3752 | 16.2 | монтаж полочка Курдюмова продожить | 1h | 2026-09-22 09:00 A | 2026-09-22 10:00 A |  | 100% |  |  | start no earlier than 2026-09-22 09:00 | Тимофеев В | 1h | 1h |
| 3753 | 16.3 | **Ремонт бойлера** | 13.25d? | 2026-09-08 09:00 A | 2026-09-21 11:00 A |  | 100% |  |  |  |  | 7h | 7h |
| 3754 | 16.3.1 | Заявка тэна | 1d? | 2026-09-08 09:00 A | 2026-09-08 18:00 A |  | 100% |  |  | start no earlier than 2026-09-08 09:00 |  |  |  |
| 3755 | 16.3.2 | контроль доставка | 1d? | 2026-09-14 09:00 A | 2026-09-14 18:00 A |  | 100% |  |  | start no earlier than 2026-09-14 09:00 |  |  |  |
| 3756 | 16.3.3 | Повесить отремонтированный бойлер обратно в офис - проверить работу | 1h | 2026-09-18 09:00 A | 2026-09-18 10:00 A |  | 100% |  |  | start no earlier than 2026-09-18 09:00 | Тимофеев В | 1h | 1h |
| 3757 | 16.3.4 | устранить утечку / монтаж | 2h | 2026-09-21 09:00 A | 2026-09-21 11:00 A |  | 100% |  |  | start no earlier than 2026-09-21 09:00 | Некрасов А; Труфанов А | 4h | 4h |
| 3758 | 16.3.5 | Замена ТЭНа на бойлере, который в слесарке, получить на складе упаковки | 1h | 2026-09-16 09:00 A | 2026-09-16 10:00 A |  | 100% |  |  | start no earlier than 2026-09-16 08:00 | Бундин В | 1h | 1h |
| 3759 | 16.3.6 | Дефектовка бойлера, лежит в слесарке, проверка ТЭНов и анода, показывал кз по тэнам | 1h | 2026-09-14 09:00 A | 2026-09-14 10:00 A |  | 100% |  |  | start no earlier than 2026-09-14 08:00 | Макаревич А | 1h | 1h |
| 3760 | 16.4 | демонтаж шурупы с наличиников | 10min | 2026-07-10 09:00 A | 2026-07-10 09:10 A |  | 100% |  |  | start no earlier than 2026-07-10 09:00 | Тимофеев В | 0.17h | 0.17h |
| 3761 | 16.5 | взять на складе ламочку Е27 малого размера и поменять в муж. Туалете и закрыть плафоном | 1h | 2026-06-29 09:00 A | 2026-06-29 10:00 A |  | 100% |  |  | start no earlier than 2026-06-29 09:00 | Тимофеев В | 1h | 1h |
| 3762 | 16.6 | собрать аккуратно стеллаж для Буслаева (стеллаж на складе у Веры, подписан буквами ГД, мечковская) | 3h | 2026-06-13 09:00 A | 2026-06-15 12:00 A |  | 100% |  |  | start no earlier than 2026-06-13 09:00 | Бобренок В | 3h | 3h |
| 3763 | 16.7 | посмотреть что с розеткой у Ширяевой в кабинете | 1h | 2026-06-22 09:00 A | 2026-06-22 10:00 A |  | 100% |  |  | start no earlier than 2026-06-22 09:00 | Тимофеев В | 1h | 1h |
| 3764 | 16.8 | бухгалтерия настройка язычка двери, что бы дверь закрывалась без усилия | 1h | 2026-05-28 09:00 A | 2026-05-28 10:00 A |  | 100% |  |  | start no earlier than 2026-05-28 09:00 | Тимофеев В | 1h | 1h |
| 3765 | 16.9 | **полка мебельная** | 25.12d | 2026-05-18 09:00 A | 2026-06-22 10:00 A |  | 100% |  |  |  |  | 1.5h | 1.5h |
| 3766 | 16.9.1 | заявка крепеж | 15min | 2026-05-18 09:00 A | 2026-05-18 09:15 A |  | 100% |  |  | start no earlier than 2026-05-18 09:00 | Шуранов Ю | 0.25h | 0.25h |
| 3767 | 16.9.2 | контроль доставка | 15min | 2026-05-27 09:15 A | 2026-05-27 09:30 A | 3766FS+7d | 100% |  |  | start no earlier than 2026-05-15 08:00 | Шуранов Ю | 0.25h | 0.25h |
| 3768 | 16.9.3 | крепеж полки у Юли в кабинете (уголки на складе) | 1h | 2026-06-22 09:00 A | 2026-06-22 10:00 A | 3767 | 100% |  |  | start no earlier than 2026-06-22 09:00 | Тимофеев В | 1h | 1h |
| 3769 | 16.10 | монтаж диплом на стену нач хим лаб | 30min | 2026-05-15 09:00 A | 2026-05-15 09:30 A |  | 100% |  |  | start no earlier than 2026-05-15 09:00 | Тимофеев В | 0.5h | 0.5h |
| 3770 | 16.11 | монтаж розеток в серверной продолжить | 2h | 2026-04-23 09:00 A | 2026-04-23 11:00 A |  | 100% |  |  | start no earlier than 2026-04-23 09:00 | Тимофеев В; Бобренок В | 4h | 4h |
| 3771 | 16.12 | ремонт стул в столовая, спинка | 1h | 2026-04-21 09:00 A | 2026-04-21 10:00 A |  | 100% |  |  | start no earlier than 2026-04-21 09:00 | Тимофеев В | 1h | 1h |
| 3772 | 16.13 | **полочка под пк** | 0.12d | 2026-06-26 09:00 A | 2026-06-26 10:00 A |  | 100% |  |  |  | Тимофеев В | 2h | 2h |
| 3773 | 16.13.1 | замер | 1h | 2026-06-26 09:00 A | 2026-06-26 10:00 A |  | 100% |  |  | start no earlier than 2026-06-26 09:00 | Тимофеев В | 1h | 1h |
| 3774 | 16.14 | прикрутить декоративную пластину на ручке в столовой | 1h | 2026-04-15 09:00 A | 2026-04-15 10:00 A |  | 100% |  |  | start no earlier than 2026-04-17 08:00 | Макаревич А | 1h | 1h |
| 3775 | 16.15 | монтаж розеток 4 шт. в серверной | 2h | 2026-04-15 09:00 A | 2026-04-15 11:00 A |  | 100% |  |  | start no earlier than 2026-04-17 08:00 | Макаревич А | 2h | 2h |
| 3776 | 16.16 | протянуть кабель UTP от кабинета Курдюмовой до переговорки | 2h | 2026-04-17 08:00 A | 2026-04-17 11:00 A |  | 100% |  |  | start no earlier than 2026-04-17 08:00 | Тимофеев В; Некрасов А | 4h | 4h |
| 3777 | 16.17 | убрать шнурок у Курдюмовой в кабинете | 1h | 2026-04-17 08:00 A | 2026-04-17 10:00 A |  | 100% |  |  | start no earlier than 2026-04-17 08:00 | Тимофеев В | 1h | 1h |
| 3778 | 16.18 | ремонт кровля над каб Курдюмовой | 20d | 2026-06-15 09:00 A | 2026-07-10 18:00 A |  | 100% |  |  | start no earlier than 2026-06-15 09:00 | Олег | 160h | 160h |
| 3779 | 16.19 | ремонт крепеж пано каб продаж | 1h | 2026-03-24 08:00 A | 2026-03-24 10:00 A |  | 100% |  |  | start no earlier than 2026-03-24 08:00 | Тимофеев В | 1h | 1h |
| 3780 | 16.20 | крепить розетку для проектора | 2h | 2025-04-09 09:00 A | 2025-04-09 11:00 A |  | 100% |  |  | start no earlier than 2025-04-09 09:00 | Тимофеев В | 2h | 2h |
| 3781 | 16.21 | упорядочить кабеля под тв | 2h | 2025-04-09 09:00 A | 2025-04-09 11:00 A |  | 100% |  |  | start no earlier than 2025-04-09 09:00 | Некрасов А | 2h | 2h |
| 3782 | 16.22 | выбивает автомат у Монича, нет селективности, замена автоматов. Ремонт освещения корридор | 4h | 2026-09-29 09:00 | 2026-09-29 13:00 |  |  |  | 122.09d | start no earlier than 2026-09-29 09:00 | Дедов В | 4h |  |
| 3783 | 16.23 | монтаж ключница для пожарной двери 2 и 3 этаж | 1h | 2026-03-16 09:00 A | 2026-03-16 10:00 A |  | 100% |  |  | start no earlier than 2026-03-16 09:00 | Тимофеев В | 1h | 1h |
| 3784 | 16.24 | замена регистр отопления нач снабжения | 2h | 2026-10-12 09:00 | 2026-10-12 11:00 |  |  |  | 112.34d | start no earlier than 2026-10-12 09:00 | Некрасов А | 2h |  |
| 3785 | 16.25 | сделать заглушки в комнату пищи | 30min | 2026-09-01 09:00 | 2026-09-01 09:30 |  |  |  | 149.53d | start no earlier than 2026-09-01 09:00 | Домоводов К | 0.5h |  |

| ID | WBS | Task | Type | Duration | Start | Finish | Predecessors | Complete | Remaining | Total slack | Free slack | Constraint | Resources | Work | Actual work |
| --- | --- | --- | --- | --- | --- | --- | --- | --- | --- | --- | --- | --- | --- | --- | --- |
| 3786 | 16.26 | **вентиляция в переговорке и к приема пищи** |  | 812d? | 2023-03-10 09:00 A | 2026-04-20 18:00 A |  | 100% |  |  |  |  |  | 17h | 17h |
| 3787 | 16.26.1 | взять на желтом складе (наша половина) вентилятор канальный и проверить работает или нет |  | 1h | 2023-03-10 09:00 A | 2023-03-10 10:00 A |  | 100% |  |  |  |  | Бундин В | 1h | 1h |
| 3788 | 16.26.2 | заявка на КП = 300к |  | 4h | 2026-03-13 09:00 A | 2026-03-13 13:00 A |  | 100% |  |  |  | start no earlier than 2026-03-13 09:00 | Домоводов К | 4h | 4h |
| 3789 | 16.26.3 | монтаж ВК200 + кабель |  | 6h | 2026-04-20 09:00 A | 2026-04-20 16:00 A |  | 100% |  |  |  | start no earlier than 2026-04-20 08:00 | Некрасов А; Труфанов А | 12h | 12h |
| 3790 | 16.26.4 | установка на крыше офиса, приточка в переговорку |  | 1d? | 2026-04-20 09:00 A | 2026-04-20 18:00 A |  | 100% |  |  |  | start no earlier than 2026-04-20 09:00 |  |  |  |
| 3791 | 16.27 | **подсветка продукции в пепреговорке вращающийся лаезерный круг с эмблемой** |  | 0.12d | 2026-03-13 09:00 A | 2026-03-13 10:00 A |  | 100% |  |  |  |  |  | 1h | 1h |
| 3792 | 16.27.1 | найти поставщика / узнать стоимость |  | 1h | 2026-03-13 09:00 A | 2026-03-13 10:00 A |  | 100% |  |  |  | start no earlier than 2026-03-13 09:00 | Зорькин В | 1h | 1h |
| 3793 | 17 | **склад упаковки** |  | 180.12d? | 2026-04-02 09:00 A | 2026-11-23 10:00 |  | 99% | 0.24d? | 77.47d |  |  |  | 400.75h | 400.25h |
| 3794 | 17.1 | На желтом складе наведение порядка. Всю вентиляцию утащить на синий склад. | manual | 2h | 2026-11-21 09:00 A | 2026-11-21 11:00 A |  | 100% |  |  |  | start no earlier than 2026-11-21 09:00 | Тимофеев В | 2h | 2h |
| 3795 | 17.2 | **ремонт роль ворот** |  | 8.12d | 2026-11-13 09:00 A | 2026-11-23 10:00 |  | 67% | 2.71d | 77.47d |  |  |  | 1.5h | 1h |
| 3796 | 17.2.1 | заявка ролик |  | 15min | 2026-11-13 09:00 | 2026-11-13 09:15 |  |  |  | 78.53d | 0d | start no earlier than 2026-11-13 09:00 | Домоводов К | 0.25h |  |
| 3797 | 17.2.2 | контроль доставка |  | 15min | 2026-11-20 09:15 | 2026-11-20 09:30 | 3796FS+7d |  |  | 78.53d |  | start no earlier than 2026-11-09 08:00 | Зорькин В | 0.25h |  |
| 3798 | 17.2.3 | замена |  | 1h | 2026-11-23 09:00 A | 2026-11-23 10:00 A | 3797FS+1d | 100% |  |  |  | start no earlier than 2026-11-27 09:00 | Тимофеев В | 1h | 1h |
| 3799 | 17.3 | Замена терморегулятора о котором ты мне говорил на болере склада упаковки, новые должны быть на складе, если нет, снять со старого в контейнере | manual | 2h | 2026-10-11 09:00 A | 2026-10-11 11:00 A |  | 100% |  |  |  | start no earlier than 2026-10-11 09:00 | Бобренок В | 2h | 2h |
| 3800 | 17.4 | Установить новый бойлер, старый на ремонт в слесарку |  | 30min | 2026-10-08 09:00 A | 2026-10-08 09:30 A |  | 100% |  |  |  | start no earlier than 2026-10-08 08:00 | Бобренок В | 0.5h | 0.5h |
| 3801 | 17.5 | Повесить доп светильники 3 шт (спросить у Лехи, где нужны) |  | 3h | 2026-10-02 09:00 A | 2026-10-02 12:00 A |  | 100% |  |  |  | start no earlier than 2026-10-02 09:00 | Труфанов А; Некрасов А | 6h | 6h |
| 3802 | 17.6 | переделать крепление рамы наруж блока - к МК здания, анкера убрать |  | 4h | 2026-10-07 09:00 A | 2026-10-07 13:00 A |  | 100% |  |  |  | start no earlier than 2026-10-07 09:00 | Некрасов А; Труфанов А | 8h | 8h |
| 3803 | 17.7 | установить светильники над столом Веры и перенести светильник над стеллажами |  | 3h | 2026-08-25 09:00 A | 2026-08-25 12:00 A |  | 100% |  |  |  | start no earlier than 2026-08-25 09:00 | Тимофеев В; Некрасов А | 6h | 6h |
| 3804 | 17.8 | втягиваем кабель 5х4 от реф, для подключения кондиционера, место установки щитка покажу- подключаем кондиционер |  | 1d? | 2026-07-31 08:00 A | 2026-07-31 18:00 A |  | 100% |  |  |  | start no earlier than 2026-07-31 08:00 | Труфанов А; Бобренок В | 16h | 16h |
| 3805 | 17.9 | сделать акты списания по результатам инвентаризации |  | 1d? | 2026-06-22 09:00 A | 2026-06-22 18:00 A |  | 100% |  |  |  | start no earlier than 2026-06-22 09:00 | Шуранов Ю | 8h | 8h |
| 3806 | 17.10 | **установить бойлер** |  | 92.12d | 2026-06-01 09:00 A | 2026-09-28 10:00 A |  | 100% |  |  |  |  |  | 13h | 13h |
| 3807 | 17.10.1 | Замена тэна на бойлере |  | 1h | 2026-09-28 09:00 A | 2026-09-28 10:00 A |  | 100% |  |  |  | start no earlier than 2026-09-28 08:00 | Бобренок В | 1h | 1h |
| 3808 | 17.10.2 | монтаж кабель + розетка с щитка 1 этажа на 2 этаж |  | 4h | 2026-06-03 09:00 A | 2026-06-03 13:00 A |  | 100% |  |  |  | start no earlier than 2026-06-03 09:00 | Некрасов А; Бундин В | 8h | 8h |
| 3809 | 17.10.3 | монтаж бойлер на стену |  | 2h | 2026-06-01 09:00 A | 2026-06-01 11:00 A | 3808 | 100% |  |  |  | start no earlier than 2026-06-01 09:00 | Тимофеев В | 2h | 2h |
| 3810 | 17.10.4 | подключение сантехника |  | 2h | 2026-06-16 09:00 A | 2026-06-16 11:00 A | 3809 | 100% |  |  |  | start no earlier than 2026-06-16 09:00 | Тимофеев В | 2h | 2h |
| 3811 | 17.11 | отремонтировать ручку на входной двери |  | 1h | 2026-05-16 09:00 A | 2026-05-18 10:00 A |  | 100% |  |  |  | start no earlier than 2026-05-16 09:00 |  |  |  |

| ID | WBS | Task | Type | Duration | Start | Finish | Predecessors | Complete | Remaining | Total slack | Free slack | Constraint | Resources | Work | Actual work |
| --- | --- | --- | --- | --- | --- | --- | --- | --- | --- | --- | --- | --- | --- | --- | --- |
| 3812 | 17.12 | **анкерить стеллажи** |  | 26d | 2026-05-15 09:00 A | 2026-06-21 13:00 A |  | 100% |  |  |  |  |  | 4.75h | 4.75h |
| 3813 | 17.12.1 | заявка анкеры |  | 30min | 2026-05-15 09:00 A | 2026-05-15 09:30 A |  | 100% |  |  |  | start no earlier than 2026-05-15 09:00 | Шуранов Ю | 0.5h | 0.5h |
| 3814 | 17.12.2 | контроль доставка |  | 15min | 2026-05-27 09:30 A | 2026-05-27 09:45 A | 3813FS+10d | 100% |  |  |  | start no earlier than 2026-05-14 08:00 | Шуранов Ю | 0.25h | 0.25h |
| 3815 | 17.12.3 | монтаж / указать доделать оставшиеся анкера | manual | 4h | 2026-06-21 09:00 A | 2026-06-21 13:00 A | 3814 | 100% |  |  |  | start no earlier than 2026-06-21 09:00 | Бундин В | 4h | 4h |
| 3816 | 17.13 | заменить тросик на воротах |  | 2h | 2026-04-29 09:00 A | 2026-04-29 11:00 A |  | 100% |  |  |  | start no earlier than 2026-04-29 09:00 | Тимофеев В; Бундин В | 4h | 4h |
| 3817 | 17.14 | **замена двери** |  | 40.12d? | 2026-04-02 09:00 A | 2026-05-28 10:00 A |  | 100% |  |  |  |  |  | 329h | 329h |
| 3818 | 17.14.1 | заказ замерщика / получить счет |  | 1h | 2026-04-02 09:00 A | 2026-04-02 10:00 A |  | 100% |  |  |  | start no earlier than 2026-04-02 08:00 | Домоводов К | 1h | 1h |
| 3819 | 17.14.2 | изготовление |  | 40d | 2026-04-02 10:00 A | 2026-05-28 10:00 A | 3818 | 100% |  |  |  | start no earlier than 2026-04-02 08:00 | Подрядчик | 320h | 320h |
| 3820 | 17.14.3 | замена |  | 1d? | 2026-05-19 10:00 A | 2026-05-20 10:00 A | 3819 | 100% |  |  |  | start no earlier than 2026-04-02 08:00 | Подрядчик | 8h | 8h |
| 3821 | 18 | **РЭФ контейнеры** |  | 217.59d? | 2026-05-28 09:00 A | 2027-03-10 14:45 |  | 15% | 185.84d? | 0d |  |  |  | 66.25h | 13.5h |
| 3822 | 18.1 | уложить палеты в проходе к площадке / вырубить кусты с дворником |  | 1h | 2026-05-28 09:00 A | 2026-05-28 10:00 A |  | 100% |  |  |  | start no earlier than 2026-05-28 09:00 | Некрасов А; Бобренок В | 1h | 1h |
| 3823 | 18.2 | монтаж площадка обслуживания внешнего блока. 4 стойки труба 100 + лист 5 |  | 7h | 2026-05-28 09:00 A | 2026-05-28 17:00 A |  | 100% |  |  |  | start no earlier than 2026-05-28 09:00 | Некрасов А; Бобренок В | 12h | 12h |
| 3824 | 18.3 | **ремонт сплит система холодильная камера №1** |  | 27.12d | 2026-08-12 09:00 A | 2026-09-15 10:00 |  | 40% | 16.27d | 136.47d |  |  |  | 1.25h | 0.5h |
| 3825 | 18.3.1 | отправить фото участка |  | 15min | 2026-08-12 09:00 A | 2026-08-12 09:15 A |  | 100% |  |  |  | start no earlier than 2026-08-12 09:00 | Домоводов К | 0.25h | 0.25h |
| 3826 | 18.3.2 | получить счет на ремонт |  | 15min | 2026-09-08 09:00 A | 2026-09-08 09:15 A |  | 100% |  |  |  | start no earlier than 2026-09-08 09:00 | Домоводов К | 0.25h | 0.25h |
| 3827 | 18.3.3 | оплата |  | 15min | 2026-09-09 09:15 | 2026-09-09 09:30 | 3826FS+1d |  |  | 136.47d | 0d | start no earlier than 2026-09-09 09:00 | Домоводов К | 0.25h |  |
| 3828 | 18.3.4 | контроль даты ремонта |  | 15min | 2026-09-14 09:30 | 2026-09-14 09:45 | 3827FS+5d |  |  | 136.47d | 0d | start no earlier than 2026-08-10 08:00 | Зорькин В | 0.25h |  |
| 3829 | 18.3.5 | приемка работ |  | 15min | 2026-09-15 09:45 | 2026-09-15 10:00 | 3828FS+1d |  |  | 136.47d |  | start no earlier than 2026-08-10 08:00 | Зорькин В | 0.25h |  |
| 3830 | 18.4 | **монтаж холодильной машины №2** |  | 6.59d? | 2027-03-02 09:00 | 2027-03-10 14:45 |  |  |  | 0d |  |  |  | 45h |  |
| 3831 | 18.4.1 | решение какую ставить машину - на весну |  | 30min | 2027-03-02 09:00 | 2027-03-02 09:30 |  |  |  | 0d |  | start no earlier than 2027-03-02 09:00 | Домоводов К | 0.5h |  |
| 3832 | 18.4.2 | заключение договор |  | 3d | 2027-03-02 09:30 | 2027-03-05 09:30 | 3831 |  |  | 0d |  | start no earlier than 2026-08-12 09:00 | Домоводов К | 24h |  |
| 3833 | 18.4.3 | оплата |  | 15min | 2027-03-08 09:30 | 2027-03-08 09:45 | 3832FS+1d |  |  | 0d |  | start no earlier than 2026-08-18 09:00 | Домоводов К | 0.25h |  |
| 3834 | 18.4.4 | контроль доставки , начала работ |  | 1d? | 2027-03-08 09:45 | 2027-03-09 09:45 | 3833 |  |  | 0d |  | start no earlier than 2026-08-10 08:00 | Зорькин В | 8h |  |
| 3835 | 18.4.5 | **монтаж кабель силовой** |  | 0.5d | 2027-03-09 09:45 | 2027-03-09 14:45 | 3834 |  |  | 0d |  |  |  | 4.25h |  |
| 3836 | 18.4.5.1 | проверка поставки |  | 15min | 2027-03-09 09:45 | 2027-03-09 10:00 |  |  |  | 0.47d |  | start no earlier than 2026-08-10 08:00 | Зорькин В | 0.25h |  |
| 3837 | 18.4.5.2 | монтаж |  | 4h | 2027-03-09 09:45 | 2027-03-09 14:45 |  |  |  | 0d |  | start no earlier than 2026-08-10 08:00 | Некрасов А | 4h |  |
| 3838 | 18.4.6 | монтаж |  | 1d? | 2027-03-09 14:45 | 2027-03-10 14:45 | 3835 |  |  | 0d |  | start no earlier than 2026-08-10 08:00 | Подрядчик | 8h |  |

| ID | WBS | Task | Type | Duration | Start | Finish | Predecessors | Complete | Remaining | Total slack | Free slack | Constraint | Resources | Work | Actual work |
| --- | --- | --- | --- | --- | --- | --- | --- | --- | --- | --- | --- | --- | --- | --- | --- |
| 3839 | 18.5 | **утепление контейнера №2 под рефрежератор** |  | 0.5d | 2026-08-21 09:00 | 2026-08-21 13:00 |  |  |  | 0d |  |  |  | 7h |  |
| 3840 | 18.5.1 | продолжить выравнивание пены по периметру ножовкой для будующей установки профлиста (задание, если нечем заняться) | manual | 2h | 2026-08-21 09:00 | 2026-08-21 11:00 |  |  |  |  |  | start no earlier than 2026-08-21 09:00 | Некрасов А; Дедов В | 4h |  |
| 3841 | 18.5.2 | установка профлиста |  | 2h | 2026-08-21 11:00 | 2026-08-21 13:00 | 3840 |  |  | 156.09d |  | start no earlier than 2026-08-11 09:00 | Некрасов А; Дедов В | 3h |  |
| 3842 | 19 | **обучение** |  | 655d? | 2024-05-14 09:00 A | 2026-11-03 18:00 |  | 45% | 359.51d? | 94.59d |  |  |  | 138h | 65h |
| 3843 | 19.1 | Оперативные работы/ принятие заявок на производстве |  | 1d? | 2026-11-03 09:00 | 2026-11-03 18:00 |  |  |  | 94.59d |  | start no earlier than 2026-11-03 09:00 | Николаев | 8h |  |
| 3844 | 19.2 | **инструкция управлления дозаций жира** |  | 1.5d | 2026-09-09 09:00 | 2026-09-10 13:00 |  |  |  | 141.09d |  |  |  | 12h |  |
| 3845 | 19.2.1 | подготовка гидравлической и функциональной схем системы |  | 4h | 2026-09-09 09:00 | 2026-09-09 13:00 |  |  |  | 141.09d | 0d | start no earlier than 2026-09-09 09:00 | Зорькин В | 4h |  |
| 3846 | 19.2.2 | описание принципов регулирования |  | 4h | 2026-09-09 14:00 | 2026-09-09 18:00 | 3845 |  |  | 141.09d | 0d | start no earlier than 2026-08-31 09:00 | Зорькин В | 4h |  |
| 3847 | 19.2.3 | пошаговый алогритм действий по операциям замена фильтров, остановка пуск, настройка режимов |  | 4h | 2026-09-10 09:00 | 2026-09-10 13:00 | 3846 |  |  | 141.09d |  | start no earlier than 2026-08-31 09:00 | Зорькин В | 4h |  |
| 3848 | 19.3 | настройка и ремонты упаковщиков |  | 1h | 2026-02-27 09:00 A | 2026-02-27 10:00 A |  | 100% |  |  |  | start no earlier than 2026-02-27 08:00 | Труфанов А; Бундин В | 2h | 2h |
| 3849 | 19.4 | подготовить памятку по чистке ножа для бестром |  | 4h | 2026-09-04 09:00 A | 2026-09-04 13:00 A |  | 100% |  |  |  | start no earlier than 2026-09-04 09:00 | Зорькин В | 4h | 4h |
| 3850 | 19.5 | бестром |  | 2h | 2025-09-02 09:00 A | 2025-09-02 11:00 A |  | 100% |  |  |  | start no earlier than 2025-09-02 09:00 | Труфанов А; Зорькин В | 4h | 4h |
| 3851 | 19.6 | квадропак |  | 2h | 2025-09-02 11:00 A | 2025-09-02 13:00 A | 3850 | 100% |  |  |  | start no earlier than 2025-09-02 09:00 | Труфанов А; Зорькин В | 4h | 4h |
| 3852 | 19.7 | инструкция парогенератор управление по датчику давления |  | 4h | 2025-01-16 09:00 A | 2025-01-16 13:00 A |  | 100% |  |  |  | start no earlier than 2025-01-16 09:00 | Зорькин В | 4h | 4h |
| 3853 | 19.8 | инструкция по работе на теко 1.5 новый |  | 2d | 2025-01-17 09:00 A | 2025-01-20 18:00 A | 3852 | 100% |  |  |  | start no earlier than 2025-01-17 09:00 | Зорькин В | 16h | 16h |
| 3854 | 19.9 | инструкция ремонт запайщика |  | 1d? | 2025-01-17 09:00 A | 2025-01-17 18:00 A |  | 100% |  |  |  | start no earlier than 2025-01-17 09:00 | Зорькин В | 8h | 8h |
| 3855 | 19.10 | Составить список ЗИП - ежедневно вносить приход / расход |  | 1h | 2024-05-14 09:00 | 2024-05-14 10:00 |  |  |  | 749.47d |  | start no earlier than 2024-05-14 09:00 | Шуранов Ю | 1h |  |
| 3856 | 19.11 | составить инструкцию по затягиванию фильеры и соосности муфты |  | 4h | 2024-05-14 09:00 | 2024-05-14 13:00 |  |  |  | 749.09d |  | start no earlier than 2024-05-14 09:00 | Шуранов Ю | 4h |  |
| 3857 | 19.12 | составитьт инструкцию настройка бестром - формирование шва |  | 4h | 2024-05-14 09:00 | 2024-05-14 13:00 |  |  |  | 749.09d |  | start no earlier than 2024-05-14 09:00 | Шуранов Ю | 4h |  |
| 3858 | 19.13 | составитьт инструкцию настройка бестром - заправка ленты зип лок |  | 4h | 2024-05-14 09:00 | 2024-05-14 13:00 |  |  |  | 749.09d |  | start no earlier than 2024-05-14 09:00 | Шуранов Ю | 4h |  |
| 3859 | 19.14 | **формирование шаблона настройки оборудования** |  | 4d | 2024-09-06 09:00 A | 2024-09-11 18:00 A |  | 100% |  |  |  |  |  | 21h | 21h |
| 3860 | 19.14.1 | **БЕСТРОМ** |  | 2.25d | 2024-09-06 09:00 A | 2024-09-10 11:00 A |  | 100% |  |  |  |  |  | 7h | 7h |
| 3861 | 19.14.1.1 | определить базовые точки относительно которых будет проводится замер в 3х плоскостях - флажки верх, флажки низ, смыкание ножа, центр трубы |  | 1h | 2024-09-06 09:00 A | 2024-09-06 10:00 A |  | 100% |  |  |  | start no earlier than 2024-09-06 08:00 | Зорькин В | 1h | 1h |
| 3862 | 19.14.1.2 | обвести в PAINT фото методику измерений, присвоить \имя каждому размеру |  | 2h | 2024-09-06 10:00 A | 2024-09-06 12:00 A | 3861 | 100% |  |  |  | start no earlier than 2024-09-06 09:00 | Зорькин В | 2h | 2h |
| 3863 | 19.14.1.3 | создать карту / таблицу настройки. Размер-дата-фио |  | 2h | 2024-09-09 09:00 A | 2024-09-09 11:00 A | 3862 | 100% |  |  |  | start no earlier than 2024-09-09 09:00 | Зорькин В | 2h | 2h |
| 3864 | 19.14.1.4 | оформить ведение карты в журнал |  | 2h | 2024-09-10 09:00 A | 2024-09-10 11:00 A | 3863 | 100% |  |  |  | start no earlier than 2024-09-10 09:00 | Зорькин В | 2h | 2h |

| ID | WBS | Task | Duration | Start | Finish | Predecessors | Complete | Remaining | Total slack | Constraint | Resources | Work | Actual work |
| --- | --- | --- | --- | --- | --- | --- | --- | --- | --- | --- | --- | --- | --- |
| 3865 | 19.14.2 | **ТЕКО 1.5** | 0.88d | 2024-09-10 11:00 A | 2024-09-11 10:00 A | 3860 | 100% |  |  |  |  | 7h | 7h |
| 3866 | 19.14.2.1 | определить базовые точки относительно которых будет проводится замер в 3х плоскостях - флажки верх, флажки низ, смыкание ножа, центр трубы | 1h | 2024-09-10 11:00 A | 2024-09-10 12:00 A |  | 100% |  |  | start no earlier than 2024-09-10 09:00 | Зорькин В | 1h | 1h |
| 3867 | 19.14.2.2 | обвести в PAINT фото методику измерений, присвоить \имя каждому размеру | 2h | 2024-09-10 12:00 A | 2024-09-10 15:00 A | 3866 | 100% |  |  | start no earlier than 2024-09-06 08:00 | Зорькин В | 2h | 2h |
| 3868 | 19.14.2.3 | создать карту / таблицу настройки. Размер-дата-фио | 2h | 2024-09-10 15:00 A | 2024-09-10 17:00 A | 3867 | 100% |  |  | start no earlier than 2024-09-06 08:00 | Зорькин В | 2h | 2h |
| 3869 | 19.14.2.4 | оформить ведение карты в журнал | 2h | 2024-09-10 17:00 A | 2024-09-11 10:00 A | 3868 | 100% |  |  | start no earlier than 2024-09-06 08:00 | Зорькин В | 2h | 2h |
| 3870 | 19.14.3 | **ТЕКО 0,4** | 0.88d | 2024-09-11 10:00 A | 2024-09-11 18:00 A | 3865 | 100% |  |  |  |  | 7h | 7h |
| 3871 | 19.14.3.1 | определить базовые точки относительно которых будет проводится замер в 3х плоскостях - флажки верх, флажки низ, смыкание ножа, центр трубы | 1h | 2024-09-11 10:00 A | 2024-09-11 11:00 A |  | 100% |  |  | start no earlier than 2024-09-06 08:00 | Зорькин В | 1h | 1h |
| 3872 | 19.14.3.2 | обвести в PAINT фото методику измерений, присвоить \имя каждому размеру | 2h | 2024-09-11 11:00 A | 2024-09-11 13:00 A | 3871 | 100% |  |  | start no earlier than 2024-09-06 08:00 | Зорькин В | 2h | 2h |
| 3873 | 19.14.3.3 | создать карту / таблицу настройки. Размер-дата-фио | 2h | 2024-09-11 14:00 A | 2024-09-11 16:00 A | 3872 | 100% |  |  | start no earlier than 2024-09-06 08:00 | Зорькин В | 2h | 2h |
| 3874 | 19.14.3.4 | оформить ведение карты в журнал | 2h | 2024-09-11 16:00 A | 2024-09-11 18:00 A | 3873 | 100% |  |  | start no earlier than 2024-09-06 08:00 | Зорькин В | 2h | 2h |
| 3875 | 19.15 | **наполнение базы данных по занятиям, запись видео уроки** | 5.12d | 2024-09-09 09:00 A | 2024-09-16 10:00 |  | 5% | 4.88d | 660.47d |  |  | 42h | 2h |
| 3876 | 19.15.1 | заяавка фотокамера, штатив | 1h | 2024-09-09 09:00 A | 2024-09-09 10:00 A |  | 100% |  |  | start no earlier than 2024-09-09 09:00 | Зорькин В | 1h | 1h |
| 3877 | 19.15.2 | доставка | 5d | 2024-09-09 10:00 | 2024-09-16 10:00 | 3876 |  |  | 660.47d | start no earlier than 2024-09-06 08:00 | Мультан | 40h |  |
| 3878 | 19.15.3 | **Бестром** | 0.12d | 2024-09-16 09:00 A | 2024-09-16 10:00 A |  | 100% |  |  |  |  | 1h | 1h |
| 3879 | 19.15.3.1 | урок 1 | 1h | 2024-09-16 09:00 A | 2024-09-16 10:00 A | 3877 | 100% |  |  | start no earlier than 2024-09-16 09:00 | Зорькин В | 1h | 1h |
| 3880 | 20 | **администрантивные** | 243d? | 2026-03-19 09:00 A | 2027-02-03 18:00 |  | 92% | 20.26d? | 24.59d |  |  | 130.92h | 120.92h |
| 3881 | 20.1 | Проведение повторного инструктажа с росписью в журнал | 1d? | 2027-02-03 09:00 | 2027-02-03 18:00 |  |  |  | 24.59d | start no earlier than 2027-02-03 09:00 | Зорькин В | 8h |  |
| 3882 | 20.2 | инвентаризация | 1d? | 2026-11-25 09:00 A | 2026-11-25 18:00 A |  | 100% |  |  | start no earlier than 2026-11-25 09:00 | Зорькин В; Труфанов А | 16h | 16h |
| 3883 | 20.3 | Проведение экзамена Николаеву Юре на предмет понимания и знания технологического оборудования на предприятии. Где что включается, выключается, как производится ремонт, принцип работы. Где проложены основные магистрали Электроснабжения и водоснабжения | 1h | 2026-11-17 09:00 A | 2026-11-17 10:00 A |  | 100% |  |  | start no earlier than 2026-11-17 08:00 | Макаревич А | 1h | 1h |
| 3884 | 20.4 | Установить ящики желаний (узнавать места размещений у Кости) | 2h | 2026-11-16 09:00 A | 2026-11-16 11:00 A |  | 100% |  |  | start no earlier than 2026-11-16 09:00 | Труфанов А; Некрасов А | 4h | 4h |
| 3885 | 20.5 | Контроль монтажа по водоподготовке в 1 цеху, проверить материалы | 1h | 2026-10-28 09:00 A | 2026-10-28 10:00 A |  | 100% |  |  | start no earlier than 2026-10-28 09:00 | Труфанов А; Некрасов А | 2h | 2h |
| 3886 | 20.6 | спсиание материалов | 6h | 2026-09-01 09:00 A | 2026-09-01 16:00 A |  | 100% |  |  | start no earlier than 2026-09-01 09:00 | Шуранов Ю | 6h | 6h |
| 3887 | 20.7 | составить список остатков шнеков в таблицу зип | 2h | 2026-09-01 09:00 A | 2026-09-01 11:00 A |  | 100% |  |  | start no earlier than 2026-09-01 09:00 | Шуранов Ю | 2h | 2h |
| 3888 | 20.8 | подготовить спсток перчаток | 3h | 2026-03-19 09:00 A | 2026-03-19 12:00 A |  | 100% |  |  | start no earlier than 2026-03-19 08:00 | Зорькин В | 3h | 3h |
| 3889 | 20.9 | подготовка данных дебеторская задолжность | 3h | 2026-03-19 09:00 A | 2026-03-19 12:00 A |  | 100% |  |  | start no earlier than 2026-03-19 08:00 | Зорькин В | 3h | 3h |
| 3890 | 20.10 | договор по ремонту стиральных машинок. Переговоры | 1h | 2026-09-01 09:00 A | 2026-09-01 10:00 A |  | 100% |  |  | start no earlier than 2026-09-01 09:00 | Шуранов Ю | 1h | 1h |
| 3891 | 20.11 | Составить список на год ППР (планово-предупредительные работы) на оборудовании Цеха №1, Цеха №2, Цеха навесок. | 2h | 2026-09-01 09:00 | 2026-09-01 11:00 |  |  |  | 149.34d | start no earlier than 2026-09-01 09:00 | Шуранов Ю | 2h |  |

| ID | WBS | Task | Type | Duration | Start | Finish | Predecessors | Complete | Remaining | Total slack | Free slack | Constraint | Resources | Work | Actual work |
| --- | --- | --- | --- | --- | --- | --- | --- | --- | --- | --- | --- | --- | --- | --- | --- |
| 3892 | 20.12 | **Ключи на шкафы** |  | 111.25d | 2026-04-16 09:00 A | 2026-09-15 11:00 A |  | 100% |  |  |  |  |  | 82.75h | 82.75h |
| 3893 | 20.12.1 | Заказать |  | 30min | 2026-04-16 09:00 A | 2026-04-16 09:30 A |  | 100% |  |  |  | start no earlier than 2026-04-16 09:00 | Зорькин В | 0.5h | 0.5h |
| 3894 | 20.12.2 | доставить |  | 10d | 2026-04-16 09:30 A | 2026-04-30 09:30 A | 3893 | 100% |  |  |  | start no earlier than 2026-04-14 09:00 | Карабанов | 80h | 80h |
| 3895 | 20.12.3 | контроль доставка |  | 15min | 2026-05-15 09:00 A | 2026-05-15 09:15 A |  | 100% |  |  |  | start no earlier than 2026-05-15 09:00 | Зорькин В | 0.25h | 0.25h |
| 3896 | 20.12.4 | Повешать на веревочку ключи на все шкафы ВРУ и электрощитки (ключи на складе, веревочки взять на производстве, нитки) |  | 2h | 2026-09-15 09:00 A | 2026-09-15 11:00 A | 3894 | 100% |  |  |  | start no earlier than 2026-09-15 09:00 | Бобренок В | 2h | 2h |
| 3897 | 20.13 | Расписаться в нашем кабинете |  | 10min | 2026-07-28 09:00 A | 2026-07-28 09:10 A |  | 100% |  |  |  | start no earlier than 2026-07-28 09:00 | Макаревич А | 0.17h | 0.17h |
| 3898 | 21 | **ТБ** |  | 933.25d? | 2023-06-06 09:00 A | 2026-12-15 11:00 |  | 39% | 569.36d? | 61.34d |  |  |  | 249.92h | 96.67h |
| 3899 | 21.1 | инструктаж по ТБ оформить |  | 1h | 2026-08-31 09:00 | 2026-08-31 10:00 |  |  |  | 150.47d |  | start no earlier than 2026-08-31 09:00 | Шуранов Ю | 1h |  |
| 3900 | 21.2 | выполнить перелкаду похарных шлангов офис, 1ц |  | 2h | 2026-12-15 09:00 | 2026-12-15 11:00 |  |  |  | 61.34d |  | start no earlier than 2026-12-15 09:00 | Некрасов А; Труфанов А | 4h |  |
| 3901 | 21.3 | маркировка лестниц / оформление журналов |  | 2h | 2026-08-31 09:00 | 2026-08-31 11:00 |  |  |  | 150.34d |  | start no earlier than 2026-08-31 09:00 | Шуранов Ю | 2h |  |
| 3902 | 21.4 | внеплановый инструктаж персонала при аварии на проризводстве |  | 2h | 2025-03-26 09:00 A | 2025-03-26 11:00 A |  | 100% |  |  |  | start no earlier than 2025-03-26 08:00 | Шуранов Ю | 2h | 2h |
| 3903 | 21.5 | заявка на табличики НЕ ВКЛЮЧАТЬ |  | 10min | 2025-03-26 09:00 A | 2025-03-26 09:10 A |  | 100% |  |  |  | start no earlier than 2025-03-26 08:00 | Шуранов Ю | 0.17h | 0.17h |
| 3904 | 21.6 | офорить наряд допуск на монтаж кабеля КПП |  | 30min | 2024-08-05 09:00 A | 2024-08-05 09:30 A |  | 100% |  |  |  | start no earlier than 2024-08-05 09:00 | Шуранов Ю | 0.5h | 0.5h |
| 3905 | 21.7 | составить схемы кабельных линий по производству |  | 5d | 2026-09-01 09:00 | 2026-09-05 18:00 |  |  |  | 144.59d |  | start no earlier than 2026-09-01 09:00 | Шуранов Ю | 40h |  |
| 3906 | 21.8 | организация аттестации электроперсонала |  | 10d | 2024-05-14 09:00 A | 2024-05-27 18:00 A |  | 100% |  |  |  | start no earlier than 2024-05-14 09:00 | Шуранов Ю | 80h | 80h |
| 3907 | 21.9 | расклеить таблички на стремянки |  | 1h | 2023-10-18 09:00 A | 2023-10-18 10:00 A |  | 100% |  |  |  | start no earlier than 2023-10-18 09:00 | Тимофеев В | 1h | 1h |
| 3908 | 21.10 | вести журнал учета такелажных средств, механизмов и приспособлений |  | 1h | 2026-09-01 09:00 | 2026-09-01 10:00 |  |  |  | 149.47d |  | start no earlier than 2026-09-01 09:00 | Шуранов Ю | 1h |  |
| 3909 | 21.11 | комплект сиз для высотных работ |  | 1h | 2023-06-09 09:00 A | 2023-06-09 10:00 A |  | 100% |  |  |  | start no earlier than 2023-06-09 09:00 | Лобанов И | 1h | 1h |
| 3910 | 21.12 | тестер индикторная отвертка |  | 1h | 2024-05-14 09:00 A | 2024-05-14 10:00 A |  | 100% |  |  |  | start no earlier than 2024-05-14 09:00 | Шуранов Ю | 1h | 1h |
| 3911 | 21.13 | заявка на диэл коврик, галоши, перчатки, маска, таблички |  | 1h | 2026-09-01 09:00 | 2026-09-01 10:00 |  |  |  | 149.47d |  | start no earlier than 2026-09-01 09:00 | Шуранов Ю | 1h |  |
| 3912 | 21.14 | заявка спецодежда наладчикам |  | 1d? | 2024-05-14 09:00 A | 2024-05-14 18:00 A |  | 100% |  |  |  | start no earlier than 2024-05-14 09:00 | Шуранов Ю | 8h | 8h |
| 3913 | 21.15 | аттестация охрана труда |  | 10d | 2024-05-14 09:00 | 2024-05-27 18:00 |  |  |  | 739.59d |  | start no earlier than 2024-05-14 09:00 | Шуранов Ю | 80h |  |
| 3914 | 21.16 | **испытание стеллажей** |  | 847d? | 2023-06-06 09:00 A | 2026-09-02 18:00 |  | 11% | 753.75d? | 147.59d |  |  |  | 27.25h | 3h |
| 3915 | 21.16.1 | оплата испытания стеллажей контроль | milestone | 0d | 2023-06-06 09:00 A | 2023-06-06 09:00 A |  | 100% |  |  |  | start no earlier than 2023-06-06 09:00 | Домоводов К |  |  |
| 3916 | 21.16.2 | орг испытание стеллажей |  | 1h | 2023-07-11 09:00 A | 2023-07-11 10:00 A |  | 100% |  |  |  | start no earlier than 2023-07-11 09:00 | Домоводов К | 1h | 1h |
| 3917 | 21.16.3 | график осмотров стеллажей |  | 1d? | 2026-08-31 09:00 | 2026-08-31 18:00 | 3915 |  |  | 147.59d | 0d | start no earlier than 2026-08-31 09:00 | Домоводов К | 8h |  |
| 3918 | 21.16.4 | табличка КП |  | 1d? | 2026-09-01 09:00 | 2026-09-01 18:00 | 3917 |  |  | 147.59d | 0d | start no earlier than 2023-04-27 08:00 | Домоводов К | 8h |  |
| 3919 | 21.16.5 | журнал технического освидетельствования стеллажей |  | 1d? | 2026-09-02 09:00 | 2026-09-02 18:00 | 3918 |  |  | 147.59d |  | start no earlier than 2023-04-27 08:00 | Домоводов К | 8h |  |
| 3920 | 21.16.6 | запрос стоимости ремонта стеллажей в 5ц |  | 2h | 2026-08-18 09:00 A | 2026-08-18 11:00 A |  | 100% |  |  |  | start no earlier than 2026-08-18 09:00 | Шуранов Ю | 2h | 2h |
| 3921 | 21.16.7 | контрольизг |  | 15min | 2026-08-27 09:00 | 2026-08-27 09:15 |  |  |  | 152.56d |  | start no earlier than 2026-08-27 09:00 | Шуранов Ю | 0.25h |  |

| ID | WBS | Task | Type | Duration | Start | Finish | Complete | Remaining | Total slack | Constraint | Resources | Work | Actual work |
| --- | --- | --- | --- | --- | --- | --- | --- | --- | --- | --- | --- | --- | --- |
| 3922 | 22 | **офис** |  | 394.12d | 2025-06-11 09:00 A | 2026-11-26 10:00 | 80% | 78.83d | 74.47d |  |  | 7.25h | 6h |
| 3923 | 22.1 | Установить ящики желаний отдел кадров |  | 30min | 2026-11-25 09:00 | 2026-11-25 09:30 |  |  | 75.53d | start no earlier than 2026-11-25 09:00 | Некрасов А; Макаревич А | 1h |  |
| 3924 | 22.2 | **Монтаж дополнительного освещения** |  | 1.12d | 2026-11-25 09:00 A | 2026-11-26 10:00 A | 100% |  |  |  |  | 4h | 4h |
| 3925 | 22.2.1 | Выяснить маркировку и тип светильников в кабинете снабжения, 2 этаж |  | 1h | 2026-11-25 09:00 A | 2026-11-25 10:00 A | 100% |  |  | start no earlier than 2026-11-25 09:00 | Макаревич А; Некрасов А | 2h | 2h |
| 3926 | 22.2.2 | Повесить доп светильники, в каких местах добавить, узнать у маркетинга, узнать возможность поставить другие светильники (согласовать с Домоводовым), смонтировать по красоте. |  | 1h | 2026-11-26 09:00 A | 2026-11-26 10:00 A | 100% |  |  | start no earlier than 2026-11-26 09:00 | Макаревич А; Некрасов А | 2h | 2h |
| 3927 | 22.3 | дует подконник офис - передать Олегу задачу |  | 15min | 2026-09-08 09:00 | 2026-09-08 09:15 |  |  | 143.56d | start no earlier than 2026-09-08 08:00 | Зорькин В | 0.25h |  |
| 3928 | 22.4 | ремонт светильник моргает , бухгалтерия |  | 1h | 2025-06-11 09:00 A | 2025-06-11 10:00 A | 100% |  |  | start no earlier than 2025-06-11 09:00 | Тимофеев В; Дедов В | 2h | 2h |
| 3929 | 23 | **территория** |  | 472.25d? | 2025-02-20 09:00 A | 2026-11-25 11:00 | 72% | 133.77d? | 75.34d |  |  | 393.75h | 279.5h |
| 3930 | 23.1 | Растяжка бетона, помощ олегу, когда привезут |  | 1h | 2026-11-20 09:00 A | 2026-11-20 10:00 A | 100% |  |  | start no earlier than 2026-11-20 09:00 | Труфанов А; Некрасов А | 2h | 2h |
| 3931 | 23.2 | Из арматуры наделать треугольников для колодцев, по диаметру основания, высота 180см. |  | 4h | 2026-11-04 09:00 A | 2026-11-04 13:00 A | 100% |  |  | start no earlier than 2026-11-04 09:00 | Макаревич А | 4h | 4h |
| 3932 | 23.3 | Выполнить работу по розетке для электрокара, по видео, которое скинет Домоводов |  | 2h | 2026-10-29 09:00 A | 2026-10-29 11:00 A | 100% |  |  | start no earlier than 2026-10-29 08:00 | Бобренок В | 2h | 2h |
| 3933 | 23.4 | Завести проводку в туалет и сделать там розетку на КПП №1 | manual | 2h | 2026-10-21 09:00 A | 2026-10-21 11:00 A | 100% |  |  |  | Бобренок В | 2h | 2h |
| 3934 | 23.5 | Завести проводку в туалет и сделать там розетку на КПП №1 - согласовать отключение/ переключить |  | 1h | 2026-10-26 09:00 A | 2026-10-26 10:00 A | 100% |  |  | start no earlier than 2026-10-26 09:00 | Бундин В | 1h | 1h |
| 3935 | 23.6 | Накачать давление в контур склада 4, ключи у кладовщиков, проверить сварной шов, перед проверкой, убрать паллеты с продукцией, чтоб не замочило. |  | 2h | 2026-10-20 09:00 A | 2026-10-20 11:00 A | 100% |  |  | start no earlier than 2026-10-20 09:00 | Бобренок В | 2h | 2h |
| 3936 | 23.7 | Закрепить профлист на углу между крышами возле 1 кпп (при сильном ветре сильно стучит и отрывает |  | 1d? | 2026-10-16 09:00 | 2026-10-16 18:00 |  |  | 107.59d | start no earlier than 2026-10-16 09:00 | Олег | 8h |  |
| 3937 | 23.8 | Обход по цехам по трассе воды в 5 цех (цех 3, цех 4, 5а, 5) Утром и вечером | manual | 1h | 2026-10-10 09:00 A | 2026-10-10 10:00 A | 100% |  |  | start no earlier than 2026-10-10 09:00 | Дедов В | 1h | 1h |
| 3938 | 23.9 | У охраны не работает тепловая пушка, ревизия/ремонт |  | 1h | 2026-10-06 09:00 A | 2026-10-06 10:00 A | 100% |  |  | start no earlier than 2026-10-06 09:00 | Бобренок В | 1h | 1h |
| 3939 | 23.10 | Накачать котлы на всех узлах отопления |  | 4h | 2026-09-28 09:00 | 2026-09-28 13:00 |  |  | 123.09d | start no earlier than 2026-09-28 08:00 | Бобренок В | 4h |  |
| 3940 | 23.11 | Обход по воде протянутой до 5 цеха, проверка протечек во всех узлах по возможности устранить, если нет возможности, перекрыть в 3-ем цехе |  | 30min | 2026-09-21 09:00 A | 2026-09-21 09:30 A | 100% |  |  | start no earlier than 2026-09-21 08:00 | Макаревич А | 0.5h | 0.5h |
| 3941 | 23.12 | отсыпать спуск для парковки между цех 2 и 3 |  | 1d? | 2026-08-26 09:00 A | 2026-08-26 18:00 A | 100% |  |  | start no earlier than 2026-08-26 08:00 | Дворник | 8h | 8h |
| 3942 | 23.13 | отсыпать тропинку до КТПН |  | 1d? | 2026-08-27 09:00 | 2026-08-27 18:00 |  |  | 151.59d | start no earlier than 2026-08-27 09:00 | Дворник | 8h |  |
| 3943 | 23.14 | **орг водосток КПП - 5ц** |  | 0.03d | 2026-08-31 09:00 A | 2026-08-31 09:15 A | 100% |  |  |  |  | 0.25h | 0.25h |
| 3944 | 23.14.1 | получить КП от Вугара |  | 15min | 2026-08-31 09:00 A | 2026-08-31 09:15 A | 100% |  |  | start no earlier than 2026-08-31 09:00 | Домоводов К | 0.25h | 0.25h |
| 3945 | 23.15 | **орг водосток между 4 и5А** |  | 0.03d | 2026-08-31 09:00 A | 2026-08-31 09:15 A | 100% |  |  |  |  | 0.25h | 0.25h |
| 3946 | 23.15.1 | получить КП от Вугара |  | 15min | 2026-08-31 09:00 A | 2026-08-31 09:15 A | 100% |  |  | start no earlier than 2026-08-31 09:00 | Домоводов К | 0.25h | 0.25h |

| ID | WBS | Task | Type | Duration | Start | Finish | Predecessors | Complete | Remaining | Total slack | Constraint | Resources | Work | Actual work |
| --- | --- | --- | --- | --- | --- | --- | --- | --- | --- | --- | --- | --- | --- | --- |
| 3947 | 23.16 | **Белявский выравнивание стены** |  | 14.16d | 2026-08-13 09:00 A | 2026-09-02 10:15 A |  | 100% |  |  |  |  | 2.58h | 2.58h |
| 3948 | 23.16.1 | оформить план работ, эскиз предложенный ГИП Глуходед |  | 1h | 2026-09-01 09:00 A | 2026-09-01 10:00 A |  | 100% |  |  | start no earlier than 2026-09-01 09:00 | Домоводов К | 1h | 1h |
| 3949 | 23.16.2 | поиск подрядчика на перекладку панели |  | 1h | 2026-09-01 09:00 A | 2026-09-01 10:00 A |  | 100% |  |  | start no earlier than 2026-09-01 09:00 | Домоводов К | 1h | 1h |
| 3950 | 23.16.3 | звонок по решению от варианта ремонта Белявского |  | 20min | 2026-08-13 09:00 A | 2026-08-13 09:20 A |  | 100% |  |  | start no earlier than 2026-08-13 09:00 | Домоводов К | 0.33h | 0.33h |
| 3951 | 23.16.4 | ожидание КП от бригады Белявского | milestone | 0d | 2026-08-20 09:00 A | 2026-08-20 09:00 A | 3950FS+1d | 100% |  |  | start no earlier than 2026-08-20 09:00 | Домоводов К |  |  |
| 3952 | 23.16.5 | согл работы с ГД | milestone | 0d | 2026-09-01 10:00 A | 2026-09-01 10:00 A | 3948, 3951FS+1d | 100% |  |  | start no earlier than 2026-08-31 09:00 | Домоводов К |  |  |
| 3953 | 23.16.6 | заказ кран |  | 15min | 2026-09-02 10:00 A | 2026-09-02 10:15 A | 3952FS+1d | 100% |  |  | start no earlier than 2026-08-13 09:00 | Зорькин В | 0.25h | 0.25h |
| 3954 | 23.17 | замена тусклых или не рабочих ламп на мухоловках 1,2,5 цех.Схемы расположения предоставлю (количество ламп, которые поменял указать в отчете) |  | 4h | 2026-08-06 09:00 A | 2026-08-06 13:00 A |  | 100% |  |  | start no earlier than 2026-08-06 08:00 | Труфанов А | 4h | 4h |
| 3955 | 23.18 | **КПП ревизия прожектор, не горит** |  | 1.12d | 2026-07-08 09:00 A | 2026-07-09 10:00 A |  | 100% |  |  |  |  | 1.33h | 1.33h |
| 3956 | 23.18.1 | Сфотать шильдик от прожектора кпп |  | 20min | 2026-07-08 09:00 A | 2026-07-08 09:20 A |  | 100% |  |  | start no earlier than 2026-07-08 08:00 | Бундин В | 0.33h | 0.33h |
| 3957 | 23.18.2 | монтаж прожетора |  | 1h | 2026-07-09 09:00 A | 2026-07-09 10:00 A |  | 100% |  |  | start no earlier than 2026-07-09 09:00 | Бобренок В | 1h | 1h |
| 3958 | 23.19 | **установить люки колодцев возле на территории** |  | 1d? | 2026-09-25 09:00 A | 2026-09-25 18:00 |  | 50% | 0.5d? |  |  |  | 12h | 4h |
| 3959 | 23.19.1 | разложить по местам |  | 4h | 2026-09-25 09:00 A | 2026-09-25 13:00 A |  | 100% |  |  | start no earlier than 2026-09-25 08:00 | Бобренок В | 4h | 4h |
| 3960 | 23.19.2 | врезать в асфальт |  | 4h | 2026-10-06 09:00 | 2026-10-06 13:00 |  |  |  | 116.09d | start no earlier than 2026-10-06 09:00 | Тимофеев В; Олег | 8h |  |
| 3961 | 23.20 | **установить пост для зарядки эл мобиль директору** |  | 138.25d? | 2026-06-03 09:00 A | 2026-11-25 11:00 |  | 20% | 110.6d? | 75.34d |  |  | 2h | 2h |
| 3962 | 23.20.1 | сделать кронштейны для намотки кабеля зарядки, что бы не лежал на земле |  | 2h | 2026-11-25 09:00 A | 2026-11-25 11:00 A |  | 100% |  |  | start no earlier than 2026-11-25 09:00 | Тимофеев В | 2h | 2h |
| 3963 | 23.20.2 | заявка на щиток / кабель |  | 1d? | 2026-06-03 09:00 | 2026-06-03 18:00 |  |  |  | 212.59d | start no earlier than 2026-06-03 08:00 |  |  |  |
| 3964 | 23.21 | уборка строительный мусор задний двор 5А склад |  | 2h | 2026-05-27 09:00 | 2026-05-27 11:00 |  |  |  | 218.34d | start no earlier than 2026-05-27 09:00 | оператор2 | 2h |  |
| 3965 | 23.22 | поправить бетонную крышку колодца. Дренаж вдоль забора колодец №2 |  | 2h | 2026-05-27 09:00 | 2026-05-27 11:00 |  |  |  | 218.34d | start no earlier than 2026-05-27 09:00 | оператор2 | 2h |  |
| 3966 | 23.23 | расчистить камни, для доступа к люку. Дренаж вдоль забора колодец №2 |  | 2h | 2026-05-27 09:00 | 2026-05-27 11:00 |  |  |  | 218.34d | start no earlier than 2026-05-27 09:00 | оператор2 | 2h |  |
| 3967 | 23.24 | проверка всех стемянок по цехам, приклеить бумажки о проверке |  | 1d? | 2026-06-26 09:00 A | 2026-06-26 18:00 A |  | 100% |  |  | start no earlier than 2026-06-26 09:00 | Шуранов Ю | 8h | 8h |
| 3968 | 23.25 | в 1,2,3 цехе ближе к утру выключить все оборудование, кроме камер охраны КПП- подготовка к фогации |  | 2h | 2026-04-30 08:00 A | 2026-04-30 11:00 A |  | 100% |  |  | start no earlier than 2026-04-30 08:00 | Дедов В | 2h | 2h |
| 3969 | 23.26 | заизолировать гофру в местах разрыва (гофра с кабелем для рефрежераторов возле нашего склада) | manual | 1h | 2026-04-26 09:00 A | 2026-04-26 10:00 A |  | 100% |  |  | start no earlier than 2026-04-26 09:00 | Макаревич А | 1h | 1h |
| 3970 | 23.27 | ремонт стен сосед Белявский |  | 5d | 2026-04-16 09:00 | 2026-04-22 18:00 |  |  |  | 242.59d | start no earlier than 2026-04-16 08:00 | Олег; Некрасов А | 80h |  |

| ID | WBS | Task | Type | Duration | Start | Finish | Predecessors | Complete | Remaining | Total slack | Free slack | Constraint | Resources | Work | Actual work |
| --- | --- | --- | --- | --- | --- | --- | --- | --- | --- | --- | --- | --- | --- | --- | --- |
| 3971 | 23.28 | **выезд ул.Писемского** |  | 15.03d | 2026-08-11 09:00 A | 2026-09-01 09:15 |  | 89% | 1.67d | 149.56d |  |  |  | 2.25h | 2h |
| 3972 | 23.28.1 | **топосъемка** |  | 15.03d | 2026-08-11 09:00 A | 2026-09-01 09:15 |  | 67% | 5.01d | 149.56d |  |  |  | 0.75h | 0.5h |
| 3973 | 23.28.1.1 | получить старт от ГД | milestone | 0d | 2026-08-31 09:00 | 2026-08-31 09:00 |  |  |  | 149.56d | 0d | start no earlier than 2026-08-31 09:00 | Домоводов К |  |  |
| 3974 | 23.28.1.2 | поск исполнителя / запрос счет |  | 30min | 2026-08-11 09:00 A | 2026-08-11 09:30 A |  | 100% |  |  |  | start no earlier than 2026-08-11 09:00 | Домоводов К | 0.5h | 0.5h |
| 3975 | 23.28.1.3 | контроль оплата |  | 15min | 2026-09-01 09:00 | 2026-09-01 09:15 | 3973FS+1d, 3974FS+5d |  |  | 149.56d | 0d | start no earlier than 2026-08-24 09:00 | Домоводов К | 0.25h |  |
| 3976 | 23.28.2 | **геология** |  | 15.03d | 2026-08-11 09:00 A | 2026-09-01 09:15 |  | 99% | 0d | 149.56d |  |  |  | 0.5h | 0.5h |
| 3977 | 23.28.2.1 | поск исполнителя / запрос счет |  | 30min | 2026-08-11 09:00 A | 2026-08-11 09:30 A |  | 100% |  |  |  | start no earlier than 2026-08-11 09:00 | Домоводов К | 0.5h | 0.5h |
| 3978 | 23.28.2.2 | контроль оплата | milestone | 0min | 2026-09-01 09:15 | 2026-09-01 09:15 | 3975, 3977FS+5d |  |  | 149.56d | 0d | start no earlier than 2026-08-10 08:00 | Домоводов К |  |  |
| 3979 | 23.28.3 | **проект дорога** |  | 15.03d | 2026-08-11 09:00 A | 2026-09-01 09:15 |  | 99% | 0d | 149.56d |  |  |  | 0.5h | 0.5h |
| 3980 | 23.28.3.1 | поск исполнителя / запрос счет |  | 30min | 2026-08-11 09:00 A | 2026-08-11 09:30 A |  | 100% |  |  |  | start no earlier than 2026-08-11 09:00 | Домоводов К | 0.5h | 0.5h |
| 3981 | 23.28.3.2 | получить счет / договор | milestone | 0d | 2026-08-13 09:00 A | 2026-08-13 09:00 A |  | 100% |  |  |  | start no earlier than 2026-08-13 09:00 | Домоводов К |  |  |
| 3982 | 23.28.3.3 | контроль оплата | milestone | 0min | 2026-09-01 09:15 | 2026-09-01 09:15 | 3978, 3980FS+5d |  |  | 149.56d | 0d | start no earlier than 2026-08-10 08:00 | Домоводов К |  |  |
| 3983 | 23.28.4 | **проект бетонная подушка** |  | 15.03d | 2026-08-11 09:00 A | 2026-09-01 09:15 |  | 99% | 0d | 149.56d |  |  |  | 0.5h | 0.5h |
| 3984 | 23.28.4.1 | поск исполнителя / запрос счет |  | 30min | 2026-08-11 09:00 A | 2026-08-11 09:30 A |  | 100% |  |  |  | start no earlier than 2026-08-11 09:00 | Домоводов К | 0.5h | 0.5h |
| 3985 | 23.28.4.2 | получить счет / договор | milestone | 0d | 2026-08-13 09:00 A | 2026-08-13 09:00 A |  | 100% |  |  |  | start no earlier than 2026-08-13 09:00 | Домоводов К |  |  |
| 3986 | 23.28.4.3 | контроль оплата | milestone | 0min | 2026-09-01 09:15 | 2026-09-01 09:15 | 3982, 3984FS+5d |  |  | 149.56d |  | start no earlier than 2026-08-10 08:00 | Домоводов К |  |  |
| 3987 | 23.29 | Сборка рамы и навеса для мусорки 2 ц возле 1 КПП |  | 4h | 2026-09-04 09:00 A | 2026-09-04 13:00 A |  | 100% |  |  |  | start no earlier than 2026-09-04 09:00 | Некрасов А; Макаревич А | 8h | 8h |
| 3988 | 23.30 | Покраска рамы новой мусорки, стоит у ворот навесок 2 цех |  | 1h | 2026-09-04 09:00 A | 2026-09-04 10:00 A |  | 100% |  |  |  | start no earlier than 2026-09-04 09:00 | Некрасов А; Макаревич А | 2h | 2h |
| 3989 | 23.31 | Монтаж дверей на мусорку собираем раму (петли привезем после обеда) |  | 3h | 2026-09-04 09:00 A | 2026-09-04 12:00 A |  | 100% |  |  |  | start no earlier than 2026-09-04 09:00 | Некрасов А; Макаревич А | 6h | 6h |
| 3990 | 23.32 | **асфальтирование дороги до 5ц** |  | 11.25d? | 2026-08-11 09:00 A | 2026-08-26 11:00 A |  | 100% |  |  |  |  |  | 36.5h | 36.5h |
| 3991 | 23.32.1 | составить схему площади дороги / 3 корректировки |  | 2h | 2026-08-11 09:00 A | 2026-08-11 11:00 A |  | 100% |  |  |  | start no earlier than 2026-08-11 09:00 | Зорькин В | 2h | 2h |
| 3992 | 23.32.2 | получить цену исполнителя |  | 1d | 2026-08-11 11:00 A | 2026-08-12 11:00 A | 3991 | 100% |  |  |  | start no earlier than 2026-08-10 08:00 | Домоводов К | 8h | 8h |
| 3993 | 23.32.3 | согл с ГД |  | 1d | 2026-08-11 09:00 A | 2026-08-11 18:00 A | 3992 | 100% |  |  |  | start no earlier than 2026-08-10 08:00 | Домоводов К | 8h | 8h |
| 3994 | 23.32.4 | получить счет от Вугара | milestone | 0h | 2026-08-12 09:00 A | 2026-08-12 09:00 A |  | 100% |  |  |  | start no earlier than 2026-08-12 09:00 | Домоводов К |  |  |
| 3995 | 23.32.5 | будет ли Вугар оформлятся как подрядчик? Соглаосвать с ГД |  | 15min | 2026-08-17 09:00 A | 2026-08-17 09:15 A |  | 100% |  |  |  | start no earlier than 2026-08-17 09:00 | Домоводов К | 0.25h | 0.25h |
| 3996 | 23.32.6 | корректировка чертеж объем работ |  | 1d? | 2026-08-20 09:00 A | 2026-08-20 18:00 A |  | 100% |  |  |  | start no earlier than 2026-08-20 09:00 | Домоводов К | 8h | 8h |
| 3997 | 23.32.7 | подготовка смета |  | 2h | 2026-08-26 09:00 A | 2026-08-26 11:00 A |  | 100% |  |  |  | start no earlier than 2026-08-26 09:00 | Домоводов К | 2h | 2h |
| 3998 | 23.32.8 | контроль сроков завоза техники |  | 15min | 2026-08-14 09:00 A | 2026-08-14 09:15 A |  | 100% |  |  |  | start no earlier than 2026-08-14 09:00 | Домоводов К | 0.25h | 0.25h |
| 3999 | 23.32.9 | монтаж |  | 1d? | 2026-08-19 09:00 A | 2026-08-19 18:00 A | 3993, 3994 | 100% |  |  |  | start no earlier than 2026-08-19 09:00 | Подрядчик | 8h | 8h |
| 4000 | 23.33 | взять роутер у нас в кабинете - подключить к UTP кабелю |  | 1d? | 2026-04-13 09:00 A | 2026-04-13 18:00 A |  | 100% |  |  |  | start no earlier than 2026-04-13 09:00 |  |  |  |
| 4001 | 23.34 | в цехе 2, 3, 4 и 5 убавить температуры на нагревателях и газ. Котлах |  | 4h | 2026-03-31 09:00 A | 2026-03-31 13:00 A |  | 100% |  |  |  | start no earlier than 2026-03-31 08:00 | Бундин В | 4h | 4h |
| 4002 | 23.35 | перенос камеры на 10см ниже КПП |  | 3h | 2026-03-21 09:00 A | 2026-03-23 12:00 A |  | 100% |  |  |  | start no earlier than 2026-03-21 09:00 | Бундин В | 3h | 3h |
| 4003 | 23.36 | запуск контейнер рэф |  | 2h | 2026-03-20 09:00 A | 2026-03-20 11:00 A |  | 100% |  |  |  | start no earlier than 2026-03-20 09:00 | Шуранов Ю | 2h | 2h |

| ID | WBS | Task | Duration | Start | Finish | Predecessors | Complete | Remaining | Total slack | Free slack | Constraint | Resources | Work | Actual work |
| --- | --- | --- | --- | --- | --- | --- | --- | --- | --- | --- | --- | --- | --- | --- |
| 4004 | 23.37 | **выровнить контейнеры, перекос двери** | 3.25d | 2026-03-19 09:00 A | 2026-03-24 11:00 A |  | 100% |  |  |  |  |  | 2.5h | 2.5h |
| 4005 | 23.37.1 | заявка кран | 30min | 2026-03-19 09:00 A | 2026-03-19 09:30 A |  | 100% |  |  |  | start no earlier than 2026-03-19 09:00 | Шуранов Ю | 0.5h | 0.5h |
| 4006 | 23.37.2 | работа по выравниванию | 2h | 2026-03-24 09:00 A | 2026-03-24 11:00 A | 4005FS+1d | 100% |  |  |  | start no earlier than 2026-03-24 09:00 | Некрасов А | 2h | 2h |
| 4007 | 23.38 | **двойной шлагбаум замрзает** | 5.01d | 2025-02-20 09:00 A | 2025-02-27 09:05 A |  | 100% |  |  |  |  |  | 1.08h | 1.08h |
| 4008 | 23.38.1 | вызов сервисного инженера контроль даты | 5min | 2025-02-27 09:00 A | 2025-02-27 09:05 A |  | 100% |  |  |  | start no earlier than 2025-02-27 09:00 | Шуранов Ю | 0.08h | 0.08h |
| 4009 | 23.38.2 | осмотр с сервисн инжзенером | 1h | 2025-02-20 09:00 A | 2025-02-20 10:00 A |  | 100% |  |  |  | start no earlier than 2025-02-20 09:00 | Шуранов Ю | 1h | 1h |
| 4010 | 23.39 | **Люки на колодцы** | 13.31d | 2026-05-26 09:00 A | 2026-06-12 11:30 A |  | 100% |  |  |  |  |  | 163.5h | 163.5h |
| 4011 | 23.39.1 | Консультация с Олегом | 30min | 2026-05-26 09:00 A | 2026-05-26 09:30 A |  | 100% |  |  |  | start no earlier than 2026-05-26 08:00 | Зорькин В; Олег | 1h | 1h |
| 4012 | 23.39.2 | Заявка на закуп | 30min | 2026-05-29 09:00 A | 2026-05-29 09:30 A | 4011 | 100% |  |  |  | start no earlier than 2026-05-29 09:00 | Зорькин В | 0.5h | 0.5h |
| 4013 | 23.39.3 | Доставка, контроль | 10d | 2026-05-29 09:30 A | 2026-06-12 09:30 A | 4012 | 100% |  |  |  | start no earlier than 2026-05-26 09:00 | Зорькин В; Шуранов Ю | 160h | 160h |
| 4014 | 23.39.4 | установка люков на колодцы | 2h | 2026-06-12 09:30 A | 2026-06-12 11:30 A | 4013 | 100% |  |  |  | start no earlier than 2026-06-04 09:00 | Олег | 2h | 2h |
| 4015 | 24 | **ежедневные обходы и осмотры** | 473.5d | 2024-05-14 09:00 A | 2026-03-06 13:00 |  | 16% | 398.74d | 276.09d |  |  |  | 25.33h | 4h |
| 4016 | 24.1 | цех 1 | 20min | 2024-05-14 09:00 | 2024-05-14 09:20 |  |  |  | 747.01d | 0d | start no earlier than 2024-05-14 09:00 | Шуранов Ю | 0.33h |  |
| 4017 | 24.2 | цех 2 | 20min | 2024-05-14 09:00 | 2024-05-14 09:20 |  |  |  | 749.55d |  | start no earlier than 2024-05-14 09:00 | Шуранов Ю | 0.33h |  |
| 4018 | 24.3 | цех навесок | 20min | 2024-05-14 09:20 | 2024-05-14 09:40 | 4016 |  |  | 747.01d | 0d | start no earlier than 2024-05-14 09:00 | Шуранов Ю | 0.33h |  |
| 4019 | 24.4 | техника | 20h | 2024-05-14 09:40 | 2024-05-16 14:40 | 4018 |  |  | 747.01d |  | start no earlier than 2024-05-14 09:00 | Шуранов Ю | 20h |  |
| 4020 | 24.5 | вести журнал осмотров стеллажей | 20min | 2024-05-14 09:00 | 2024-05-14 09:20 |  |  |  | 749.55d |  | start no earlier than 2024-05-14 09:00 | Шуранов Ю | 0.33h |  |
| 4021 | 24.6 | оперативная работа | 4h | 2026-03-06 09:00 A | 2026-03-06 13:00 A |  | 100% |  |  |  | start no earlier than 2026-03-06 09:00 | Бобренок В | 4h | 4h |
| 4022 | 25 | **замена шнеков** | 882.5d? | 2023-03-29 09:00 A | 2026-08-14 13:00 |  | 2% | 864.01d? | 161.09d |  |  |  | 53h | 34h |
| 4023 | 25.1 | посчитать количество шнеков и гильз для цех1 и цех 2 | 2h | 2026-04-03 09:00 | 2026-04-03 11:00 |  |  |  | 256.34d |  | start no earlier than 2026-04-03 09:00 | Шуранов Ю | 2h |  |
| 4024 | 25.2 | вести список и учет замены шнеков | 1h | 2024-05-14 09:00 | 2024-05-14 10:00 |  |  |  | 749.47d |  | start no earlier than 2024-05-14 09:00 | Шуранов Ю | 1h |  |
| 4025 | 25.3 | линия 3 - было 3/приход спец12-3/спец14-9 | 1d? | 2024-04-15 09:00 A | 2024-04-15 18:00 A |  | 100% |  |  |  | start no earlier than 2024-04-15 08:00 |  |  |  |
| 4026 | 25.4 | линия3 | 42d | 2023-10-16 09:00 | 2023-12-12 18:00 |  |  |  | 858.59d |  | start no earlier than 2023-10-16 09:00 |  |  |  |
| 4027 | 25.5 | линия3 | 30d | 2023-12-12 09:00 | 2024-01-22 18:00 |  |  |  | 829.59d |  | start no earlier than 2023-12-12 09:00 |  |  |  |
| 4028 | 25.6 | линия3 | 45d | 2024-01-24 09:00 | 2024-03-26 18:00 |  |  |  | 783.59d |  | start no earlier than 2024-01-24 09:00 |  |  |  |
| 4029 | 25.7 | линия3 | 11d | 2023-03-29 09:00 | 2023-04-12 18:00 |  |  |  | 1032.59d |  | start no earlier than 2023-03-29 09:00 |  |  |  |
| 4030 | 25.8 | линия3 | 1d? | 2023-04-12 09:00 | 2023-04-12 18:00 |  |  |  | 1032.59d |  | start no earlier than 2023-04-12 09:00 |  |  |  |
| 4031 | 25.9 | линия 3 | 1.38d? | 2024-05-08 08:00 A | 2024-05-13 11:00 A |  | 100% |  |  |  | start no earlier than 2024-05-08 08:00 | Макаревич А; Некрасов А; Черепанов И | 26h | 26h |
| 4032 | 25.10 | диния 3 | 1d? | 2024-05-20 09:00 | 2024-05-20 18:00 |  |  |  | 744.59d |  | start no earlier than 2024-05-20 09:00 | Некрасов А; Тимофеев В | 16h |  |
| 4163 | 25.11 | замена линия 3, была струшка | 4h | 2026-08-14 09:00 A | 2026-08-14 13:00 A |  | 100% |  |  |  | start no earlier than 2026-08-14 09:00 | Некрасов А; Бундин В | 8h | 8h |
